# CVN73-PIA26

Schedule from Primavera P6, 2026-07-27 to 2027-01-23, data date 2026-08-10, A marks actual dates.
Must finish by 2027-01-23

## Resources

| Resource | Group |
| --- | --- |
| Structural Welding | labor |
| Preservation / Blast & Coat | labor |
| Rigging & Weight Handling | labor |
| Pipefitting | labor |
| Mechanical | labor |
| Electrical | labor |
| Sheet Metal / HVAC | labor |
| Interior Communications | labor |
| Insulation & Lagging | labor |

## Schedule

| ID | WBS | Activity | Duration | Start | Finish | Complete | Remaining | Resources |
| --- | --- | --- | --- | --- | --- | --- | --- | --- |
|  | PIA26 | **CVN-73 PIA-26** |  | 2026-07-27 | 2027-01-23 |  |  |  |
|  | GEN | **General Services (ship-wide)** |  | 2026-07-27 | 2027-01-22 |  |  |  |
| A56800 |  | Firewatch rotation — period 17 | 0d | 2026-07-27 A | 2026-08-17 | 62% | 0d | Rigging & Weight Handling [314 h] |
| A56660 |  | Tank sounding rounds — period 3 | 0d | 2026-07-28 A | 2026-08-21 | 54% | 0d | Mechanical [146 h] |
| A56820 |  | Gas-free engineering surveys — period 19 | 0d | 2026-07-28 A | 2026-08-15 | 70% | 0d | Rigging & Weight Handling [418 h] |
| A56780 |  | Firewatch rotation — period 15 | 0d | 2026-07-30 A | 2026-08-27 | 27% | 0d | Mechanical [248 h] |
| A56690 |  | Shore power monitoring & load checks — period 6 | 0d | 2026-08-06 A | 2026-08-14 | 31% | 0d | Mechanical [45 h] |
| A56640 |  | Gas-free engineering surveys — period 1 | 0d | 2026-08-07 A | 2026-08-26 | 14% | 0d | Mechanical [117 h] |
| A56700 |  | Tank sounding rounds — period 7 | 0d | 2026-08-07 A | 2026-08-21 | 12% | 0d | Mechanical [82 h] |
| A56810 |  | Gas-free engineering surveys — period 18 | 0d | 2026-08-14 | 2026-08-24 |  |  | Rigging & Weight Handling [79 h] |
| A56760 |  | Gas-free engineering surveys — period 13 | 0d | 2026-08-14 | 2026-09-05 |  |  | Rigging & Weight Handling [304 h] |
| A56740 |  | Tank sounding rounds — period 11 | 0d | 2026-08-30 | 2026-09-10 |  |  | Rigging & Weight Handling [144 h] |
| A56870 |  | Gas-free engineering surveys — period 24 | 0d | 2026-08-31 | 2026-09-08 |  |  | Mechanical [46 h] |
| A56750 |  | Firewatch rotation — period 12 | 0d | 2026-09-22 | 2026-10-01 |  |  | Rigging & Weight Handling [214 h] |
| A56840 |  | Gas-free engineering surveys — period 21 | 0d | 2026-10-17 | 2026-10-30 |  |  | Mechanical [91 h] |
| A56670 |  | Weapons elevator barrier watch — period 4 | 0d | 2026-11-02 | 2026-12-01 |  |  | Mechanical [1018 h] |
| A56720 |  | Firewatch rotation — period 9 | 0d | 2026-11-11 | 2026-11-28 |  |  | Rigging & Weight Handling [144 h] |
| A56680 |  | Gas-free engineering surveys — period 5 | 0d | 2026-11-22 | 2026-12-01 |  |  | Mechanical [127 h] |
| A56860 |  | Pier crane window — heavy lifts — period 23 | 0d | 2026-11-28 | 2026-12-10 |  |  | Mechanical [362 h] |
| A56770 |  | Weapons elevator barrier watch — period 14 | 0d | 2026-12-05 | 2026-12-13 |  |  | Mechanical [131 h] |
| A56790 |  | Shore power monitoring & load checks — period 16 | 0d | 2026-12-06 | 2026-12-19 |  |  | Mechanical [253 h] |
| A56650 |  | Weapons elevator barrier watch — period 2 | 0d | 2026-12-13 | 2027-01-12 |  |  | Rigging & Weight Handling [518 h] |
| A56830 |  | Firewatch rotation — period 20 | 0d | 2026-12-20 | 2027-01-17 |  |  | Rigging & Weight Handling [210 h] |
| A56730 |  | Housekeeping & debris removal — period 10 | 0d | 2026-12-27 | 2027-01-04 |  |  | Rigging & Weight Handling [144 h] |
| A56850 |  | Weapons elevator barrier watch — period 22 | 0d | 2026-12-27 | 2027-01-16 |  |  | Rigging & Weight Handling [339 h] |
| A56710 |  | Firewatch rotation — period 8 | 0d | 2027-01-14 | 2027-01-22 |  |  | Rigging & Weight Handling [139 h] |

| ID | WBS | Activity | Type | Duration | Start | Finish | Predecessors | Complete | Remaining | Resources |
| --- | --- | --- | --- | --- | --- | --- | --- | --- | --- | --- |
|  | MSTN | **Key Events** |  |  | 2026-07-27 | 2027-01-23 |  |  |  |  |
| A56940 |  | Availability start | milestone | 0d | 2026-07-27 A | 2026-07-27 A |  | 100% |  |  |
| A56950 |  | Production 25% review | milestone | 0d | 2026-09-10 | 2026-09-10 |  |  |  |  |
| A56960 |  | Production 50% review | milestone | 0d | 2026-10-25 | 2026-10-25 |  |  |  |  |
| A56970 |  | Production 75% review | milestone | 0d | 2026-12-09 | 2026-12-09 |  |  |  |  |
| A57020 |  | Z1 zone close-out review | milestone | 0d | 2026-12-19 | 2026-12-19 | A00270, A01850, A01700, A01500, A01390, A00210 |  |  |  |
| A57040 |  | Z3 zone close-out review | milestone | 0d | 2026-12-19 | 2026-12-19 | A02920, A44550, A49230, A27460, A44930, A34430 |  |  |  |
| A56980 |  | Light-off assessment | milestone | 0d | 2026-12-26 | 2026-12-26 | A57020, A57030, A57040, A57050, A57060, A57070 |  |  |  |
| A57060 |  | Z5 zone close-out review | milestone | 0d | 2026-12-28 | 2026-12-28 | A30580, A41220, A25650, A41440, A25760, A39850 |  |  |  |
| A57030 |  | Z2 zone close-out review | milestone | 0d | 2026-12-30 | 2026-12-30 | A09790, A03420, A03320, A05430, A03980, A16960 |  |  |  |
| A57050 |  | Z4 zone close-out review | milestone | 0d | 2026-12-30 | 2026-12-30 | A39440, A22770, A37140, A50070, A36340, A28290 |  |  |  |
| A57070 |  | Z6 zone close-out review | milestone | 0d | 2026-12-31 | 2026-12-31 | A53270, A53890, A53580, A55110, A55160, A54000 |  |  |  |
| A56990 |  | Crew certification | milestone | 0d | 2027-01-09 | 2027-01-09 |  |  |  |  |
| A57000 |  | Fast cruise | milestone | 0d | 2027-01-18 | 2027-01-18 |  |  |  |  |
| A57010 |  | End of availability | milestone | 0d | 2027-01-23 | 2027-01-23 |  |  |  |  |
|  | Z1 | **Zone 1 — Flight Deck & Island** |  |  | 2026-07-27 | 2026-10-14 |  |  |  |  |
|  | 130 | **130 Hull Structure** |  |  | 2026-07-27 | 2026-09-28 |  |  |  |  |
| A00020 |  | NDT survey — foundation group 2A — Catapult No. 1 track |  | 0d | 2026-07-27 A | 2026-08-04 A |  | 100% |  | Structural Welding [52 h] |
| A00330 |  | NDT survey — structural bay 4D — Catapult No. 2 track |  | 0d | 2026-07-30 A | 2026-08-12 |  | 85% | 0d | Structural Welding [176 h] |
| A02060 |  | NDT survey — deck insert 2A (04-246-0-Q) |  | 0d | 2026-08-03 A | 2026-08-11 |  | 75% | 0d | Structural Welding [106 h] |
| A00030 |  | Crop out foundation group 2A — Catapult No. 1 track |  | 0d | 2026-08-05 A | 2026-08-14 | A00020 FS+0.8d | 47% | 0d | Structural Welding [78 h] |
| A00120 |  | NDT survey — structural bay 9C — Catapult No. 1 track |  | 0d | 2026-08-05 A | 2026-08-19 |  | 30% | 0d | Structural Welding [83 h] |
| A00530 |  | NDT survey — structural bay 2A — Aircraft elevator No. 1 platform |  | 0d | 2026-08-06 A | 2026-08-13 |  | 39% | 0d | Structural Welding [163 h] |
| A01860 |  | NDT survey — foundation group 9B — Jet blast deflector No. 4 |  | 0d | 2026-08-06 A | 2026-08-11 |  | 64% | 0d | Structural Welding [36 h] |
| A01000 |  | NDT survey — deck insert 1A — Aircraft elevator No. 2 platform |  | 0d | 2026-08-09 A | 2026-08-20 |  | 11% | 0d | Structural Welding [382 h] |
| A02110 |  | NDT survey — foundation group 7A — Fantail arresting gear sheave space |  | 0d | 2026-08-11 | 2026-08-19 |  |  |  | Structural Welding [44 h] |
| A00340 |  | Crop out structural bay 4D — Catapult No. 2 track |  | 0d | 2026-08-13 | 2026-08-26 | A00330 FS+0.8d |  |  | Structural Welding [182 h] |
| A01610 |  | NDT survey — structural bay 5C — Aircraft elevator No. 3 platform |  | 0d | 2026-08-13 | 2026-08-24 |  |  |  | Structural Welding [67 h] |
| A00900 |  | NDT survey — deck insert 1A — Catapult No. 3 track |  | 0d | 2026-08-13 | 2026-08-16 |  |  |  | Structural Welding [76 h] |
| A02070 |  | Crop out deck insert 2A (04-246-0-Q) |  | 0d | 2026-08-14 | 2026-08-24 | A02060 |  |  | Structural Welding [155 h] |
| A01870 |  | Crop out foundation group 9B — Jet blast deflector No. 4 |  | 0d | 2026-08-14 | 2026-08-22 | A01860 |  |  | Structural Welding [96 h] |
| A00040 |  | Fit & weld foundation group 2A — Catapult No. 1 track |  | 0d | 2026-08-15 | 2026-08-26 | A00030 |  |  | Structural Welding [67 h] |
| A00540 |  | Crop out structural bay 2A — Aircraft elevator No. 1 platform |  | 0d | 2026-08-16 | 2026-08-29 | A00530 |  |  | Structural Welding [307 h] |
| A00910 |  | Crop out deck insert 1A — Catapult No. 3 track |  | 0d | 2026-08-18 | 2026-08-29 | A00900 |  |  | Structural Welding [230 h] |
| A02120 |  | Crop out foundation group 7A — Fantail arresting gear sheave space |  | 0d | 2026-08-19 | 2026-09-01 | A02110 |  |  | Structural Welding [278 h] |
| A00130 |  | Crop out structural bay 9C — Catapult No. 1 track |  | 0d | 2026-08-20 | 2026-08-26 | A00120 |  |  | Structural Welding [76 h] |
| A01010 |  | Crop out deck insert 1A — Aircraft elevator No. 2 platform |  | 0d | 2026-08-20 | 2026-08-30 | A01000 |  |  | Structural Welding [80 h] |
| A01880 |  | Fit & weld foundation group 9B — Jet blast deflector No. 4 |  | 0d | 2026-08-22 | 2026-09-01 | A01870 FS+0.8d |  |  | Structural Welding [273 h] |
| A02080 |  | Fit & weld deck insert 2A (04-246-0-Q) |  | 0d | 2026-08-24 | 2026-09-06 | A02070 FS+0.8d |  |  | Structural Welding [88 h] |
| A01620 |  | Crop out structural bay 5C — Aircraft elevator No. 3 platform |  | 0d | 2026-08-25 | 2026-09-01 | A01610 |  |  | Structural Welding [117 h] |
| A00140 |  | Fit & weld structural bay 9C — Catapult No. 1 track |  | 0d | 2026-08-28 | 2026-09-05 | A00130 |  |  | Structural Welding [64 h] |
| A00050 |  | NDT acceptance — foundation group 2A — Catapult No. 1 track |  | 0d | 2026-08-28 | 2026-09-08 | A00040 |  |  | Structural Welding [225 h] |
| A00350 |  | Fit & weld structural bay 4D — Catapult No. 2 track |  | 0d | 2026-08-29 | 2026-09-10 | A00340 FS+2.4d |  |  | Structural Welding [143 h] |
| A00920 |  | Fit & weld deck insert 1A — Catapult No. 3 track |  | 0d | 2026-08-30 | 2026-09-09 | A00910 FS+0.8d |  |  | Structural Welding [79 h] |
| A00550 |  | Fit & weld structural bay 2A — Aircraft elevator No. 1 platform |  | 0d | 2026-08-31 | 2026-09-12 | A00540 |  |  | Structural Welding [342 h] |
| A01020 |  | Fit & weld deck insert 1A — Aircraft elevator No. 2 platform |  | 0d | 2026-08-31 | 2026-09-05 | A01010 SS+4.8d |  |  | Structural Welding [147 h] |
| A02130 |  | Fit & weld foundation group 7A — Fantail arresting gear sheave space |  | 0d | 2026-09-01 | 2026-09-08 | A02120 |  |  | Structural Welding [168 h] |
| A01890 |  | NDT acceptance — foundation group 9B — Jet blast deflector No. 4 |  | 0d | 2026-09-02 | 2026-09-04 | A01880 FS+2.4d |  |  | Structural Welding [55 h] |
| A01630 |  | Fit & weld structural bay 5C — Aircraft elevator No. 3 platform |  | 0d | 2026-09-02 | 2026-09-06 | A01620 |  |  | Structural Welding [33 h] |
| A01900 |  | Grind & dress foundation group 9B — Jet blast deflector No. 4 |  | 0d | 2026-09-06 | 2026-09-12 | A01890 FS+2.4d |  |  | Structural Welding [222 h] |
| A01030 |  | NDT acceptance — deck insert 1A — Aircraft elevator No. 2 platform |  | 0d | 2026-09-06 | 2026-09-19 | A01020 FS+2.4d |  |  | Structural Welding [290 h] |
| A01640 |  | NDT acceptance — structural bay 5C — Aircraft elevator No. 3 platform |  | 0d | 2026-09-06 | 2026-09-12 | A01630 |  |  | Structural Welding [196 h] |
| A00150 |  | NDT acceptance — structural bay 9C — Catapult No. 1 track |  | 0d | 2026-09-07 | 2026-09-15 | A00140 |  |  | Structural Welding [133 h] |
| A02090 |  | NDT acceptance — deck insert 2A (04-246-0-Q) |  | 0d | 2026-09-08 | 2026-09-13 | A02080 |  |  | Structural Welding [64 h] |
| A00060 |  | Grind & dress foundation group 2A — Catapult No. 1 track |  | 0d | 2026-09-08 | 2026-09-12 | A00050 |  |  | Structural Welding [61 h] |
| A02140 |  | NDT acceptance — foundation group 7A — Fantail arresting gear sheave space |  | 0d | 2026-09-10 | 2026-09-15 | A02130 |  |  | Structural Welding [124 h] |
| A00930 |  | NDT acceptance — deck insert 1A — Catapult No. 3 track |  | 0d | 2026-09-10 | 2026-09-16 | A00920 SS+4.8d |  |  | Structural Welding [200 h] |
| A00360 |  | NDT acceptance — structural bay 4D — Catapult No. 2 track |  | 0d | 2026-09-11 | 2026-09-15 | A00350 |  |  | Structural Welding [92 h] |
| A02100 |  | Grind & dress deck insert 2A (04-246-0-Q) |  | 0d | 2026-09-13 | 2026-09-24 | A02090 FS+2.4d |  |  | Structural Welding [191 h] |
| A01650 |  | Grind & dress structural bay 5C — Aircraft elevator No. 3 platform |  | 0d | 2026-09-14 | 2026-09-17 | A01640 FS+2.4d |  |  | Structural Welding [27 h] |
| A00560 |  | NDT acceptance — structural bay 2A — Aircraft elevator No. 1 platform |  | 0d | 2026-09-14 | 2026-09-23 | A00550 |  |  | Structural Welding [59 h]; Rigging & Weight Handling [15 h] |
| A00370 |  | Grind & dress structural bay 4D — Catapult No. 2 track |  | 0d | 2026-09-15 | 2026-09-19 | A00360 |  |  | Structural Welding [44 h] |
| A02150 |  | Grind & dress foundation group 7A — Fantail arresting gear sheave space |  | 0d | 2026-09-16 | 2026-09-28 | A02140 FS+0.8d |  |  | Structural Welding [230 h] |
| A00160 |  | Grind & dress structural bay 9C — Catapult No. 1 track |  | 0d | 2026-09-17 | 2026-09-21 | A00150 |  |  | Structural Welding [64 h] |
| A00940 |  | Grind & dress deck insert 1A — Catapult No. 3 track |  | 0d | 2026-09-18 | 2026-09-26 | A00930 SS+2.4d |  |  | Structural Welding [80 h]; Rigging & Weight Handling [21 h] |
| A01040 |  | Grind & dress deck insert 1A — Aircraft elevator No. 2 platform |  | 0d | 2026-09-19 | 2026-09-23 | A01030 |  |  | Structural Welding [44 h] |
| A00570 |  | Grind & dress structural bay 2A — Aircraft elevator No. 1 platform |  | 0d | 2026-09-24 | 2026-09-27 | A00560 |  |  | Structural Welding [19 h] |

| ID | WBS | Activity | Duration | Start | Finish | Predecessors | Complete | Remaining | Resources |
| --- | --- | --- | --- | --- | --- | --- | --- | --- | --- |
|  | 300 | **300 Electrical Distribution** |  | 2026-08-01 | 2026-10-05 |  |  |  |  |
| A01660 |  | Circuit survey — cable run 2A — Jet blast deflector No. 3 | 0d | 2026-08-01 A | 2026-08-10 |  | 88% | 0d | Electrical [69 h] |
| A01300 |  | Circuit survey — cable run 2B — Catapult No. 4 track | 0d | 2026-08-05 A | 2026-08-18 |  | 36% | 0d | Electrical [239 h] |
| A01510 |  | Circuit survey — cable run 9A (04-190-1-Q) | 0d | 2026-08-05 A | 2026-08-12 |  | 61% | 0d | Electrical [253 h] |
| A01670 |  | De-energize & tag out cable run 2A — Jet blast deflector No. 3 | 0d | 2026-08-12 | 2026-08-21 | A01660 FS+2.4d |  |  | Electrical [60 h] |
| A01520 |  | De-energize & tag out cable run 9A (04-190-1-Q) | 0d | 2026-08-12 | 2026-08-23 | A01510 |  |  | Electrical [332 h] |
| A00430 |  | Circuit survey — lighting circuit 9B — Bow non-skid field | 0d | 2026-08-19 | 2026-08-26 |  |  |  | Electrical [97 h] |
| A01760 |  | Circuit survey — lighting circuit 5B — Arresting gear wire area | 0d | 2026-08-20 | 2026-08-23 |  |  |  | Electrical [38 h] |
| A01310 |  | De-energize & tag out cable run 2B — Catapult No. 4 track | 0d | 2026-08-21 | 2026-08-28 | A01300 FS+0.8d |  |  | Electrical [90 h] |
| A01680 |  | Pull & land cable — cable run 2A — Jet blast deflector No. 3 | 0d | 2026-08-23 | 2026-08-25 | A01670 |  |  | Electrical [45 h]; Rigging & Weight Handling [12 h] |
| A01770 |  | De-energize & tag out lighting circuit 5B — Arresting gear wire area | 0d | 2026-08-25 | 2026-08-31 | A01760 |  |  | Electrical [95 h] |
| A01530 |  | Pull & land cable — cable run 9A (04-190-1-Q) | 0d | 2026-08-25 | 2026-09-02 | A01520 |  |  | Electrical [119 h] |
| A01690 |  | Megger & continuity test cable run 2A — Jet blast deflector No. 3 | 0d | 2026-08-28 | 2026-09-03 | A01680 FS+2.4d |  |  | Electrical [105 h] |
| A00440 |  | De-energize & tag out lighting circuit 9B — Bow non-skid field | 0d | 2026-08-28 | 2026-09-04 | A00430 |  |  | Electrical [189 h] |
| A01320 |  | Pull & land cable — cable run 2B — Catapult No. 4 track | 0d | 2026-08-30 | 2026-09-08 | A01310 |  |  | Electrical [106 h] |
| A01780 |  | Pull & land cable — lighting circuit 5B — Arresting gear wire area | 0d | 2026-09-02 | 2026-09-14 | A01770 |  |  | Electrical [157 h] |
| A01540 |  | Megger & continuity test cable run 9A (04-190-1-Q) | 0d | 2026-09-03 | 2026-09-12 | A01530 |  |  | Electrical [254 h] |
| A01700 |  | Energize & close-out cable run 2A — Jet blast deflector No. 3 | 0d | 2026-09-03 | 2026-09-15 | A01690 |  |  | Electrical [101 h] |
| A00450 |  | Pull & land cable — lighting circuit 9B — Bow non-skid field | 0d | 2026-09-04 | 2026-09-09 | A00440 FS-0.8d |  |  | Electrical [85 h] |
| A01330 |  | Megger & continuity test cable run 2B — Catapult No. 4 track | 0d | 2026-09-09 | 2026-09-21 | A01320 FS+0.8d |  |  | Electrical [82 h] |
| A00460 |  | Megger & continuity test lighting circuit 9B — Bow non-skid field | 0d | 2026-09-09 | 2026-09-20 | A00450 FS+0.8d |  |  | Electrical [58 h] |
| A01550 |  | Energize & close-out cable run 9A (04-190-1-Q) | 0d | 2026-09-13 | 2026-09-25 | A01540 FS+2.4d |  |  | Electrical [236 h]; Rigging & Weight Handling [60 h] |
| A01790 |  | Megger & continuity test lighting circuit 5B — Arresting gear wire area | 0d | 2026-09-16 | 2026-09-30 | A01780 SS+7.2d |  |  | Electrical [197 h] |
| A00470 |  | Energize & close-out lighting circuit 9B — Bow non-skid field | 0d | 2026-09-23 | 2026-10-03 | A00460 |  |  | Electrical [85 h] |
| A01340 |  | Energize & close-out cable run 2B — Catapult No. 4 track | 0d | 2026-09-23 | 2026-09-29 | A01330 FS+2.4d |  |  | Electrical [155 h] |
| A01800 |  | Energize & close-out lighting circuit 5B — Arresting gear wire area | 0d | 2026-09-30 | 2026-10-05 | A01790 |  |  | Electrical [30 h] |

| ID | WBS | Activity | Duration | Start | Finish | Predecessors | Complete | Remaining | Resources |
| --- | --- | --- | --- | --- | --- | --- | --- | --- | --- |
|  | 430 | **430 Interior Communications** |  |  |  |  |  |  |  |
|  | 505 | **505 Piping Systems** |  | 2026-07-27 | 2026-09-28 |  |  |  |  |
| A00790 |  | Lay-up & drain drain riser 2A — Jet blast deflector No. 2 | 0d | 2026-07-27 A | 2026-08-07 A |  | 100% |  | Pipefitting [151 h] |
| A00220 |  | Lay-up & drain pipe spool group 4B — Catapult No. 2 track | 0d | 2026-07-31 A | 2026-08-05 A |  | 100% |  | Pipefitting [31 h] |
| A00680 |  | Lay-up & drain valve bank 4B — Jet blast deflector No. 1 | 0d | 2026-08-05 A | 2026-08-12 |  | 60% | 0d | Pipefitting [42 h] |
| A01450 |  | Lay-up & drain drain riser 4C — Waist non-skid field | 0d | 2026-08-05 A | 2026-08-13 |  | 54% | 0d | Pipefitting [152 h]; Rigging & Weight Handling [38 h] |
| A00230 |  | Cut out pipe spool group 4B — Catapult No. 2 track | 0d | 2026-08-07 A | 2026-08-17 | A00220 | 19% | 0d | Pipefitting [75 h] |
| A00800 |  | Cut out drain riser 2A — Jet blast deflector No. 2 | 0d | 2026-08-08 A | 2026-08-14 | A00790 | 18% | 0d | Pipefitting [94 h] |
| A00690 |  | Cut out valve bank 4B — Jet blast deflector No. 1 | 0d | 2026-08-13 | 2026-08-18 | A00680 |  |  | Pipefitting [132 h] |
| A01460 |  | Cut out drain riser 4C — Waist non-skid field | 0d | 2026-08-14 | 2026-08-20 | A01450 FS+0.8d |  |  | Pipefitting [177 h] |
| A00810 |  | Fab & fit drain riser 2A — Jet blast deflector No. 2 | 0d | 2026-08-15 | 2026-08-26 | A00800 FS+2.4d |  |  | Pipefitting [128 h]; Rigging & Weight Handling [33 h] |
| A00240 |  | Fab & fit pipe spool group 4B — Catapult No. 2 track | 0d | 2026-08-17 | 2026-08-22 | A00230 |  |  | Pipefitting [116 h] |
| A00700 |  | Fab & fit valve bank 4B — Jet blast deflector No. 1 | 0d | 2026-08-19 | 2026-08-23 | A00690 FS-1.6d |  |  | Pipefitting [38 h]; Rigging & Weight Handling [10 h] |
| A01470 |  | Fab & fit drain riser 4C — Waist non-skid field | 0d | 2026-08-20 | 2026-09-02 | A01460 |  |  | Pipefitting [90 h] |
| A00250 |  | Weld out pipe spool group 4B — Catapult No. 2 track | 0d | 2026-08-25 | 2026-09-08 | A00240 FS-2.4d |  |  | Pipefitting [91 h] |
| A00710 |  | Weld out valve bank 4B — Jet blast deflector No. 1 | 0d | 2026-08-25 | 2026-08-28 | A00700 |  |  | Pipefitting [21 h] |
| A00820 |  | Weld out drain riser 2A — Jet blast deflector No. 2 | 0d | 2026-08-27 | 2026-09-01 | A00810 FS+2.4d |  |  | Pipefitting [44 h] |
| A00720 |  | Hydro test valve bank 4B — Jet blast deflector No. 1 | 0d | 2026-08-29 | 2026-09-11 | A00710 |  |  | Pipefitting [208 h] |
| A01480 |  | Weld out drain riser 4C — Waist non-skid field | 0d | 2026-09-02 | 2026-09-10 | A01470 FS-4.8d |  |  | Pipefitting [72 h] |
| A00830 |  | Hydro test drain riser 2A — Jet blast deflector No. 2 | 0d | 2026-09-02 | 2026-09-05 | A00820 |  |  | Pipefitting [22 h] |
| A00840 |  | Flush & restore drain riser 2A — Jet blast deflector No. 2 | 0d | 2026-09-06 | 2026-09-18 | A00830 |  |  | Pipefitting [145 h] |
| A00260 |  | Hydro test pipe spool group 4B — Catapult No. 2 track | 0d | 2026-09-09 | 2026-09-17 | A00250 |  |  | Pipefitting [191 h]; Rigging & Weight Handling [48 h] |
| A01490 |  | Hydro test drain riser 4C — Waist non-skid field | 0d | 2026-09-10 | 2026-09-20 | A01480 |  |  | Pipefitting [42 h]; Rigging & Weight Handling [11 h] |
| A00730 |  | Flush & restore valve bank 4B — Jet blast deflector No. 1 | 0d | 2026-09-11 | 2026-09-20 | A00720 |  |  | Pipefitting [215 h] |
| A00270 |  | Flush & restore pipe spool group 4B — Catapult No. 2 track | 0d | 2026-09-17 | 2026-09-28 | A00260 |  |  | Pipefitting [179 h] |
| A01500 |  | Flush & restore drain riser 4C — Waist non-skid field | 0d | 2026-09-20 | 2026-09-25 | A01490 |  |  | Pipefitting [60 h] |

| ID | WBS | Activity | Duration | Start | Finish | Predecessors | Complete | Remaining | Resources |
| --- | --- | --- | --- | --- | --- | --- | --- | --- | --- |
|  | 508 | **508 Insulation & Lagging** |  |  |  |  |  |  |  |
|  | 512 | **512 Ventilation & Uptakes** |  |  |  |  |  |  |  |
|  | 560 | **560 Aux Machinery** |  | 2026-07-27 | 2026-10-10 |  |  |  |  |
| A01350 |  | Open & inspect compressor 7A — Waist non-skid field | 0d | 2026-07-27 A | 2026-08-01 A |  | 100% |  | Mechanical [80 h] |
| A00480 |  | Open & inspect compressor 7C — Bow non-skid field | 0d | 2026-07-29 A | 2026-08-08 A |  | 100% |  | Mechanical [95 h] |
| A01360 |  | Remove compressor 7A for shop — Waist non-skid field | 0d | 2026-08-01 A | 2026-08-06 A | A01350 | 100% |  | Mechanical [58 h] |
| A01250 |  | Open & inspect motor group 6A — Catapult No. 4 track | 0d | 2026-08-05 A | 2026-08-12 |  | 64% | 0d | Mechanical [187 h] |
| A01370 |  | Shop overhaul — compressor 7A — Waist non-skid field | 0d | 2026-08-07 A | 2026-08-20 | A01360 FS+0.8d | 16% | 0d | Mechanical [354 h] |
| A01200 |  | Open & inspect pump set 5C — Aircraft elevator No. 4 platform | 0d | 2026-08-07 A | 2026-08-20 |  | 23% | 0d | Mechanical [244 h] |
| A01810 |  | Open & inspect compressor 1A — Jet blast deflector No. 4 | 0d | 2026-08-08 A | 2026-08-17 |  | 19% | 0d | Mechanical [167 h] |
| A00490 |  | Remove compressor 7C for shop — Bow non-skid field | 0d | 2026-08-11 | 2026-08-23 | A00480 FS+2.4d |  |  | Mechanical [99 h] |
| A00280 |  | Open & inspect pump set 7C — Catapult No. 2 track | 0d | 2026-08-12 | 2026-08-21 |  |  |  | Mechanical [150 h] |
| A01260 |  | Remove motor group 6A for shop — Catapult No. 4 track | 0d | 2026-08-14 | 2026-08-17 | A01250 |  |  | Mechanical [22 h] |
| A00580 |  | Open & inspect pump set 3B — Aircraft elevator No. 1 platform | 0d | 2026-08-14 | 2026-08-17 |  |  |  | Mechanical [39 h] |
| A01820 |  | Remove compressor 1A for shop — Jet blast deflector No. 4 | 0d | 2026-08-17 | 2026-08-30 | A01810 FS+0.8d |  |  | Mechanical [265 h] |
| A01560 |  | Open & inspect pump set 5B — Aircraft elevator No. 3 platform | 0d | 2026-08-18 | 2026-08-26 |  |  |  | Mechanical [182 h] |
| A00590 |  | Remove pump set 3B for shop — Aircraft elevator No. 1 platform | 0d | 2026-08-19 | 2026-08-29 | A00580 |  |  | Mechanical [154 h] |
| A01270 |  | Shop overhaul — motor group 6A — Catapult No. 4 track | 0d | 2026-08-20 | 2026-08-29 | A01260 FS+2.4d |  |  | Mechanical [305 h] |
| A00290 |  | Remove pump set 7C for shop — Catapult No. 2 track | 0d | 2026-08-21 | 2026-09-02 | A00280 |  |  | Mechanical [153 h] |
| A01210 |  | Remove pump set 5C for shop — Aircraft elevator No. 4 platform | 0d | 2026-08-23 | 2026-09-03 | A01200 FS+2.4d |  |  | Mechanical [343 h] |
| A01380 |  | Reinstall & align compressor 7A — Waist non-skid field | 0d | 2026-08-23 | 2026-08-29 | A01370 |  |  | Mechanical [219 h] |
| A00500 |  | Shop overhaul — compressor 7C — Bow non-skid field | 0d | 2026-08-23 | 2026-09-04 | A00490 FS-0.8d |  |  | Mechanical [205 h] |
| A01570 |  | Remove pump set 5B for shop — Aircraft elevator No. 3 platform | 0d | 2026-08-27 | 2026-09-06 | A01560 FS+2.4d |  |  | Mechanical [76 h] |
| A01280 |  | Reinstall & align motor group 6A — Catapult No. 4 track | 0d | 2026-08-29 | 2026-08-31 | A01270 |  |  | Mechanical [14 h] |
| A01390 |  | Operational test compressor 7A — Waist non-skid field | 0d | 2026-08-29 | 2026-09-01 | A01380 FS+2.4d |  |  | Mechanical [16 h] |
| A01830 |  | Shop overhaul — compressor 1A — Jet blast deflector No. 4 | 0d | 2026-08-31 | 2026-09-05 | A01820 |  |  | Mechanical [73 h] |
| A00600 |  | Shop overhaul — pump set 3B — Aircraft elevator No. 1 platform | 0d | 2026-09-01 | 2026-09-07 | A00590 |  |  | Mechanical [142 h]; Rigging & Weight Handling [36 h] |
| A00300 |  | Shop overhaul — pump set 7C — Catapult No. 2 track | 0d | 2026-09-03 | 2026-09-05 | A00290 FS+2.4d |  |  | Mechanical [58 h] |
| A01290 |  | Operational test motor group 6A — Catapult No. 4 track | 0d | 2026-09-03 | 2026-09-15 | A01280 |  |  | Mechanical [68 h] |
| A00510 |  | Reinstall & align compressor 7C — Bow non-skid field | 0d | 2026-09-05 | 2026-09-17 | A00500 |  |  | Mechanical [326 h] |
| A01220 |  | Shop overhaul — pump set 5C — Aircraft elevator No. 4 platform | 0d | 2026-09-06 | 2026-09-13 | A01210 FS+2.4d |  |  | Mechanical [100 h] |
| A00310 |  | Reinstall & align pump set 7C — Catapult No. 2 track | 0d | 2026-09-07 | 2026-09-20 | A00300 FS+2.4d |  |  | Mechanical [194 h] |
| A01840 |  | Reinstall & align compressor 1A — Jet blast deflector No. 4 | 0d | 2026-09-07 | 2026-09-17 | A01830 |  |  | Mechanical [228 h] |
| A00610 |  | Reinstall & align pump set 3B — Aircraft elevator No. 1 platform | 0d | 2026-09-07 | 2026-09-11 | A00600 FS+2.4d |  |  | Mechanical [63 h] |
| A01580 |  | Shop overhaul — pump set 5B — Aircraft elevator No. 3 platform | 0d | 2026-09-09 | 2026-09-21 | A01570 FS+2.4d |  |  | Mechanical [180 h] |
| A00620 |  | Operational test pump set 3B — Aircraft elevator No. 1 platform | 0d | 2026-09-13 | 2026-09-19 | A00610 FS+2.4d |  |  | Mechanical [40 h] |
| A01230 |  | Reinstall & align pump set 5C — Aircraft elevator No. 4 platform | 0d | 2026-09-13 | 2026-09-19 | A01220 |  |  | Mechanical [103 h] |
| A01850 |  | Operational test compressor 1A — Jet blast deflector No. 4 | 0d | 2026-09-19 | 2026-10-02 | A01840 |  |  | Mechanical [84 h] |
| A00520 |  | Operational test compressor 7C — Bow non-skid field | 0d | 2026-09-19 | 2026-10-01 | A00510 |  |  | Mechanical [93 h] |
| A01240 |  | Operational test pump set 5C — Aircraft elevator No. 4 platform | 0d | 2026-09-19 | 2026-09-27 | A01230 |  |  | Mechanical [212 h] |
| A00320 |  | Operational test pump set 7C — Catapult No. 2 track | 0d | 2026-09-21 | 2026-10-04 | A00310 |  |  | Mechanical [324 h] |
| A01590 |  | Reinstall & align pump set 5B — Aircraft elevator No. 3 platform | 0d | 2026-09-21 | 2026-09-26 | A01580 |  |  | Mechanical [100 h] |
| A01600 |  | Operational test pump set 5B — Aircraft elevator No. 3 platform | 0d | 2026-09-29 | 2026-10-10 | A01590 FS+2.4d |  |  | Mechanical [187 h] |

| ID | WBS | Activity | Duration | Start | Finish | Predecessors | Complete | Remaining | Resources |
| --- | --- | --- | --- | --- | --- | --- | --- | --- | --- |
|  | 631 | **631 Preservation** |  | 2026-07-28 | 2026-10-10 |  |  |  |  |
| A00850 |  | Surface survey — overhead coating 4B — Jet blast deflector No. 2 | 0d | 2026-07-28 A | 2026-08-08 A |  | 100% |  | Preservation / Blast & Coat [167 h]; Rigging & Weight Handling [42 h] |
| A00950 |  | Surface survey — bilge preservation 6B — Catapult No. 3 track | 0d | 2026-07-31 A | 2026-08-07 A |  | 100% |  | Preservation / Blast & Coat [184 h] |
| A00740 |  | Surface survey — bilge preservation 4C — Jet blast deflector No. 1 | 0d | 2026-08-02 A | 2026-08-16 |  | 54% | 0d | Preservation / Blast & Coat [169 h] |
| A02010 |  | Surface survey — bilge preservation 1C — LSO platform | 0d | 2026-08-06 A | 2026-08-15 |  | 41% | 0d | Preservation / Blast & Coat [165 h] |
| A01400 |  | Surface survey — bilge preservation 1B — Waist non-skid field | 0d | 2026-08-09 A | 2026-08-13 |  | 7% | 0d | Preservation / Blast & Coat [24 h]; Rigging & Weight Handling [6 h] |
| A00960 |  | Blast / mechanical prep bilge preservation 6B — Catapult No. 3 track | 0d | 2026-08-10 A | 2026-08-15 | A00950 FS+2.4d | 3% | 0d | Preservation / Blast & Coat [93 h] |
| A01960 |  | Surface survey — overhead coating 9B — LSO platform | 0d | 2026-08-10 A | 2026-08-14 |  | 3% | 0d | Preservation / Blast & Coat [86 h] |
| A01100 |  | Surface survey — overhead coating 8A — Aircraft elevator No. 4 platform | 0d | 2026-08-10 | 2026-08-18 |  |  |  | Preservation / Blast & Coat [162 h] |
| A01910 |  | Surface survey — bilge preservation 8A — LSO platform | 0d | 2026-08-10 | 2026-08-23 |  |  |  | Preservation / Blast & Coat [278 h] |
| A00380 |  | Surface survey — overhead coating 7A — Bow non-skid field | 0d | 2026-08-11 | 2026-08-22 |  |  |  | Preservation / Blast & Coat [175 h] |
| A00860 |  | Blast / mechanical prep overhead coating 4B — Jet blast deflector No. 2 | 0d | 2026-08-11 | 2026-08-21 | A00850 |  |  | Preservation / Blast & Coat [126 h] |
| A01150 |  | Surface survey — overhead coating 2B (04-150-2-Q) | 0d | 2026-08-12 | 2026-08-14 |  |  |  | Preservation / Blast & Coat [85 h] |
| A00170 |  | Surface survey — deck coating 6A — Catapult No. 2 track | 0d | 2026-08-12 | 2026-08-16 |  |  |  | Preservation / Blast & Coat [131 h] |
| A00070 |  | Surface survey — deck coating 1B — Catapult No. 1 track | 0d | 2026-08-12 | 2026-08-24 |  |  |  | Preservation / Blast & Coat [82 h] |
| A01710 |  | Surface survey — deck coating 3A — Arresting gear wire area | 0d | 2026-08-13 | 2026-08-20 |  |  |  | Preservation / Blast & Coat [41 h] |
| A02160 |  | Surface survey — overhead coating 5B — Fantail arresting gear sheave space | 0d | 2026-08-14 | 2026-08-23 |  |  |  | Preservation / Blast & Coat [75 h] |
| A01410 |  | Blast / mechanical prep bilge preservation 1B — Waist non-skid field | 0d | 2026-08-14 | 2026-08-25 | A01400 |  |  | Preservation / Blast & Coat [88 h] |
| A00970 |  | Prime coat bilge preservation 6B — Catapult No. 3 track | 0d | 2026-08-16 | 2026-08-22 | A00960 FS+2.4d |  |  | Preservation / Blast & Coat [187 h] |
| A01970 |  | Blast / mechanical prep overhead coating 9B — LSO platform | 0d | 2026-08-16 | 2026-08-23 | A01960 FS-4.8d |  |  | Preservation / Blast & Coat [168 h]; Rigging & Weight Handling [43 h] |
| A00180 |  | Blast / mechanical prep deck coating 6A — Catapult No. 2 track | 0d | 2026-08-17 | 2026-08-21 | A00170 |  |  | Preservation / Blast & Coat [49 h]; Rigging & Weight Handling [13 h] |
| A01160 |  | Blast / mechanical prep overhead coating 2B (04-150-2-Q) | 0d | 2026-08-17 | 2026-08-30 | A01150 |  |  | Preservation / Blast & Coat [336 h] |
| A00630 |  | Surface survey — overhead coating 3A — Jet blast deflector No. 1 | 0d | 2026-08-17 | 2026-08-24 |  |  |  | Preservation / Blast & Coat [111 h] |
| A02020 |  | Blast / mechanical prep bilge preservation 1C — LSO platform | 0d | 2026-08-17 | 2026-08-28 | A02010 FS+2.4d |  |  | Preservation / Blast & Coat [154 h] |
| A00750 |  | Blast / mechanical prep bilge preservation 4C — Jet blast deflector No. 1 | 0d | 2026-08-17 | 2026-08-24 | A00740 FS+0.8d |  |  | Preservation / Blast & Coat [77 h] |
| A01110 |  | Blast / mechanical prep overhead coating 8A — Aircraft elevator No. 4 platform | 0d | 2026-08-18 | 2026-08-27 | A01100 FS+2.4d |  |  | Preservation / Blast & Coat [157 h] |
| A01050 |  | Surface survey — bilge preservation 8B — Aircraft elevator No. 2 platform | 0d | 2026-08-20 | 2026-08-25 |  |  |  | Preservation / Blast & Coat [38 h] |
| A01720 |  | Blast / mechanical prep deck coating 3A — Arresting gear wire area | 0d | 2026-08-20 | 2026-08-30 | A01710 |  |  | Preservation / Blast & Coat [62 h] |
| A00190 |  | Prime coat deck coating 6A — Catapult No. 2 track | 0d | 2026-08-21 | 2026-08-31 | A00180 |  |  | Preservation / Blast & Coat [88 h] |
| A00870 |  | Prime coat overhead coating 4B — Jet blast deflector No. 2 | 0d | 2026-08-22 | 2026-09-04 | A00860 FS+0.8d |  |  | Preservation / Blast & Coat [92 h] |
| A00980 |  | Top coat bilge preservation 6B — Catapult No. 3 track | 0d | 2026-08-22 | 2026-09-02 | A00970 FS+2.4d |  |  | Preservation / Blast & Coat [112 h]; Rigging & Weight Handling [29 h] |
| A00390 |  | Blast / mechanical prep overhead coating 7A — Bow non-skid field | 0d | 2026-08-23 | 2026-09-03 | A00380 |  |  | Preservation / Blast & Coat [272 h] |
| A01980 |  | Prime coat overhead coating 9B — LSO platform | 0d | 2026-08-24 | 2026-09-01 | A01970 |  |  | Preservation / Blast & Coat [54 h] |
| A02170 |  | Blast / mechanical prep overhead coating 5B — Fantail arresting gear sheave space | 0d | 2026-08-24 | 2026-09-02 | A02160 FS+0.8d |  |  | Preservation / Blast & Coat [232 h] |
| A00080 |  | Blast / mechanical prep deck coating 1B — Catapult No. 1 track | 0d | 2026-08-25 | 2026-09-02 | A00070 FS+0.8d |  |  | Preservation / Blast & Coat [211 h] |
| A01920 |  | Blast / mechanical prep bilge preservation 8A — LSO platform | 0d | 2026-08-25 | 2026-08-30 | A01910 |  |  | Preservation / Blast & Coat [159 h] |
| A00640 |  | Blast / mechanical prep overhead coating 3A — Jet blast deflector No. 1 | 0d | 2026-08-26 | 2026-08-31 | A00630 |  |  | Preservation / Blast & Coat [39 h] |
| A00760 |  | Prime coat bilge preservation 4C — Jet blast deflector No. 1 | 0d | 2026-08-27 | 2026-08-31 | A00750 FS+2.4d |  |  | Preservation / Blast & Coat [109 h] |
| A01420 |  | Prime coat bilge preservation 1B — Waist non-skid field | 0d | 2026-08-27 | 2026-09-01 | A01410 SS+2.4d |  |  | Preservation / Blast & Coat [126 h] |
| A01060 |  | Blast / mechanical prep bilge preservation 8B — Aircraft elevator No. 2 platform | 0d | 2026-08-28 | 2026-09-06 | A01050 FS+2.4d |  |  | Preservation / Blast & Coat [141 h]; Rigging & Weight Handling [36 h] |
| A02030 |  | Prime coat bilge preservation 1C — LSO platform | 0d | 2026-08-29 | 2026-09-10 | A02020 FS+0.8d |  |  | Preservation / Blast & Coat [296 h] |
| A01120 |  | Prime coat overhead coating 8A — Aircraft elevator No. 4 platform | 0d | 2026-08-29 | 2026-09-09 | A01110 FS+2.4d |  |  | Preservation / Blast & Coat [231 h] |
| A01730 |  | Prime coat deck coating 3A — Arresting gear wire area | 0d | 2026-08-31 | 2026-09-09 | A01720 |  |  | Preservation / Blast & Coat [56 h]; Rigging & Weight Handling [15 h] |
| A01170 |  | Prime coat overhead coating 2B (04-150-2-Q) | 0d | 2026-09-01 | 2026-09-06 | A01160 FS+0.8d |  |  | Preservation / Blast & Coat [34 h] |
| A00200 |  | Top coat deck coating 6A — Catapult No. 2 track | 0d | 2026-09-01 | 2026-09-10 | A00190 FS+0.8d |  |  | Preservation / Blast & Coat [207 h] |
| A00650 |  | Prime coat overhead coating 3A — Jet blast deflector No. 1 | 0d | 2026-09-01 | 2026-09-10 | A00640 |  |  | Preservation / Blast & Coat [63 h]; Rigging & Weight Handling [16 h] |
| A01930 |  | Prime coat bilge preservation 8A — LSO platform | 0d | 2026-09-01 | 2026-09-09 | A01920 |  |  | Preservation / Blast & Coat [161 h] |
| A00090 |  | Prime coat deck coating 1B — Catapult No. 1 track | 0d | 2026-09-02 | 2026-09-05 | A00080 |  |  | Preservation / Blast & Coat [104 h] |
| A00770 |  | Top coat bilge preservation 4C — Jet blast deflector No. 1 | 0d | 2026-09-02 | 2026-09-15 | A00760 |  |  | Preservation / Blast & Coat [106 h] |
| A01430 |  | Top coat bilge preservation 1B — Waist non-skid field | 0d | 2026-09-02 | 2026-09-10 | A01420 |  |  | Preservation / Blast & Coat [61 h] |
| A02180 |  | Prime coat overhead coating 5B — Fantail arresting gear sheave space | 0d | 2026-09-03 | 2026-09-11 | A02170 |  |  | Preservation / Blast & Coat [120 h]; Rigging & Weight Handling [30 h] |
| A01990 |  | Top coat overhead coating 9B — LSO platform | 0d | 2026-09-04 | 2026-09-13 | A01980 FS+2.4d |  |  | Preservation / Blast & Coat [164 h] |
| A00990 |  | Cure & inspect bilge preservation 6B — Catapult No. 3 track | 0d | 2026-09-05 | 2026-09-13 | A00980 FS+0.8d |  |  | Preservation / Blast & Coat [155 h] |
| A00400 |  | Prime coat overhead coating 7A — Bow non-skid field | 0d | 2026-09-05 | 2026-09-13 | A00390 FS+0.8d |  |  | Preservation / Blast & Coat [158 h] |
| A00880 |  | Top coat overhead coating 4B — Jet blast deflector No. 2 | 0d | 2026-09-05 | 2026-09-17 | A00870 FS+2.4d |  |  | Preservation / Blast & Coat [71 h] |
| A00100 |  | Top coat deck coating 1B — Catapult No. 1 track | 0d | 2026-09-06 | 2026-09-15 | A00090 FS+0.8d |  |  | Preservation / Blast & Coat [122 h] |
| A01070 |  | Prime coat bilge preservation 8B — Aircraft elevator No. 2 platform | 0d | 2026-09-07 | 2026-09-19 | A01060 FS+0.8d |  |  | Preservation / Blast & Coat [73 h]; Rigging & Weight Handling [19 h] |
| A01180 |  | Top coat overhead coating 2B (04-150-2-Q) | 0d | 2026-09-08 | 2026-09-17 | A01170 FS+0.8d |  |  | Preservation / Blast & Coat [283 h] |
| A01130 |  | Top coat overhead coating 8A — Aircraft elevator No. 4 platform | 0d | 2026-09-09 | 2026-09-14 | A01120 FS+0.8d |  |  | Preservation / Blast & Coat [32 h] |
| A01740 |  | Top coat deck coating 3A — Arresting gear wire area | 0d | 2026-09-10 | 2026-09-22 | A01730 FS+0.8d |  |  | Preservation / Blast & Coat [355 h] |
| A00660 |  | Top coat overhead coating 3A — Jet blast deflector No. 1 | 0d | 2026-09-11 | 2026-09-17 | A00650 |  |  | Preservation / Blast & Coat [29 h]; Rigging & Weight Handling [8 h] |
| A01940 |  | Top coat bilge preservation 8A — LSO platform | 0d | 2026-09-11 | 2026-09-21 | A01930 FS+0.8d |  |  | Preservation / Blast & Coat [118 h] |
| A02190 |  | Top coat overhead coating 5B — Fantail arresting gear sheave space | 0d | 2026-09-11 | 2026-09-18 | A02180 FS+2.4d |  |  | Preservation / Blast & Coat [126 h] |
| A02040 |  | Top coat bilge preservation 1C — LSO platform | 0d | 2026-09-12 | 2026-09-24 | A02030 FS+0.8d |  |  | Preservation / Blast & Coat [111 h] |
| A01440 |  | Cure & inspect bilge preservation 1B — Waist non-skid field | 0d | 2026-09-12 | 2026-09-21 | A01430 |  |  | Preservation / Blast & Coat [109 h] |
| A00210 |  | Cure & inspect deck coating 6A — Catapult No. 2 track | 0d | 2026-09-12 | 2026-09-23 | A00200 SS+2.4d |  |  | Preservation / Blast & Coat [133 h] |
| A00410 |  | Top coat overhead coating 7A — Bow non-skid field | 0d | 2026-09-15 | 2026-09-21 | A00400 |  |  | Preservation / Blast & Coat [43 h] |
| A02000 |  | Cure & inspect overhead coating 9B — LSO platform | 0d | 2026-09-15 | 2026-09-22 | A01990 |  |  | Preservation / Blast & Coat [142 h] |
| A01140 |  | Cure & inspect overhead coating 8A — Aircraft elevator No. 4 platform | 0d | 2026-09-16 | 2026-09-20 | A01130 FS+2.4d |  |  | Preservation / Blast & Coat [86 h]; Rigging & Weight Handling [22 h] |
| A00780 |  | Cure & inspect bilge preservation 4C — Jet blast deflector No. 1 | 0d | 2026-09-17 | 2026-09-30 | A00770 FS+2.4d |  |  | Preservation / Blast & Coat [212 h] |

| ID | WBS | Activity | Duration | Start | Finish | Predecessors | Complete | Remaining | Resources |
| --- | --- | --- | --- | --- | --- | --- | --- | --- | --- |
| A00110 |  | Cure & inspect deck coating 1B — Catapult No. 1 track | 0d | 2026-09-18 | 2026-09-20 | A00100 |  |  | Preservation / Blast & Coat [73 h] |
| A01190 |  | Cure & inspect overhead coating 2B (04-150-2-Q) | 0d | 2026-09-18 | 2026-09-23 | A01180 |  |  | Preservation / Blast & Coat [52 h]; Rigging & Weight Handling [13 h] |
| A00890 |  | Cure & inspect overhead coating 4B — Jet blast deflector No. 2 | 0d | 2026-09-18 | 2026-09-27 | A00880 FS+2.4d |  |  | Preservation / Blast & Coat [160 h] |
| A00670 |  | Cure & inspect overhead coating 3A — Jet blast deflector No. 1 | 0d | 2026-09-19 | 2026-09-22 | A00660 |  |  | Preservation / Blast & Coat [15 h] |
| A01080 |  | Top coat bilge preservation 8B — Aircraft elevator No. 2 platform | 0d | 2026-09-20 | 2026-09-28 | A01070 FS+0.8d |  |  | Preservation / Blast & Coat [192 h] |
| A02200 |  | Cure & inspect overhead coating 5B — Fantail arresting gear sheave space | 0d | 2026-09-20 | 2026-09-27 | A02190 |  |  | Preservation / Blast & Coat [58 h] |
| A01950 |  | Cure & inspect bilge preservation 8A — LSO platform | 0d | 2026-09-22 | 2026-10-01 | A01940 |  |  | Preservation / Blast & Coat [65 h] |
| A00420 |  | Cure & inspect overhead coating 7A — Bow non-skid field | 0d | 2026-09-22 | 2026-10-04 | A00410 |  |  | Preservation / Blast & Coat [271 h] |
| A01750 |  | Cure & inspect deck coating 3A — Arresting gear wire area | 0d | 2026-09-23 | 2026-09-28 | A01740 |  |  | Preservation / Blast & Coat [57 h] |
| A02050 |  | Cure & inspect bilge preservation 1C — LSO platform | 0d | 2026-09-26 | 2026-10-09 | A02040 |  |  | Preservation / Blast & Coat [72 h] |
| A01090 |  | Cure & inspect bilge preservation 8B — Aircraft elevator No. 2 platform | 0d | 2026-09-30 | 2026-10-10 | A01080 SS+2.4d |  |  | Preservation / Blast & Coat [198 h] |
|  | SVC | **Zone Services & Access** |  | 2026-07-27 | 2026-10-14 |  |  |  |  |
| A55370 |  | Run temporary power — Flight Deck & Island feeder 3 | 0d | 2026-07-27 A | 2026-08-06 A |  | 100% |  | Electrical [132 h] |
| A55400 |  | Temp ventilation trunk 4 — Flight Deck & Island | 0d | 2026-07-28 A | 2026-07-31 A |  | 100% |  | Sheet Metal / HVAC [29 h] |
| A55470 |  | Strike scaffolding — Flight Deck & Island band 7 | 0d | 2026-07-31 A | 2026-08-09 A |  | 100% |  | Rigging & Weight Handling [210 h] |
| A55350 |  | Strike scaffolding — Flight Deck & Island band 2 | 0d | 2026-08-03 A | 2026-08-06 A |  | 100% |  | Rigging & Weight Handling [33 h] |
| A55330 |  | Run temporary power — Flight Deck & Island feeder 1 | 0d | 2026-08-09 A | 2026-08-19 |  | 4% | 0d | Electrical [68 h] |
| A55420 |  | Strike scaffolding — Flight Deck & Island band 5 | 0d | 2026-08-12 | 2026-08-17 |  |  |  | Rigging & Weight Handling [96 h] |
| A55490 |  | Temp ventilation trunk 8 — Flight Deck & Island | 0d | 2026-08-14 | 2026-08-17 |  |  |  | Sheet Metal / HVAC [60 h] |
| A55480 |  | Stage scaffolding — Flight Deck & Island band 7 | 0d | 2026-08-18 | 2026-08-26 | A55470 |  |  | Rigging & Weight Handling [262 h] |
| A55450 |  | Temp ventilation trunk 6 — Flight Deck & Island | 0d | 2026-08-20 | 2026-08-27 |  |  |  | Sheet Metal / HVAC [119 h] |
| A55360 |  | Rig access platforms — Flight Deck & Island band 2 | 0d | 2026-08-22 | 2026-08-31 | A55350 |  |  | Rigging & Weight Handling [118 h] |
| A55430 |  | Stage scaffolding — Flight Deck & Island band 5 | 0d | 2026-09-04 | 2026-09-07 | A55420 |  |  | Rigging & Weight Handling [33 h] |
| A55410 |  | Reposition temp vent 4 — Flight Deck & Island | 0d | 2026-09-04 | 2026-09-09 | A55400 |  |  | Sheet Metal / HVAC [58 h] |
| A55460 |  | Reposition temp vent 6 — Flight Deck & Island | 0d | 2026-09-13 | 2026-09-22 | A55450 |  |  | Sheet Metal / HVAC [66 h] |
| A55380 |  | Temp lighting string 3 — Flight Deck & Island | 0d | 2026-09-15 | 2026-09-19 | A55370 |  |  | Electrical [31 h] |
| A55440 |  | Rig access platforms — Flight Deck & Island band 5 | 0d | 2026-09-17 | 2026-09-22 | A55430 |  |  | Rigging & Weight Handling [100 h] |
| A55500 |  | Reposition temp vent 8 — Flight Deck & Island | 0d | 2026-09-17 | 2026-09-22 | A55490 |  |  | Sheet Metal / HVAC [39 h] |
| A55340 |  | Temp lighting string 1 — Flight Deck & Island | 0d | 2026-09-25 | 2026-10-02 | A55330 |  |  | Electrical [40 h] |
| A55390 |  | Recover temp services — Flight Deck & Island feeder 3 | 0d | 2026-10-12 | 2026-10-14 | A55380 |  |  | Electrical [17 h] |

| ID | WBS | Activity | Duration | Start | Finish | Predecessors | Complete | Remaining | Resources |
| --- | --- | --- | --- | --- | --- | --- | --- | --- | --- |
|  | Z2 | **Zone 2 — Hangar & Gallery** |  | 2026-07-27 | 2026-10-28 |  |  |  |  |
|  | 130 | **130 Hull Structure** |  | 2026-07-27 | 2026-10-22 |  |  |  |  |
| A17180 |  | NDT survey — foundation group 4C — Hangar Bay 2 (elevator No. 2 bay) | 0d | 2026-07-27 A | 2026-08-06 A |  | 100% |  | Structural Welding [229 h] |
| A14540 |  | NDT survey — foundation group 5A — Aviation supply storeroom No. 3 | 0d | 2026-07-28 A | 2026-08-07 A |  | 100% |  | Structural Welding [134 h] |
| A16720 |  | NDT survey — structural bay 6C — Hangar Bay 2 | 0d | 2026-07-28 A | 2026-08-01 A |  | 100% |  | Structural Welding [24 h] |
| A03640 |  | NDT survey — structural bay 3B — Squadron ready storeroom No. 1 | 0d | 2026-07-28 A | 2026-08-11 |  | 87% | 0d | Structural Welding [216 h] |
| A13190 |  | NDT survey — foundation group 2B — AIMD Tire & wheel shop | 0d | 2026-07-29 A | 2026-08-07 A |  | 100% |  | Structural Welding [122 h] |
| A14110 |  | NDT survey — structural bay 6D — AIMD Power plants shop | 0d | 2026-07-29 A | 2026-08-02 A |  | 100% |  | Structural Welding [45 h] |
| A14700 |  | NDT survey — deck insert 8B — AIMD Survival equipment shop | 0d | 2026-07-29 A | 2026-08-11 |  | 78% | 0d | Structural Welding [171 h] |
| A18370 |  | NDT survey — structural bay 9D — Hangar bay divisional door No. 2 | 0d | 2026-07-30 A | 2026-08-08 A |  | 100% |  | Structural Welding [65 h] |
| A10280 |  | NDT survey — deck insert 8B — Weapons elevator No. 3 machinery room – starboard | 0d | 2026-07-31 A | 2026-08-12 |  | 86% | 0d | Structural Welding [315 h] |
| A09000 |  | NDT survey — structural bay 5A — Hose reel locker No. 2 | 0d | 2026-07-31 A | 2026-08-03 A |  | 100% |  | Structural Welding [42 h] |
| A17910 |  | NDT survey — foundation group 9B — Hangar bay fire station No. 4 | 0d | 2026-07-31 A | 2026-08-07 A |  | 100% |  | Structural Welding [58 h] |
| A13080 |  | NDT survey — foundation group 2A — Squadron storeroom No. 2 | 0d | 2026-07-31 A | 2026-08-05 A |  | 100% |  | Structural Welding [77 h] |
| A06840 |  | NDT survey — deck insert 1A — Arresting gear engine room No. 3 | 0d | 2026-07-31 A | 2026-08-04 A |  | 100% |  | Structural Welding [59 h]; Rigging & Weight Handling [15 h] |
| A04610 |  | NDT survey — deck insert 8B — Catapult No. 3 machinery room | 0d | 2026-07-31 A | 2026-08-13 |  | 72% | 0d | Structural Welding [97 h] |
| A05700 |  | NDT survey — structural bay 4B — Air wing ordnance shop | 0d | 2026-07-31 A | 2026-08-03 A |  | 100% |  | Structural Welding [20 h] |
| A13290 |  | NDT survey — foundation group 8D — AIMD Tire & wheel shop | 0d | 2026-08-01 A | 2026-08-08 A |  | 100% |  | Structural Welding [276 h] |
| A08540 |  | NDT survey — foundation group 6D — Aircraft elevator No. 1 machinery room | 0d | 2026-08-01 A | 2026-08-12 |  | 76% | 0d | Structural Welding [187 h] |
| A16920 |  | NDT survey — deck insert 2C — Ordnance staging area No. 3 | 0d | 2026-08-01 A | 2026-08-08 A |  | 100% |  | Structural Welding [221 h] |
| A19350 |  | NDT survey — foundation group 9B — Ordnance staging area No. 7 | 0d | 2026-08-01 A | 2026-08-12 |  | 57% | 0d | Structural Welding [390 h] |
| A16250 |  | NDT survey — deck insert 3A — Hangar bay workshop No. 2 | 0d | 2026-08-01 A | 2026-08-05 A |  | 100% |  | Structural Welding [53 h] |
| A09590 |  | NDT survey — foundation group 4E — Weapons elevator No. 2 machinery room – starboard | 0d | 2026-08-02 A | 2026-08-11 |  | 84% | 0d | Structural Welding [170 h] |
| A10730 |  | NDT survey — foundation group 1B — Life raft stowage No. 5 | 0d | 2026-08-02 A | 2026-08-10 A |  | 100% |  | Structural Welding [172 h] |
| A03990 |  | NDT survey — foundation group 3D — Squadron ready storeroom No. 2 | 0d | 2026-08-02 A | 2026-08-08 A |  | 100% |  | Structural Welding [91 h] |
| A19090 |  | NDT survey — structural bay 1A — Ordnance staging area No. 6 | 0d | 2026-08-02 A | 2026-08-08 A |  | 100% |  | Structural Welding [95 h] |
| A03540 |  | NDT survey — structural bay 7C — Aviation storeroom No. 1 | 0d | 2026-08-02 A | 2026-08-06 A |  | 100% |  | Structural Welding [60 h] |
| A14120 |  | Crop out structural bay 6D — AIMD Power plants shop | 0d | 2026-08-02 A | 2026-08-09 A | A14110 | 100% |  | Structural Welding [107 h] |
| A09540 |  | NDT survey — structural bay 5D (02-120-3-Q) | 0d | 2026-08-03 A | 2026-08-13 |  | 69% | 0d | Structural Welding [160 h] |
| A16730 |  | Crop out structural bay 6C — Hangar Bay 2 | 0d | 2026-08-03 A | 2026-08-15 | A16720 | 55% | 0d | Structural Welding [303 h] |
| A10530 |  | NDT survey — deck insert 5C — Aircraft elevator No. 4 machinery room | 0d | 2026-08-03 A | 2026-08-17 |  | 28% | 0d | Structural Welding [168 h] |
| A04040 |  | NDT survey — foundation group 2A — Aviation storeroom No. 3 | 0d | 2026-08-03 A | 2026-08-09 A |  | 100% |  | Structural Welding [94 h] |
| A15230 |  | NDT survey — structural bay 4C — Hangar Bay 1 | 0d | 2026-08-04 A | 2026-08-16 |  | 47% | 0d | Structural Welding [430 h] |
| A05710 |  | Crop out structural bay 4B — Air wing ordnance shop | 0d | 2026-08-04 A | 2026-08-10 | A05700 FS+2.4d | 85% | 0d | Structural Welding [172 h] |
| A03380 |  | NDT survey — deck insert 5A — Aviation storeroom No. 2 | 0d | 2026-08-04 A | 2026-08-09 A |  | 100% |  | Structural Welding [55 h] |
| A03030 |  | NDT survey — foundation group 6B — Avionics shop No. 1 | 0d | 2026-08-05 A | 2026-08-18 |  | 38% | 0d | Structural Welding [116 h] |
| A09010 |  | Crop out structural bay 5A — Hose reel locker No. 2 | 0d | 2026-08-05 A | 2026-08-14 | A09000 FS+2.4d | 31% | 0d | Structural Welding [54 h] |
| A13540 |  | NDT survey — structural bay 4C — Boat davit machinery – starboard | 0d | 2026-08-05 A | 2026-08-15 |  | 46% | 0d | Structural Welding [52 h]; Rigging & Weight Handling [13 h] |
| A14320 |  | NDT survey — foundation group 7A — AIMD Ground support equipment shop | 0d | 2026-08-05 A | 2026-08-16 |  | 39% | 0d | Structural Welding [85 h] |
| A06850 |  | Crop out deck insert 1A — Arresting gear engine room No. 3 | 0d | 2026-08-05 A | 2026-08-16 | A06840 | 41% | 0d | Structural Welding [251 h] |
| A05940 |  | NDT survey — deck insert 3C — Squadron maintenance control No. 2 | 0d | 2026-08-05 A | 2026-08-15 |  | 45% | 0d | Structural Welding [62 h]; Rigging & Weight Handling [16 h] |
| A19400 |  | NDT survey — foundation group 5C — Ordnance staging area No. 7 | 0d | 2026-08-06 A | 2026-08-18 |  | 30% | 0d | Structural Welding [151 h] |
| A16260 |  | Crop out deck insert 3A — Hangar bay workshop No. 2 | 0d | 2026-08-07 A | 2026-08-18 | A16250 FS+2.4d | 16% | 0d | Structural Welding [64 h] |
| A06640 |  | NDT survey — foundation group 7B — Arresting gear engine room No. 1 | 0d | 2026-08-07 A | 2026-08-18 |  | 19% | 0d | Structural Welding [183 h] |
| A14550 |  | Crop out foundation group 5A — Aviation supply storeroom No. 3 | 0d | 2026-08-07 A | 2026-08-11 | A14540 | 73% | 0d | Structural Welding [62 h] |
| A13090 |  | Crop out foundation group 2A — Squadron storeroom No. 2 | 0d | 2026-08-07 A | 2026-08-14 | A13080 FS+2.4d | 41% | 0d | Structural Welding [59 h] |
| A09950 |  | NDT survey — foundation group 9B — Aircraft elevator No. 2 machinery room | 0d | 2026-08-07 A | 2026-08-20 |  | 20% | 0d | Structural Welding [378 h] |
| A08340 |  | NDT survey — structural bay 3A — Sponson storeroom No. 1 | 0d | 2026-08-07 A | 2026-08-21 |  | 18% | 0d | Structural Welding [317 h] |
| A03550 |  | Crop out structural bay 7C — Aviation storeroom No. 1 | 0d | 2026-08-07 A | 2026-08-14 | A03540 FS+0.8d | 30% | 0d | Structural Welding [179 h] |
| A19100 |  | Crop out structural bay 1A — Ordnance staging area No. 6 | 0d | 2026-08-08 A | 2026-08-15 | A19090 | 22% | 0d | Structural Welding [157 h] |
| A17190 |  | Crop out foundation group 4C — Hangar Bay 2 (elevator No. 2 bay) | 0d | 2026-08-08 A | 2026-08-18 | A17180 | 15% | 0d | Structural Welding [136 h] |
| A10380 |  | NDT survey — structural bay 7D — Weapons elevator No. 3 machinery room – starboard | 0d | 2026-08-09 A | 2026-08-11 |  | 33% | 0d | Structural Welding [18 h] |
| A04150 |  | NDT survey — deck insert 9C — Aviation storeroom No. 3 | 0d | 2026-08-09 A | 2026-08-20 |  | 7% | 0d | Structural Welding [162 h] |
| A04000 |  | Crop out foundation group 3D — Squadron ready storeroom No. 2 | 0d | 2026-08-09 A | 2026-08-12 | A03990 | 12% | 0d | Structural Welding [13 h]; Rigging & Weight Handling [4 h] |
| A13200 |  | Crop out foundation group 2B — AIMD Tire & wheel shop | 0d | 2026-08-09 A | 2026-08-13 | A13190 FS+2.4d | 10% | 0d | Structural Welding [77 h] |
| A17920 |  | Crop out foundation group 9B — Hangar bay fire station No. 4 | 0d | 2026-08-09 A | 2026-08-12 | A17910 FS+2.4d | 10% | 0d | Structural Welding [21 h] |
| A14130 |  | Fit & weld structural bay 6D — AIMD Power plants shop | 0d | 2026-08-09 A | 2026-08-22 | A14120 FS+0.8d | 1% | 0d | Structural Welding [101 h] |
| A16930 |  | Crop out deck insert 2C — Ordnance staging area No. 3 | 0d | 2026-08-10 | 2026-08-21 | A16920 |  |  | Structural Welding [172 h] |
| A18380 |  | Crop out structural bay 9D — Hangar bay divisional door No. 2 | 0d | 2026-08-10 | 2026-08-17 | A18370 SS+2.4d |  |  | Structural Welding [106 h] |
| A03390 |  | Crop out deck insert 5A — Aviation storeroom No. 2 | 0d | 2026-08-10 | 2026-08-15 | A03380 FS+2.4d |  |  | Structural Welding [76 h] |
| A18570 |  | NDT survey — structural bay 7C — Hangar Bay 3 | 0d | 2026-08-10 | 2026-08-20 |  |  |  | Structural Welding [178 h] |
| A13300 |  | Crop out foundation group 8D — AIMD Tire & wheel shop | 0d | 2026-08-11 | 2026-08-18 | A13290 FS+0.8d |  |  | Structural Welding [213 h] |
| A05720 |  | Fit & weld structural bay 4B — Air wing ordnance shop | 0d | 2026-08-11 | 2026-08-19 | A05710 |  |  | Structural Welding [110 h] |
| A08590 |  | NDT survey — foundation group 3E — Aircraft elevator No. 1 machinery room | 0d | 2026-08-11 | 2026-08-22 |  |  |  | Structural Welding [368 h] |
| A04050 |  | Crop out foundation group 2A — Aviation storeroom No. 3 | 0d | 2026-08-11 | 2026-08-18 | A04040 |  |  | Structural Welding [84 h] |
| A09600 |  | Crop out foundation group 4E — Weapons elevator No. 2 machinery room – starboard | 0d | 2026-08-11 | 2026-08-20 | A09590 |  |  | Structural Welding [144 h] |
| A03650 |  | Crop out structural bay 3B — Squadron ready storeroom No. 1 | 0d | 2026-08-11 | 2026-08-25 | A03640 |  |  | Structural Welding [77 h] |
| A12760 |  | NDT survey — foundation group 9B — AIMD Jet engine shop | 0d | 2026-08-12 | 2026-08-22 |  |  |  | Structural Welding [57 h] |
| A10740 |  | Crop out foundation group 1B — Life raft stowage No. 5 | 0d | 2026-08-12 | 2026-08-22 | A10730 |  |  | Structural Welding [151 h] |
| A10170 |  | NDT survey — foundation group 9A — Ordnance ready service locker No. 2 | 0d | 2026-08-12 | 2026-08-23 |  |  |  | Structural Welding [202 h] |

| ID | Activity | Duration | Start | Finish | Predecessors | Resources |
| --- | --- | --- | --- | --- | --- | --- |
| A04010 | Fit & weld foundation group 3D — Squadron ready storeroom No. 2 | 0d | 2026-08-12 | 2026-08-16 | A04000 FS+0.8d | Structural Welding [50 h] |
| A10290 | Crop out deck insert 8B — Weapons elevator No. 3 machinery room – starboard | 0d | 2026-08-12 | 2026-08-14 | A10280 FS+2.4d | Structural Welding [11 h]; Rigging & Weight Handling [3 h] |
| A14560 | Fit & weld foundation group 5A — Aviation supply storeroom No. 3 | 0d | 2026-08-12 | 2026-08-22 | A14550 | Structural Welding [143 h] |
| A06690 | NDT survey — deck insert 7C — Arresting gear engine room No. 1 | 0d | 2026-08-12 | 2026-08-22 |  | Structural Welding [129 h] |
| A13210 | Fit & weld foundation group 2B — AIMD Tire & wheel shop | 0d | 2026-08-13 | 2026-08-16 | A13200 FS-2.4d | Structural Welding [83 h] |
| A16360 | NDT survey — structural bay 7A — Aircraft tie-down locker No. 1 | 0d | 2026-08-13 | 2026-08-16 |  | Structural Welding [73 h] |
| A10390 | Crop out structural bay 7D — Weapons elevator No. 3 machinery room – starboard | 0d | 2026-08-13 | 2026-08-22 | A10380 | Structural Welding [75 h] |
| A03280 | NDT survey — structural bay 8C — Avionics shop No. 2 | 0d | 2026-08-13 | 2026-08-17 |  | Structural Welding [45 h] |
| A14710 | Crop out deck insert 8B — AIMD Survival equipment shop | 0d | 2026-08-14 | 2026-08-24 | A14700 | Structural Welding [184 h] |
| A08550 | Crop out foundation group 6D — Aircraft elevator No. 1 machinery room | 0d | 2026-08-14 | 2026-08-16 | A08540 FS+2.4d | Structural Welding [50 h] |
| A04620 | Crop out deck insert 8B — Catapult No. 3 machinery room | 0d | 2026-08-14 | 2026-08-16 | A04610 | Structural Welding [60 h] |
| A19360 | Crop out foundation group 9B — Ordnance staging area No. 7 | 0d | 2026-08-14 | 2026-08-20 | A19350 | Structural Welding [174 h] |
| A17930 | Fit & weld foundation group 9B — Hangar bay fire station No. 4 | 0d | 2026-08-14 | 2026-08-20 | A17920 FS+0.8d | Structural Welding [51 h] |
| A18060 | NDT survey — deck insert 5A — Ordnance staging area No. 5 | 0d | 2026-08-14 | 2026-08-19 |  | Structural Welding [33 h]; Rigging & Weight Handling [9 h] |
| A09550 | Crop out structural bay 5D (02-120-3-Q) | 0d | 2026-08-14 | 2026-08-21 | A09540 FS+2.4d | Structural Welding [85 h] |
| A13960 | NDT survey — foundation group 2A — AIMD Power plants shop | 0d | 2026-08-15 | 2026-08-25 |  | Structural Welding [90 h]; Rigging & Weight Handling [23 h] |
| A04470 | NDT survey — foundation group 9C — Jet blast deflector No. 2 machinery room | 0d | 2026-08-15 | 2026-08-20 |  | Structural Welding [122 h] |
| A13100 | Fit & weld foundation group 2A — Squadron storeroom No. 2 | 0d | 2026-08-15 | 2026-08-28 | A13090 | Structural Welding [72 h] |
| A03560 | Fit & weld structural bay 7C — Aviation storeroom No. 1 | 0d | 2026-08-15 | 2026-08-28 | A03550 FS+0.8d | Structural Welding [184 h] |
| A14060 | NDT survey — deck insert 3C — AIMD Power plants shop | 0d | 2026-08-15 | 2026-08-26 |  | Structural Welding [276 h] |
| A03180 | NDT survey — deck insert 1A — Avionics shop No. 2 | 0d | 2026-08-16 | 2026-08-23 |  | Structural Welding [133 h] |
| A13860 | NDT survey — deck insert 8A — Tool issue room No. 3 | 0d | 2026-08-16 | 2026-08-21 |  | Structural Welding [79 h] |
| A15240 | Crop out structural bay 4C — Hangar Bay 1 | 0d | 2026-08-16 | 2026-08-30 | A15230 | Structural Welding [216 h] |
| A14330 | Crop out foundation group 7A — AIMD Ground support equipment shop | 0d | 2026-08-17 | 2026-08-25 | A14320 FS+2.4d | Structural Welding [108 h] |
| A16740 | Fit & weld structural bay 6C — Hangar Bay 2 | 0d | 2026-08-17 | 2026-08-30 | A16730 FS+2.4d | Structural Welding [110 h] |
| A06860 | Fit & weld deck insert 1A — Arresting gear engine room No. 3 | 0d | 2026-08-17 | 2026-08-28 | A06850 FS+0.8d | Structural Welding [91 h] |
| A16370 | Crop out structural bay 7A — Aircraft tie-down locker No. 1 | 0d | 2026-08-17 | 2026-08-22 | A16360 | Structural Welding [70 h] |
| A10300 | Fit & weld deck insert 8B — Weapons elevator No. 3 machinery room – starboard | 0d | 2026-08-17 | 2026-08-30 | A10290 | Structural Welding [277 h] |
| A09020 | Fit & weld structural bay 5A — Hose reel locker No. 2 | 0d | 2026-08-17 | 2026-08-23 | A09010 SS+4.8d | Structural Welding [190 h] |
| A08560 | Fit & weld foundation group 6D — Aircraft elevator No. 1 machinery room | 0d | 2026-08-17 | 2026-08-24 | A08550 FS+0.8d | Structural Welding [141 h] |
| A10540 | Crop out deck insert 5C — Aircraft elevator No. 4 machinery room | 0d | 2026-08-17 | 2026-08-22 | A10530 | Structural Welding [107 h] |
| A19110 | Fit & weld structural bay 1A — Ordnance staging area No. 6 | 0d | 2026-08-17 | 2026-08-20 | A19100 FS+0.8d | Structural Welding [44 h] |
| A05950 | Crop out deck insert 3C — Squadron maintenance control No. 2 | 0d | 2026-08-17 | 2026-08-20 | A05940 | Structural Welding [43 h] |
| A03400 | Fit & weld deck insert 5A — Aviation storeroom No. 2 | 0d | 2026-08-17 | 2026-08-26 | A03390 | Structural Welding [217 h] |
| A18390 | Fit & weld structural bay 9D — Hangar bay divisional door No. 2 | 0d | 2026-08-17 | 2026-08-27 | A18380 FS+0.8d | Structural Welding [60 h] |
| A13550 | Crop out structural bay 4C — Boat davit machinery – starboard | 0d | 2026-08-18 | 2026-08-21 | A13540 FS+2.4d | Structural Welding [26 h] |
| A18840 | NDT survey — structural bay 1A — Aircraft tie-down locker No. 3 | 0d | 2026-08-18 | 2026-08-23 |  | Structural Welding [42 h] |
| A04630 | Fit & weld deck insert 8B — Catapult No. 3 machinery room | 0d | 2026-08-18 | 2026-08-24 | A04620 | Structural Welding [110 h] |
| A17860 | NDT survey — structural bay 3A — Hangar bay fire station No. 4 | 0d | 2026-08-18 | 2026-08-28 |  | Structural Welding [112 h] |
| A13220 | NDT acceptance — foundation group 2B — AIMD Tire & wheel shop | 0d | 2026-08-18 | 2026-08-30 | A13210 SS+7.2d | Structural Welding [75 h] |
| A16270 | Fit & weld deck insert 3A — Hangar bay workshop No. 2 | 0d | 2026-08-18 | 2026-08-25 | A16260 FS+2.4d | Structural Welding [183 h] |
| A11160 | NDT survey — foundation group 3B — Sponson storeroom No. 4 | 0d | 2026-08-18 | 2026-08-23 |  | Structural Welding [80 h] |
| A13310 | Fit & weld foundation group 8D — AIMD Tire & wheel shop | 0d | 2026-08-18 | 2026-08-31 | A13300 FS+0.8d | Structural Welding [95 h] |
| A04020 | NDT acceptance — foundation group 3D — Squadron ready storeroom No. 2 | 0d | 2026-08-19 | 2026-08-30 | A04010 | Structural Welding [267 h] |
| A17200 | Fit & weld foundation group 4C — Hangar Bay 2 (elevator No. 2 bay) | 0d | 2026-08-19 | 2026-08-24 | A17190 | Structural Welding [77 h] |
| A19410 | Crop out foundation group 5C — Ordnance staging area No. 7 | 0d | 2026-08-19 | 2026-08-22 | A19400 | Structural Welding [58 h] |
| A03590 | NDT survey — structural bay 8A — Squadron ready storeroom No. 1 | 0d | 2026-08-19 | 2026-09-01 |  | Structural Welding [312 h] |
| A05840 | NDT survey — structural bay 4A — Squadron maintenance control No. 2 | 0d | 2026-08-19 | 2026-08-31 |  | Structural Welding [402 h] |
| A04060 | Fit & weld foundation group 2A — Aviation storeroom No. 3 | 0d | 2026-08-19 | 2026-08-28 | A04050 FS+0.8d | Structural Welding [84 h]; Rigging & Weight Handling [22 h] |
| A03290 | Crop out structural bay 8C — Avionics shop No. 2 | 0d | 2026-08-19 | 2026-08-22 | A03280 | Structural Welding [72 h] |
| A13810 | NDT survey — deck insert 4C — Boat davit machinery – port | 0d | 2026-08-20 | 2026-08-26 |  | Structural Welding [248 h] |
| A05960 | Fit & weld deck insert 3C — Squadron maintenance control No. 2 | 0d | 2026-08-20 | 2026-08-24 | A05950 | Structural Welding [22 h] |
| A04360 | NDT survey — deck insert 6A — Jet blast deflector No. 2 machinery room | 0d | 2026-08-20 | 2026-08-29 |  | Structural Welding [71 h] |
| A19040 | NDT survey — deck insert 6D — Hangar bay fire station No. 5 | 0d | 2026-08-21 | 2026-08-26 |  | Structural Welding [123 h] |
| A06650 | Crop out foundation group 7B — Arresting gear engine room No. 1 | 0d | 2026-08-21 | 2026-09-03 | A06640 FS+2.4d | Structural Welding [351 h] |
| A19120 | NDT acceptance — structural bay 1A — Ordnance staging area No. 6 | 0d | 2026-08-21 | 2026-09-03 | A19110 FS+0.8d | Structural Welding [251 h] |
| A03040 | Crop out foundation group 6B — Avionics shop No. 1 | 0d | 2026-08-21 | 2026-08-30 | A03030 FS+0.8d | Structural Welding [102 h] |
| A18070 | Crop out deck insert 5A — Ordnance staging area No. 5 | 0d | 2026-08-21 | 2026-09-03 | A18060 | Structural Welding [120 h] |
| A05730 | NDT acceptance — structural bay 4B — Air wing ordnance shop | 0d | 2026-08-21 | 2026-09-02 | A05720 | Structural Welding [370 h] |
| A09560 | Fit & weld structural bay 5D (02-120-3-Q) | 0d | 2026-08-21 | 2026-08-29 | A09550 FS+0.8d | Structural Welding [237 h] |
| A18580 | Crop out structural bay 7C — Hangar Bay 3 | 0d | 2026-08-22 | 2026-09-05 | A18570 FS+2.4d | Structural Welding [365 h] |
| A13560 | Fit & weld structural bay 4C — Boat davit machinery – starboard | 0d | 2026-08-22 | 2026-08-28 | A13550 FS+0.8d | Structural Welding [44 h] |
| A04160 | Crop out deck insert 9C — Aviation storeroom No. 3 | 0d | 2026-08-22 | 2026-09-01 | A04150 | Structural Welding [311 h] |
| A04480 | Crop out foundation group 9C — Jet blast deflector No. 2 machinery room | 0d | 2026-08-22 | 2026-08-31 | A04470 FS+0.8d | Structural Welding [80 h] |
| A12770 | Crop out foundation group 9B — AIMD Jet engine shop | 0d | 2026-08-22 | 2026-09-01 | A12760 SS+4.8d | Structural Welding [128 h] |
| A03300 | Fit & weld structural bay 8C — Avionics shop No. 2 | 0d | 2026-08-22 | 2026-08-30 | A03290 FS+0.8d | Structural Welding [115 h] |
| A16940 | Fit & weld deck insert 2C — Ordnance staging area No. 3 | 0d | 2026-08-22 | 2026-08-30 | A16930 FS+0.8d | Structural Welding [44 h] |
| A19370 | Fit & weld foundation group 9B — Ordnance staging area No. 7 | 0d | 2026-08-23 | 2026-08-30 | A19360 | Structural Welding [39 h]; Rigging & Weight Handling [10 h] |
| A09960 | Crop out foundation group 9B — Aircraft elevator No. 2 machinery room | 0d | 2026-08-23 | 2026-09-04 | A09950 SS+4.8d | Structural Welding [256 h] |
| A17940 | NDT acceptance — foundation group 9B — Hangar bay fire station No. 4 | 0d | 2026-08-23 | 2026-09-02 | A17930 | Structural Welding [136 h] |

| ID | Activity | Duration | Start | Finish | Predecessors | Resources |
| --- | --- | --- | --- | --- | --- | --- |
| A13870 | Crop out deck insert 8A — Tool issue room No. 3 | 0d | 2026-08-23 | 2026-09-02 | A13860 | Structural Welding [227 h] |
| A08350 | Crop out structural bay 3A — Sponson storeroom No. 1 | 0d | 2026-08-23 | 2026-09-01 | A08340 FS+0.8d | Structural Welding [65 h] |
| A10400 | Fit & weld structural bay 7D — Weapons elevator No. 3 machinery room – starboard | 0d | 2026-08-23 | 2026-08-30 | A10390 | Structural Welding [162 h] |
| A09610 | Fit & weld foundation group 4E — Weapons elevator No. 2 machinery room – starboard | 0d | 2026-08-23 | 2026-08-29 | A09600 | Structural Welding [146 h] |
| A08600 | Crop out foundation group 3E — Aircraft elevator No. 1 machinery room | 0d | 2026-08-23 | 2026-08-30 | A08590 | Structural Welding [139 h]; Rigging & Weight Handling [35 h] |
| A10180 | Crop out foundation group 9A — Ordnance ready service locker No. 2 | 0d | 2026-08-23 | 2026-09-05 | A10170 FS+0.8d | Structural Welding [224 h] |
| A10550 | Fit & weld deck insert 5C — Aircraft elevator No. 4 machinery room | 0d | 2026-08-23 | 2026-09-02 | A10540 FS+2.4d | Structural Welding [155 h] |
| A14140 | NDT acceptance — structural bay 6D — AIMD Power plants shop | 0d | 2026-08-24 | 2026-09-03 | A14130 SS+2.4d | Structural Welding [171 h] |
| A14570 | NDT acceptance — foundation group 5A — Aviation supply storeroom No. 3 | 0d | 2026-08-24 | 2026-09-01 | A14560 FS+2.4d | Structural Welding [102 h] |
| A16380 | Fit & weld structural bay 7A — Aircraft tie-down locker No. 1 | 0d | 2026-08-24 | 2026-09-02 | A16370 FS+0.8d | Structural Welding [52 h] |
| A10750 | Fit & weld foundation group 1B — Life raft stowage No. 5 | 0d | 2026-08-24 | 2026-09-06 | A10740 FS+2.4d | Structural Welding [295 h] |
| A08570 | NDT acceptance — foundation group 6D — Aircraft elevator No. 1 machinery room | 0d | 2026-08-24 | 2026-08-31 | A08560 | Structural Welding [251 h] |
| A03190 | Crop out deck insert 1A — Avionics shop No. 2 | 0d | 2026-08-24 | 2026-09-04 | A03180 | Structural Welding [179 h] |
| A04640 | NDT acceptance — deck insert 8B — Catapult No. 3 machinery room | 0d | 2026-08-25 | 2026-09-02 | A04630 FS+0.8d | Structural Welding [71 h] |
| A11170 | Crop out foundation group 3B — Sponson storeroom No. 4 | 0d | 2026-08-25 | 2026-09-01 | A11160 FS+2.4d | Structural Welding [49 h] |
| A06700 | Crop out deck insert 7C — Arresting gear engine room No. 1 | 0d | 2026-08-25 | 2026-09-07 | A06690 | Structural Welding [148 h] |
| A19420 | Fit & weld foundation group 5C — Ordnance staging area No. 7 | 0d | 2026-08-25 | 2026-09-07 | A19410 | Structural Welding [284 h] |
| A18850 | Crop out structural bay 1A — Aircraft tie-down locker No. 3 | 0d | 2026-08-25 | 2026-09-03 | A18840 FS+2.4d | Structural Welding [69 h] |
| A05970 | NDT acceptance — deck insert 3C — Squadron maintenance control No. 2 | 0d | 2026-08-26 | 2026-09-03 | A05960 | Structural Welding [50 h] |
| A09030 | NDT acceptance — structural bay 5A — Hose reel locker No. 2 | 0d | 2026-08-26 | 2026-09-07 | A09020 | Structural Welding [324 h] |
| A14070 | Crop out deck insert 3C — AIMD Power plants shop | 0d | 2026-08-26 | 2026-09-08 | A14060 FS+2.4d | Structural Welding [195 h] |
| A17210 | NDT acceptance — foundation group 4C — Hangar Bay 2 (elevator No. 2 bay) | 0d | 2026-08-26 | 2026-08-31 | A17200 | Structural Welding [134 h] |
| A13970 | Crop out foundation group 2A — AIMD Power plants shop | 0d | 2026-08-26 | 2026-09-08 | A13960 | Structural Welding [107 h] |
| A14720 | Fit & weld deck insert 8B — AIMD Survival equipment shop | 0d | 2026-08-27 | 2026-09-04 | A14710 FS+2.4d | Structural Welding [63 h] |
| A03410 | NDT acceptance — deck insert 5A — Aviation storeroom No. 2 | 0d | 2026-08-27 | 2026-08-29 | A03400 FS+0.8d | Structural Welding [34 h] |
| A16280 | NDT acceptance — deck insert 3A — Hangar bay workshop No. 2 | 0d | 2026-08-27 | 2026-08-31 | A16270 FS+2.4d | Structural Welding [109 h] |
| A19050 | Crop out deck insert 6D — Hangar bay fire station No. 5 | 0d | 2026-08-27 | 2026-09-07 | A19040 | Structural Welding [75 h] |
| A14340 | Fit & weld foundation group 7A — AIMD Ground support equipment shop | 0d | 2026-08-28 | 2026-09-09 | A14330 FS+2.4d | Structural Welding [349 h] |
| A04070 | NDT acceptance — foundation group 2A — Aviation storeroom No. 3 | 0d | 2026-08-28 | 2026-09-03 | A04060 SS+4.8d | Structural Welding [151 h] |
| A03660 | Fit & weld structural bay 3B — Squadron ready storeroom No. 1 | 0d | 2026-08-28 | 2026-09-06 | A03650 | Structural Welding [158 h] |
| A13820 | Crop out deck insert 4C — Boat davit machinery – port | 0d | 2026-08-28 | 2026-09-02 | A13810 | Structural Welding [135 h] |
| A03570 | NDT acceptance — structural bay 7C — Aviation storeroom No. 1 | 0d | 2026-08-28 | 2026-09-07 | A03560 | Structural Welding [348 h] |
| A13570 | NDT acceptance — structural bay 4C — Boat davit machinery – starboard | 0d | 2026-08-29 | 2026-09-03 | A13560 | Structural Welding [32 h]; Rigging & Weight Handling [9 h] |
| A18400 | NDT acceptance — structural bay 9D — Hangar bay divisional door No. 2 | 0d | 2026-08-29 | 2026-09-05 | A18390 | Structural Welding [159 h] |
| A17870 | Crop out structural bay 3A — Hangar bay fire station No. 4 | 0d | 2026-08-29 | 2026-09-12 | A17860 FS+0.8d | Structural Welding [107 h] |
| A13110 | NDT acceptance — foundation group 2A — Squadron storeroom No. 2 | 0d | 2026-08-29 | 2026-09-08 | A13100 FS+2.4d | Structural Welding [144 h]; Rigging & Weight Handling [36 h] |
| A06870 | NDT acceptance — deck insert 1A — Arresting gear engine room No. 3 | 0d | 2026-08-29 | 2026-09-10 | A06860 FS+2.4d | Structural Welding [92 h] |
| A09620 | NDT acceptance — foundation group 4E — Weapons elevator No. 2 machinery room – starboard | 0d | 2026-08-30 | 2026-09-09 | A09610 FS+0.8d | Structural Welding [162 h] |
| A03420 | Grind & dress deck insert 5A — Aviation storeroom No. 2 | 0d | 2026-08-30 | 2026-09-09 | A03410 | Structural Welding [324 h] |
| A04370 | Crop out deck insert 6A — Jet blast deflector No. 2 machinery room | 0d | 2026-08-30 | 2026-09-02 | A04360 | Structural Welding [54 h] |
| A13230 | Grind & dress foundation group 2B — AIMD Tire & wheel shop | 0d | 2026-08-31 | 2026-09-03 | A13220 | Structural Welding [78 h] |
| A05850 | Crop out structural bay 4A — Squadron maintenance control No. 2 | 0d | 2026-08-31 | 2026-09-06 | A05840 FS+0.8d | Structural Welding [44 h] |
| A16950 | NDT acceptance — deck insert 2C — Ordnance staging area No. 3 | 0d | 2026-08-31 | 2026-09-03 | A16940 FS+0.8d | Structural Welding [47 h] |
| A08610 | Fit & weld foundation group 3E — Aircraft elevator No. 1 machinery room | 0d | 2026-08-31 | 2026-09-10 | A08600 FS+0.8d | Structural Welding [126 h] |
| A16750 | NDT acceptance — structural bay 6C — Hangar Bay 2 | 0d | 2026-08-31 | 2026-09-11 | A16740 | Structural Welding [70 h] |
| A10310 | NDT acceptance — deck insert 8B — Weapons elevator No. 3 machinery room – starboard | 0d | 2026-08-31 | 2026-09-07 | A10300 | Structural Welding [83 h] |
| A09570 | NDT acceptance — structural bay 5D (02-120-3-Q) | 0d | 2026-08-31 | 2026-09-09 | A09560 | Structural Welding [150 h] |
| A16290 | Grind & dress deck insert 3A — Hangar bay workshop No. 2 | 0d | 2026-08-31 | 2026-09-11 | A16280 FS+2.4d | Structural Welding [258 h] |
| A03310 | NDT acceptance — structural bay 8C — Avionics shop No. 2 | 0d | 2026-09-01 | 2026-09-13 | A03300 | Structural Welding [165 h] |
| A08580 | Grind & dress foundation group 6D — Aircraft elevator No. 1 machinery room | 0d | 2026-09-01 | 2026-09-07 | A08570 FS+2.4d | Structural Welding [94 h] |
| A04490 | Fit & weld foundation group 9C — Jet blast deflector No. 2 machinery room | 0d | 2026-09-01 | 2026-09-13 | A04480 | Structural Welding [170 h] |
| A17220 | Grind & dress foundation group 4C — Hangar Bay 2 (elevator No. 2 bay) | 0d | 2026-09-01 | 2026-09-08 | A17210 FS+2.4d | Structural Welding [63 h] |
| A04030 | Grind & dress foundation group 3D — Squadron ready storeroom No. 2 | 0d | 2026-09-01 | 2026-09-11 | A04020 | Structural Welding [161 h] |
| A19380 | NDT acceptance — foundation group 9B — Ordnance staging area No. 7 | 0d | 2026-09-01 | 2026-09-12 | A19370 FS+2.4d | Structural Welding [78 h] |
| A15250 | Fit & weld structural bay 4C — Hangar Bay 1 | 0d | 2026-09-01 | 2026-09-13 | A15240 | Structural Welding [262 h] |
| A10410 | NDT acceptance — structural bay 7D — Weapons elevator No. 3 machinery room – starboard | 0d | 2026-09-01 | 2026-09-12 | A10400 FS+2.4d | Structural Welding [160 h] |
| A03050 | Fit & weld foundation group 6B — Avionics shop No. 1 | 0d | 2026-09-02 | 2026-09-08 | A03040 | Structural Welding [96 h] |
| A13320 | NDT acceptance — foundation group 8D — AIMD Tire & wheel shop | 0d | 2026-09-02 | 2026-09-09 | A13310 SS+7.2d | Structural Welding [101 h] |
| A04650 | Grind & dress deck insert 8B — Catapult No. 3 machinery room | 0d | 2026-09-02 | 2026-09-13 | A04640 | Structural Welding [87 h] |
| A11180 | Fit & weld foundation group 3B — Sponson storeroom No. 4 | 0d | 2026-09-02 | 2026-09-11 | A11170 FS+2.4d | Structural Welding [58 h] |
| A04170 | Fit & weld deck insert 9C — Aviation storeroom No. 3 | 0d | 2026-09-02 | 2026-09-13 | A04160 | Structural Welding [247 h] |
| A16390 | NDT acceptance — structural bay 7A — Aircraft tie-down locker No. 1 | 0d | 2026-09-02 | 2026-09-10 | A16380 | Structural Welding [244 h] |
| A14580 | Grind & dress foundation group 5A — Aviation supply storeroom No. 3 | 0d | 2026-09-02 | 2026-09-08 | A14570 FS+2.4d | Structural Welding [108 h] |
| A08360 | Fit & weld structural bay 3A — Sponson storeroom No. 1 | 0d | 2026-09-03 | 2026-09-09 | A08350 | Structural Welding [39 h] |
| A17950 | Grind & dress foundation group 9B — Hangar bay fire station No. 4 | 0d | 2026-09-03 | 2026-09-12 | A17940 | Structural Welding [120 h]; Rigging & Weight Handling [30 h] |
| A04380 | Fit & weld deck insert 6A — Jet blast deflector No. 2 machinery room | 0d | 2026-09-03 | 2026-09-14 | A04370 | Structural Welding [170 h] |
| A16960 | Grind & dress deck insert 2C — Ordnance staging area No. 3 | 0d | 2026-09-03 | 2026-09-15 | A16950 FS+2.4d | Structural Welding [145 h] |
| A19130 | Grind & dress structural bay 1A — Ordnance staging area No. 6 | 0d | 2026-09-03 | 2026-09-09 | A19120 | Structural Welding [40 h] |
| A05740 | Grind & dress structural bay 4B — Air wing ordnance shop | 0d | 2026-09-03 | 2026-09-14 | A05730 | Structural Welding [98 h]; Rigging & Weight Handling [25 h] |
| A12780 | Fit & weld foundation group 9B — AIMD Jet engine shop | 0d | 2026-09-04 | 2026-09-07 | A12770 | Structural Welding [23 h] |

| ID | Activity | Duration | Start | Finish | Predecessors | Resources |
| --- | --- | --- | --- | --- | --- | --- |
| A03600 | Crop out structural bay 8A — Squadron ready storeroom No. 1 | 0d | 2026-09-04 | 2026-09-11 | A03590 | Structural Welding [126 h] |
| A13880 | Fit & weld deck insert 8A — Tool issue room No. 3 | 0d | 2026-09-04 | 2026-09-14 | A13870 FS+0.8d | Structural Welding [290 h] |
| A05980 | Grind & dress deck insert 3C — Squadron maintenance control No. 2 | 0d | 2026-09-04 | 2026-09-17 | A05970 | Structural Welding [232 h] |
| A13580 | Grind & dress structural bay 4C — Boat davit machinery – starboard | 0d | 2026-09-04 | 2026-09-12 | A13570 FS+2.4d | Structural Welding [193 h] |
| A09970 | Fit & weld foundation group 9B — Aircraft elevator No. 2 machinery room | 0d | 2026-09-04 | 2026-09-15 | A09960 | Structural Welding [141 h] |
| A10560 | NDT acceptance — deck insert 5C — Aircraft elevator No. 4 machinery room | 0d | 2026-09-05 | 2026-09-16 | A10550 FS+2.4d | Structural Welding [248 h] |
| A13830 | Fit & weld deck insert 4C — Boat davit machinery – port | 0d | 2026-09-05 | 2026-09-09 | A13820 | Structural Welding [28 h] |
| A14730 | NDT acceptance — deck insert 8B — AIMD Survival equipment shop | 0d | 2026-09-05 | 2026-09-17 | A14720 | Structural Welding [383 h] |
| A06660 | Fit & weld foundation group 7B — Arresting gear engine room No. 1 | 0d | 2026-09-05 | 2026-09-12 | A06650 FS+2.4d | Structural Welding [130 h] |
| A03200 | Fit & weld deck insert 1A — Avionics shop No. 2 | 0d | 2026-09-06 | 2026-09-16 | A03190 | Structural Welding [366 h] |
| A18860 | Fit & weld structural bay 1A — Aircraft tie-down locker No. 3 | 0d | 2026-09-06 | 2026-09-10 | A18850 FS+2.4d | Structural Welding [51 h] |
| A14150 | Grind & dress structural bay 6D — AIMD Power plants shop | 0d | 2026-09-06 | 2026-09-17 | A14140 FS+2.4d | Structural Welding [98 h] |
| A04080 | Grind & dress foundation group 2A — Aviation storeroom No. 3 | 0d | 2026-09-06 | 2026-09-18 | A04070 FS+0.8d | Structural Welding [134 h] |
| A18080 | Fit & weld deck insert 5A — Ordnance staging area No. 5 | 0d | 2026-09-06 | 2026-09-16 | A18070 | Structural Welding [215 h] |
| A10190 | Fit & weld foundation group 9A — Ordnance ready service locker No. 2 | 0d | 2026-09-06 | 2026-09-15 | A10180 FS+2.4d | Structural Welding [183 h] |
| A03670 | NDT acceptance — structural bay 3B — Squadron ready storeroom No. 1 | 0d | 2026-09-06 | 2026-09-10 | A03660 | Structural Welding [127 h] |
| A18590 | Fit & weld structural bay 7C — Hangar Bay 3 | 0d | 2026-09-07 | 2026-09-13 | A18580 | Structural Welding [81 h] |
| A06710 | Fit & weld deck insert 7C — Arresting gear engine room No. 1 | 0d | 2026-09-07 | 2026-09-12 | A06700 | Structural Welding [35 h] |
| A10760 | NDT acceptance — foundation group 1B — Life raft stowage No. 5 | 0d | 2026-09-07 | 2026-09-17 | A10750 | Structural Welding [68 h] |
| A03580 | Grind & dress structural bay 7C — Aviation storeroom No. 1 | 0d | 2026-09-07 | 2026-09-15 | A03570 SS+2.4d | Structural Welding [217 h] |
| A18410 | Grind & dress structural bay 9D — Hangar bay divisional door No. 2 | 0d | 2026-09-08 | 2026-09-14 | A18400 | Structural Welding [38 h] |
| A03060 | NDT acceptance — foundation group 6B — Avionics shop No. 1 | 0d | 2026-09-08 | 2026-09-15 | A03050 | Structural Welding [70 h]; Rigging & Weight Handling [18 h] |
| A13980 | Fit & weld foundation group 2A — AIMD Power plants shop | 0d | 2026-09-08 | 2026-09-21 | A13970 | Structural Welding [294 h]; Rigging & Weight Handling [74 h] |
| A19060 | Fit & weld deck insert 6D — Hangar bay fire station No. 5 | 0d | 2026-09-08 | 2026-09-17 | A19050 | Structural Welding [51 h] |
| A05860 | Fit & weld structural bay 4A — Squadron maintenance control No. 2 | 0d | 2026-09-08 | 2026-09-13 | A05850 | Structural Welding [105 h] |
| A14080 | Fit & weld deck insert 3C — AIMD Power plants shop | 0d | 2026-09-08 | 2026-09-22 | A14070 FS+0.8d | Structural Welding [109 h] |
| A12790 | NDT acceptance — foundation group 9B — AIMD Jet engine shop | 0d | 2026-09-08 | 2026-09-18 | A12780 FS+2.4d | Structural Welding [151 h] |
| A10320 | Grind & dress deck insert 8B — Weapons elevator No. 3 machinery room – starboard | 0d | 2026-09-09 | 2026-09-11 | A10310 | Structural Welding [29 h] |
| A09630 | Grind & dress foundation group 4E — Weapons elevator No. 2 machinery room – starboard | 0d | 2026-09-09 | 2026-09-21 | A09620 | Structural Welding [177 h] |
| A09040 | Grind & dress structural bay 5A — Hose reel locker No. 2 | 0d | 2026-09-09 | 2026-09-15 | A09030 | Structural Welding [69 h] |
| A13120 | Grind & dress foundation group 2A — Squadron storeroom No. 2 | 0d | 2026-09-10 | 2026-09-14 | A13110 | Structural Welding [128 h] |
| A19430 | NDT acceptance — foundation group 5C — Ordnance staging area No. 7 | 0d | 2026-09-10 | 2026-09-23 | A19420 FS+2.4d | Structural Welding [93 h] |
| A13330 | Grind & dress foundation group 8D — AIMD Tire & wheel shop | 0d | 2026-09-10 | 2026-09-24 | A13320 | Structural Welding [69 h]; Rigging & Weight Handling [18 h] |
| A16760 | Grind & dress structural bay 6C — Hangar Bay 2 | 0d | 2026-09-11 | 2026-09-23 | A16750 | Structural Welding [194 h] |
| A08620 | NDT acceptance — foundation group 3E — Aircraft elevator No. 1 machinery room | 0d | 2026-09-11 | 2026-09-14 | A08610 | Structural Welding [23 h] |
| A14350 | NDT acceptance — foundation group 7A — AIMD Ground support equipment shop | 0d | 2026-09-11 | 2026-09-22 | A14340 | Structural Welding [349 h] |
| A11190 | NDT acceptance — foundation group 3B — Sponson storeroom No. 4 | 0d | 2026-09-11 | 2026-09-21 | A11180 FS+2.4d | Structural Welding [132 h] |
| A13840 | NDT acceptance — deck insert 4C — Boat davit machinery – port | 0d | 2026-09-12 | 2026-09-18 | A13830 | Structural Welding [237 h] |
| A06720 | NDT acceptance — deck insert 7C — Arresting gear engine room No. 1 | 0d | 2026-09-12 | 2026-09-19 | A06710 | Structural Welding [59 h] |
| A09580 | Grind & dress structural bay 5D (02-120-3-Q) | 0d | 2026-09-12 | 2026-09-22 | A09570 | Structural Welding [81 h] |
| A08370 | NDT acceptance — structural bay 3A — Sponson storeroom No. 1 | 0d | 2026-09-12 | 2026-09-19 | A08360 FS+2.4d | Structural Welding [56 h] |
| A03680 | Grind & dress structural bay 3B — Squadron ready storeroom No. 1 | 0d | 2026-09-12 | 2026-09-22 | A03670 SS+4.8d | Structural Welding [123 h] |
| A03610 | Fit & weld structural bay 8A — Squadron ready storeroom No. 1 | 0d | 2026-09-12 | 2026-09-25 | A03600 | Structural Welding [77 h] |
| A16400 | Grind & dress structural bay 7A — Aircraft tie-down locker No. 1 | 0d | 2026-09-13 | 2026-09-16 | A16390 FS+0.8d | Structural Welding [60 h] |
| A18870 | NDT acceptance — structural bay 1A — Aircraft tie-down locker No. 3 | 0d | 2026-09-13 | 2026-09-15 | A18860 | Structural Welding [18 h] |
| A06880 | Grind & dress deck insert 1A — Arresting gear engine room No. 3 | 0d | 2026-09-13 | 2026-09-17 | A06870 | Structural Welding [91 h] |
| A15260 | NDT acceptance — structural bay 4C — Hangar Bay 1 | 0d | 2026-09-13 | 2026-09-24 | A15250 FS+2.4d | Structural Welding [105 h] |
| A18600 | NDT acceptance — structural bay 7C — Hangar Bay 3 | 0d | 2026-09-13 | 2026-09-25 | A18590 FS+0.8d | Structural Welding [95 h] |
| A17880 | Fit & weld structural bay 3A — Hangar bay fire station No. 4 | 0d | 2026-09-13 | 2026-09-17 | A17870 FS+0.8d | Structural Welding [65 h] |
| A04500 | NDT acceptance — foundation group 9C — Jet blast deflector No. 2 machinery room | 0d | 2026-09-13 | 2026-09-26 | A04490 | Structural Welding [228 h] |
| A04180 | NDT acceptance — deck insert 9C — Aviation storeroom No. 3 | 0d | 2026-09-14 | 2026-09-28 | A04170 FS+2.4d | Structural Welding [233 h] |
| A06670 | NDT acceptance — foundation group 7B — Arresting gear engine room No. 1 | 0d | 2026-09-14 | 2026-09-21 | A06660 | Structural Welding [51 h] |
| A13890 | NDT acceptance — deck insert 8A — Tool issue room No. 3 | 0d | 2026-09-14 | 2026-09-18 | A13880 | Structural Welding [86 h] |
| A19390 | Grind & dress foundation group 9B — Ordnance staging area No. 7 | 0d | 2026-09-14 | 2026-09-18 | A19380 SS+2.4d | Structural Welding [90 h]; Rigging & Weight Handling [23 h] |
| A05870 | NDT acceptance — structural bay 4A — Squadron maintenance control No. 2 | 0d | 2026-09-14 | 2026-09-17 | A05860 | Structural Welding [45 h] |
| A03320 | Grind & dress structural bay 8C — Avionics shop No. 2 | 0d | 2026-09-15 | 2026-09-27 | A03310 | Structural Welding [230 h] |
| A10420 | Grind & dress structural bay 7D — Weapons elevator No. 3 machinery room – starboard | 0d | 2026-09-15 | 2026-09-24 | A10410 | Structural Welding [88 h] |
| A08630 | Grind & dress foundation group 3E — Aircraft elevator No. 1 machinery room | 0d | 2026-09-15 | 2026-09-18 | A08620 FS+2.4d | Structural Welding [34 h] |
| A09980 | NDT acceptance — foundation group 9B — Aircraft elevator No. 2 machinery room | 0d | 2026-09-15 | 2026-09-24 | A09970 | Structural Welding [173 h]; Rigging & Weight Handling [44 h] |
| A04390 | NDT acceptance — deck insert 6A — Jet blast deflector No. 2 machinery room | 0d | 2026-09-16 | 2026-09-21 | A04380 | Structural Welding [59 h] |
| A10200 | NDT acceptance — foundation group 9A — Ordnance ready service locker No. 2 | 0d | 2026-09-16 | 2026-09-26 | A10190 FS+2.4d | Structural Welding [120 h]; Rigging & Weight Handling [31 h] |
| A18090 | NDT acceptance — deck insert 5A — Ordnance staging area No. 5 | 0d | 2026-09-17 | 2026-09-26 | A18080 | Structural Welding [298 h] |
| A10570 | Grind & dress deck insert 5C — Aircraft elevator No. 4 machinery room | 0d | 2026-09-17 | 2026-09-23 | A10560 FS+0.8d | Structural Welding [141 h]; Rigging & Weight Handling [36 h] |
| A10770 | Grind & dress foundation group 1B — Life raft stowage No. 5 | 0d | 2026-09-17 | 2026-09-29 | A10760 SS+7.2d | Structural Welding [213 h] |
| A03070 | Grind & dress foundation group 6B — Avionics shop No. 1 | 0d | 2026-09-18 | 2026-09-23 | A03060 FS+0.8d | Structural Welding [164 h] |
| A18880 | Grind & dress structural bay 1A — Aircraft tie-down locker No. 3 | 0d | 2026-09-18 | 2026-09-22 | A18870 | Structural Welding [80 h] |
| A12800 | Grind & dress foundation group 9B — AIMD Jet engine shop | 0d | 2026-09-18 | 2026-09-30 | A12790 | Structural Welding [200 h] |
| A03210 | NDT acceptance — deck insert 1A — Avionics shop No. 2 | 0d | 2026-09-19 | 2026-09-24 | A03200 | Structural Welding [94 h] |
| A13850 | Grind & dress deck insert 4C — Boat davit machinery – port | 0d | 2026-09-19 | 2026-10-01 | A13840 FS+2.4d | Structural Welding [244 h]; Rigging & Weight Handling [61 h] |
| A17890 | NDT acceptance — structural bay 3A — Hangar bay fire station No. 4 | 0d | 2026-09-19 | 2026-09-26 | A17880 | Structural Welding [50 h] |

| ID | Activity | Duration | Start | Finish | Predecessors | Resources |
| --- | --- | --- | --- | --- | --- | --- |
| A05880 | Grind & dress structural bay 4A — Squadron maintenance control No. 2 | 0d | 2026-09-19 | 2026-09-29 | A05870 | Structural Welding [128 h] |
| A08380 | Grind & dress structural bay 3A — Sponson storeroom No. 1 | 0d | 2026-09-19 | 2026-09-25 | A08370 FS+2.4d | Structural Welding [29 h] |
| A13900 | Grind & dress deck insert 8A — Tool issue room No. 3 | 0d | 2026-09-20 | 2026-10-01 | A13890 | Structural Welding [80 h]; Rigging & Weight Handling [20 h] |
| A06730 | Grind & dress deck insert 7C — Arresting gear engine room No. 1 | 0d | 2026-09-20 | 2026-10-01 | A06720 FS+0.8d | Structural Welding [91 h] |
| A19070 | NDT acceptance — deck insert 6D — Hangar bay fire station No. 5 | 0d | 2026-09-20 | 2026-09-30 | A19060 | Structural Welding [151 h] |
| A14740 | Grind & dress deck insert 8B — AIMD Survival equipment shop | 0d | 2026-09-20 | 2026-09-24 | A14730 FS+0.8d | Structural Welding [30 h] |
| A04400 | Grind & dress deck insert 6A — Jet blast deflector No. 2 machinery room | 0d | 2026-09-22 | 2026-09-27 | A04390 FS+2.4d | Structural Welding [29 h]; Rigging & Weight Handling [8 h] |
| A06680 | Grind & dress foundation group 7B — Arresting gear engine room No. 1 | 0d | 2026-09-22 | 2026-09-25 | A06670 FS+2.4d | Structural Welding [19 h] |
| A11200 | Grind & dress foundation group 3B — Sponson storeroom No. 4 | 0d | 2026-09-23 | 2026-09-30 | A11190 FS+2.4d | Structural Welding [39 h] |
| A13990 | NDT acceptance — foundation group 2A — AIMD Power plants shop | 0d | 2026-09-23 | 2026-10-02 | A13980 | Structural Welding [66 h] |
| A19440 | Grind & dress foundation group 5C — Ordnance staging area No. 7 | 0d | 2026-09-24 | 2026-10-08 | A19430 | Structural Welding [160 h] |
| A14360 | Grind & dress foundation group 7A — AIMD Ground support equipment shop | 0d | 2026-09-24 | 2026-10-02 | A14350 | Structural Welding [67 h]; Rigging & Weight Handling [17 h] |
| A14090 | NDT acceptance — deck insert 3C — AIMD Power plants shop | 0d | 2026-09-24 | 2026-10-07 | A14080 FS+2.4d | Structural Welding [186 h] |
| A09990 | Grind & dress foundation group 9B — Aircraft elevator No. 2 machinery room | 0d | 2026-09-25 | 2026-09-30 | A09980 FS+0.8d | Structural Welding [47 h] |
| A03220 | Grind & dress deck insert 1A — Avionics shop No. 2 | 0d | 2026-09-25 | 2026-10-06 | A03210 FS+2.4d | Structural Welding [99 h] |
| A15270 | Grind & dress structural bay 4C — Hangar Bay 1 | 0d | 2026-09-25 | 2026-09-28 | A15260 | Structural Welding [68 h]; Rigging & Weight Handling [17 h] |
| A17900 | Grind & dress structural bay 3A — Hangar bay fire station No. 4 | 0d | 2026-09-26 | 2026-10-03 | A17890 | Structural Welding [104 h] |
| A03620 | NDT acceptance — structural bay 8A — Squadron ready storeroom No. 1 | 0d | 2026-09-26 | 2026-09-28 | A03610 | Structural Welding [34 h] |
| A10210 | Grind & dress foundation group 9A — Ordnance ready service locker No. 2 | 0d | 2026-09-26 | 2026-10-10 | A10200 | Structural Welding [207 h] |
| A18610 | Grind & dress structural bay 7C — Hangar Bay 3 | 0d | 2026-09-27 | 2026-10-08 | A18600 | Structural Welding [371 h] |
| A04510 | Grind & dress foundation group 9C — Jet blast deflector No. 2 machinery room | 0d | 2026-09-28 | 2026-10-08 | A04500 | Structural Welding [308 h] |
| A18100 | Grind & dress deck insert 5A — Ordnance staging area No. 5 | 0d | 2026-09-29 | 2026-10-13 | A18090 | Structural Welding [83 h] |
| A03630 | Grind & dress structural bay 8A — Squadron ready storeroom No. 1 | 0d | 2026-09-30 | 2026-10-09 | A03620 FS+2.4d | Structural Welding [164 h] |
| A04190 | Grind & dress deck insert 9C — Aviation storeroom No. 3 | 0d | 2026-09-30 | 2026-10-02 | A04180 FS+0.8d | Structural Welding [40 h] |
| A19080 | Grind & dress deck insert 6D — Hangar bay fire station No. 5 | 0d | 2026-10-02 | 2026-10-07 | A19070 | Structural Welding [72 h] |
| A14000 | Grind & dress foundation group 2A — AIMD Power plants shop | 0d | 2026-10-04 | 2026-10-08 | A13990 | Structural Welding [100 h]; Rigging & Weight Handling [25 h] |
| A14100 | Grind & dress deck insert 3C — AIMD Power plants shop | 0d | 2026-10-10 | 2026-10-22 | A14090 | Structural Welding [192 h] |

| ID | WBS | Activity | Duration | Start | Finish | Predecessors | Complete | Remaining | Resources |
| --- | --- | --- | --- | --- | --- | --- | --- | --- | --- |
|  | 300 | **300 Electrical Distribution** |  | 2026-07-28 | 2026-10-18 |  |  |  |  |
| A06290 |  | Circuit survey — cable run 6A — Gallery deck passage No. 3 | 0d | 2026-07-28 A | 2026-07-31 A |  | 100% |  | Electrical [21 h] |
| A09380 |  | Circuit survey — panel group 5A — Weapons elevator No. 2 machinery room – starboard | 0d | 2026-07-28 A | 2026-08-01 A |  | 100% |  | Electrical [47 h] |
| A06340 |  | Circuit survey — cable run 7B — Gallery deck passage No. 3 | 0d | 2026-07-29 A | 2026-08-11 |  | 93% | 0d | Electrical [73 h] |
| A17650 |  | Circuit survey — panel group 2A — Ordnance staging area No. 4 | 0d | 2026-07-30 A | 2026-08-11 |  | 86% | 0d | Electrical [162 h] |
| A11600 |  | Circuit survey — lighting circuit 5D — Weapons elevator No. 5 machinery room – port | 0d | 2026-07-30 A | 2026-08-04 A |  | 100% |  | Electrical [132 h] |
| A16100 |  | Circuit survey — cable run 5A — Ordnance staging area No. 2 | 0d | 2026-07-31 A | 2026-08-13 |  | 67% | 0d | Electrical [171 h] |
| A11930 |  | Circuit survey — cable run 3A — Weapons elevator No. 6 machinery room – port | 0d | 2026-07-31 A | 2026-08-08 A |  | 100% |  | Electrical [67 h] |
| A18790 |  | Circuit survey — panel group 6B — Conflagration station No. 3 | 0d | 2026-08-01 A | 2026-08-14 |  | 55% | 0d | Electrical [216 h]; Rigging & Weight Handling [54 h] |
| A06300 |  | De-energize & tag out cable run 6A — Gallery deck passage No. 3 | 0d | 2026-08-01 A | 2026-08-14 | A06290 | 62% | 0d | Electrical [266 h] |
| A09390 |  | De-energize & tag out panel group 5A — Weapons elevator No. 2 machinery room – starboard | 0d | 2026-08-04 A | 2026-08-16 | A09380 | 45% | 0d | Electrical [101 h] |
| A03790 |  | Circuit survey — cable run 6B — Avionics shop No. 3 | 0d | 2026-08-04 A | 2026-08-10 A |  | 100% |  | Electrical [44 h] |
| A15730 |  | Circuit survey — cable run 5A — Hangar bay workshop No. 1 | 0d | 2026-08-05 A | 2026-08-12 |  | 71% | 0d | Electrical [58 h] |
| A11610 |  | De-energize & tag out lighting circuit 5D — Weapons elevator No. 5 machinery room – port | 0d | 2026-08-06 A | 2026-08-11 | A11600 | 49% | 0d | Electrical [49 h] |
| A09750 |  | Circuit survey — cable run 6B — Weapons elevator No. 2 machinery room – port | 0d | 2026-08-07 A | 2026-08-18 |  | 24% | 0d | Electrical [201 h] |
| A04560 |  | Circuit survey — panel group 9A — Catapult No. 3 machinery room | 0d | 2026-08-07 A | 2026-08-11 |  | 58% | 0d | Electrical [127 h] |
| A06590 |  | Circuit survey — panel group 7A — Arresting gear engine room No. 1 | 0d | 2026-08-08 A | 2026-08-20 |  | 16% | 0d | Electrical [310 h] |
| A19300 |  | Circuit survey — cable run 6A — Ordnance staging area No. 7 | 0d | 2026-08-08 A | 2026-08-12 |  | 35% | 0d | Electrical [43 h]; Rigging & Weight Handling [11 h] |
| A11940 |  | De-energize & tag out cable run 3A — Weapons elevator No. 6 machinery room – port | 0d | 2026-08-08 A | 2026-08-15 | A11930 | 20% | 0d | Electrical [41 h] |
| A11270 |  | Circuit survey — cable run 1B — Aircraft elevator No. 3 machinery room | 0d | 2026-08-09 A | 2026-08-19 |  | 8% | 0d | Electrical [163 h] |
| A06490 |  | Circuit survey — panel group 4A — Ready Room No. 9 | 0d | 2026-08-09 A | 2026-08-15 |  | 9% | 0d | Electrical [115 h] |
| A14650 |  | Circuit survey — panel group 6A — AIMD Survival equipment shop | 0d | 2026-08-09 A | 2026-08-21 |  | 5% | 0d | Electrical [169 h] |
| A06790 |  | Circuit survey — cable run 3B — Arresting gear engine room No. 2 | 0d | 2026-08-09 A | 2026-08-21 |  | 3% | 0d | Electrical [316 h] |
| A03800 |  | De-energize & tag out cable run 6B — Avionics shop No. 3 | 0d | 2026-08-10 | 2026-08-12 | A03790 FS+2.4d |  |  | Electrical [63 h] |
| A09850 |  | Circuit survey — cable run 4D — Weapons elevator No. 2 machinery room – port | 0d | 2026-08-10 | 2026-08-21 |  |  |  | Electrical [96 h] |
| A08950 |  | Circuit survey — panel group 1E — Weapons elevator No. 1 machinery room – starboard | 0d | 2026-08-11 | 2026-08-23 |  |  |  | Electrical [187 h] |
| A06350 |  | De-energize & tag out cable run 7B — Gallery deck passage No. 3 | 0d | 2026-08-11 | 2026-08-23 | A06340 |  |  | Electrical [168 h]; Rigging & Weight Handling [43 h] |
| A11980 |  | Circuit survey — panel group 7B — Weapons elevator No. 6 machinery room – port | 0d | 2026-08-11 | 2026-08-23 |  |  |  | Electrical [314 h] |
| A11620 |  | Pull & land cable — lighting circuit 5D — Weapons elevator No. 5 machinery room – port | 0d | 2026-08-12 | 2026-08-20 | A11610 |  |  | Electrical [259 h] |
| A17660 |  | De-energize & tag out panel group 2A — Ordnance staging area No. 4 | 0d | 2026-08-12 | 2026-08-21 | A17650 |  |  | Electrical [63 h] |
| A15740 |  | De-energize & tag out cable run 5A — Hangar bay workshop No. 1 | 0d | 2026-08-13 | 2026-08-20 | A15730 |  |  | Electrical [213 h] |
| A19310 |  | De-energize & tag out cable run 6A — Ordnance staging area No. 7 | 0d | 2026-08-13 | 2026-08-16 | A19300 FS+2.4d |  |  | Electrical [40 h] |
| A19610 |  | Circuit survey — cable run 3C — Hangar bay workshop No. 4 | 0d | 2026-08-13 | 2026-08-23 |  |  |  | Electrical [79 h] |
| A18160 |  | Circuit survey — cable run 1C — Ordnance staging area No. 5 | 0d | 2026-08-13 | 2026-08-23 |  |  |  | Electrical [110 h] |
| A04570 |  | De-energize & tag out panel group 9A — Catapult No. 3 machinery room | 0d | 2026-08-14 | 2026-08-17 | A04560 SS+2.4d |  |  | Electrical [19 h] |
| A03810 |  | Pull & land cable — cable run 6B — Avionics shop No. 3 | 0d | 2026-08-14 | 2026-08-27 | A03800 FS+2.4d |  |  | Electrical [102 h] |
| A03690 |  | Circuit survey — cable run 4C — Squadron ready storeroom No. 1 | 0d | 2026-08-14 | 2026-08-23 |  |  |  | Electrical [48 h] |
| A16510 |  | Circuit survey — panel group 8B — Hangar bay divisional door No. 1 | 0d | 2026-08-14 | 2026-08-26 |  |  |  | Electrical [82 h] |
| A09900 |  | Circuit survey — lighting circuit 2A — Aircraft elevator No. 2 machinery room | 0d | 2026-08-14 | 2026-08-21 |  |  |  | Electrical [61 h] |
| A11320 |  | Circuit survey — cable run 6A — Weapons elevator No. 5 machinery room – starboard | 0d | 2026-08-15 | 2026-08-23 |  |  |  | Electrical [60 h] |
| A10480 |  | Circuit survey — lighting circuit 6B — Aircraft elevator No. 4 machinery room | 0d | 2026-08-15 | 2026-08-27 |  |  |  | Electrical [99 h] |
| A03130 |  | Circuit survey — cable run 3D (03-61-1-Q) | 0d | 2026-08-15 | 2026-08-29 |  |  |  | Electrical [296 h] |
| A06310 |  | Pull & land cable — cable run 6A — Gallery deck passage No. 3 | 0d | 2026-08-15 | 2026-08-29 | A06300 FS+0.8d |  |  | Electrical [153 h] |
| A06500 |  | De-energize & tag out panel group 4A — Ready Room No. 9 | 0d | 2026-08-15 | 2026-08-21 | A06490 FS+0.8d |  |  | Electrical [45 h] |
| A18800 |  | De-energize & tag out panel group 6B — Conflagration station No. 3 | 0d | 2026-08-15 | 2026-08-29 | A18790 |  |  | Electrical [238 h] |
| A16110 |  | De-energize & tag out cable run 5A — Ordnance staging area No. 2 | 0d | 2026-08-16 | 2026-08-21 | A16100 |  |  | Electrical [74 h] |
| A16200 |  | Circuit survey — panel group 3C — Ordnance staging area No. 2 | 0d | 2026-08-16 | 2026-08-30 |  |  |  | Electrical [329 h] |
| A08840 |  | Circuit survey — panel group 8C — Weapons elevator No. 1 machinery room – starboard | 0d | 2026-08-17 | 2026-08-28 |  |  |  | Electrical [266 h] |
| A11950 |  | Pull & land cable — cable run 3A — Weapons elevator No. 6 machinery room – port | 0d | 2026-08-17 | 2026-08-23 | A11940 |  |  | Electrical [68 h]; Rigging & Weight Handling [17 h] |
| A17230 |  | Circuit survey — cable run 8A — Hangar deck control | 0d | 2026-08-17 | 2026-08-20 |  |  |  | Electrical [123 h] |
| A19320 |  | Pull & land cable — cable run 6A — Ordnance staging area No. 7 | 0d | 2026-08-17 | 2026-08-24 | A19310 FS+0.8d |  |  | Electrical [115 h] |
| A09400 |  | Pull & land cable — panel group 5A — Weapons elevator No. 2 machinery room – starboard | 0d | 2026-08-17 | 2026-08-23 | A09390 SS+4.8d |  |  | Electrical [158 h] |
| A08290 |  | Circuit survey — panel group 7B — Carrier air traffic control center (CATCC) | 0d | 2026-08-18 | 2026-08-31 |  |  |  | Electrical [208 h] |
| A10330 |  | Circuit survey — cable run 8C — Weapons elevator No. 3 machinery room – starboard | 0d | 2026-08-19 | 2026-08-28 |  |  |  | Electrical [176 h] |
| A09760 |  | De-energize & tag out cable run 6B — Weapons elevator No. 2 machinery room – port | 0d | 2026-08-19 | 2026-08-21 | A09750 FS+2.4d |  |  | Electrical [38 h] |
| A04580 |  | Pull & land cable — panel group 9A — Catapult No. 3 machinery room | 0d | 2026-08-19 | 2026-08-27 | A04570 |  |  | Electrical [141 h] |
| A08740 |  | Circuit survey — lighting circuit 2A — Weapons elevator No. 1 machinery room – starboard | 0d | 2026-08-19 | 2026-08-29 |  |  |  | Electrical [233 h] |
| A19660 |  | Circuit survey — lighting circuit 4D — Hangar bay workshop No. 4 | 0d | 2026-08-20 | 2026-08-28 |  |  |  | Electrical [146 h] |
| A05550 |  | Circuit survey — lighting circuit 3A — Ready Room No. 4 | 0d | 2026-08-20 | 2026-08-25 |  |  |  | Electrical [78 h] |
| A05990 |  | Circuit survey — lighting circuit 1A — Ready Room No. 6 | 0d | 2026-08-20 | 2026-09-01 |  |  |  | Electrical [138 h] |
| A18620 |  | Circuit survey — lighting circuit 3D — Hangar Bay 3 | 0d | 2026-08-20 | 2026-08-29 |  |  |  | Electrical [131 h] |
| A17960 |  | Circuit survey — lighting circuit 1C — Hangar bay fire station No. 4 | 0d | 2026-08-20 | 2026-09-02 |  |  |  | Electrical [422 h] |
| A11280 |  | De-energize & tag out cable run 1B — Aircraft elevator No. 3 machinery room | 0d | 2026-08-21 | 2026-08-26 | A11270 |  |  | Electrical [77 h] |
| A16120 |  | Pull & land cable — cable run 5A — Ordnance staging area No. 2 | 0d | 2026-08-21 | 2026-08-26 | A16110 |  |  | Electrical [62 h] |
| A14660 |  | De-energize & tag out panel group 6A — AIMD Survival equipment shop | 0d | 2026-08-21 | 2026-09-04 | A14650 SS+7.2d |  |  | Electrical [216 h] |
| A15750 |  | Pull & land cable — cable run 5A — Hangar bay workshop No. 1 | 0d | 2026-08-21 | 2026-08-26 | A15740 SS+4.8d |  |  | Electrical [64 h]; Rigging & Weight Handling [16 h] |
| A06800 |  | De-energize & tag out cable run 3B — Arresting gear engine room No. 2 | 0d | 2026-08-22 | 2026-09-03 | A06790 |  |  | Electrical [374 h] |
| A11630 |  | Megger & continuity test lighting circuit 5D — Weapons elevator No. 5 machinery room – port | 0d | 2026-08-22 | 2026-09-01 | A11620 |  |  | Electrical [57 h]; Rigging & Weight Handling [15 h] |
| A09770 |  | Pull & land cable — cable run 6B — Weapons elevator No. 2 machinery room – port | 0d | 2026-08-22 | 2026-08-25 | A09760 |  |  | Electrical [42 h] |
| A06600 |  | De-energize & tag out panel group 7A — Arresting gear engine room No. 1 | 0d | 2026-08-23 | 2026-09-01 | A06590 FS+2.4d |  |  | Electrical [56 h]; Rigging & Weight Handling [15 h] |

| ID | Activity | Duration | Start | Finish | Predecessors | Resources |
| --- | --- | --- | --- | --- | --- | --- |
| A17240 | De-energize & tag out cable run 8A — Hangar deck control | 0d | 2026-08-23 | 2026-09-03 | A17230 | Electrical [135 h] |
| A17670 | Pull & land cable — panel group 2A — Ordnance staging area No. 4 | 0d | 2026-08-23 | 2026-09-06 | A17660 FS+0.8d | Electrical [222 h] |
| A11990 | De-energize & tag out panel group 7B — Weapons elevator No. 6 machinery room – port | 0d | 2026-08-23 | 2026-09-02 | A11980 FS+2.4d | Electrical [74 h] |
| A09860 | De-energize & tag out cable run 4D — Weapons elevator No. 2 machinery room – port | 0d | 2026-08-24 | 2026-08-28 | A09850 FS+2.4d | Electrical [64 h] |
| A06510 | Pull & land cable — panel group 4A — Ready Room No. 9 | 0d | 2026-08-24 | 2026-09-01 | A06500 | Electrical [110 h] |
| A09910 | De-energize & tag out lighting circuit 2A — Aircraft elevator No. 2 machinery room | 0d | 2026-08-24 | 2026-09-05 | A09900 | Electrical [225 h] |
| A19620 | De-energize & tag out cable run 3C — Hangar bay workshop No. 4 | 0d | 2026-08-24 | 2026-08-27 | A19610 | Electrical [86 h] |
| A18170 | De-energize & tag out cable run 1C — Ordnance staging area No. 5 | 0d | 2026-08-24 | 2026-09-04 | A18160 SS+7.2d | Electrical [83 h] |
| A19330 | Megger & continuity test cable run 6A — Ordnance staging area No. 7 | 0d | 2026-08-24 | 2026-08-31 | A19320 FS+0.8d | Electrical [97 h]; Rigging & Weight Handling [25 h] |
| A06360 | Pull & land cable — cable run 7B — Gallery deck passage No. 3 | 0d | 2026-08-25 | 2026-09-02 | A06350 | Electrical [74 h] |
| A08960 | De-energize & tag out panel group 1E — Weapons elevator No. 1 machinery room – starboard | 0d | 2026-08-25 | 2026-08-30 | A08950 SS+2.4d | Electrical [106 h] |
| A03700 | De-energize & tag out cable run 4C — Squadron ready storeroom No. 1 | 0d | 2026-08-25 | 2026-08-28 | A03690 | Electrical [67 h]; Rigging & Weight Handling [17 h] |
| A11960 | Megger & continuity test cable run 3A — Weapons elevator No. 6 machinery room – port | 0d | 2026-08-25 | 2026-09-03 | A11950 FS+2.4d | Electrical [49 h] |
| A09780 | Megger & continuity test cable run 6B — Weapons elevator No. 2 machinery room – port | 0d | 2026-08-25 | 2026-09-05 | A09770 FS+0.8d | Electrical [304 h] |
| A09410 | Megger & continuity test panel group 5A — Weapons elevator No. 2 machinery room – starboard | 0d | 2026-08-26 | 2026-08-31 | A09400 | Electrical [110 h]; Rigging & Weight Handling [28 h] |
| A11330 | De-energize & tag out cable run 6A — Weapons elevator No. 5 machinery room – starboard | 0d | 2026-08-26 | 2026-09-05 | A11320 | Electrical [119 h] |
| A15760 | Megger & continuity test cable run 5A — Hangar bay workshop No. 1 | 0d | 2026-08-26 | 2026-09-08 | A15750 | Electrical [340 h] |
| A05560 | De-energize & tag out lighting circuit 3A — Ready Room No. 4 | 0d | 2026-08-27 | 2026-08-29 | A05550 FS+2.4d | Electrical [38 h] |
| A16520 | De-energize & tag out panel group 8B — Hangar bay divisional door No. 1 | 0d | 2026-08-27 | 2026-09-08 | A16510 | Electrical [100 h] |
| A11290 | Pull & land cable — cable run 1B — Aircraft elevator No. 3 machinery room | 0d | 2026-08-28 | 2026-08-30 | A11280 | Electrical [30 h] |
| A04590 | Megger & continuity test panel group 9A — Catapult No. 3 machinery room | 0d | 2026-08-28 | 2026-09-05 | A04580 SS+2.4d | Electrical [211 h] |
| A16130 | Megger & continuity test cable run 5A — Ordnance staging area No. 2 | 0d | 2026-08-28 | 2026-09-08 | A16120 FS+0.8d | Electrical [194 h] |
| A10340 | De-energize & tag out cable run 8C — Weapons elevator No. 3 machinery room – starboard | 0d | 2026-08-28 | 2026-09-02 | A10330 | Electrical [70 h] |
| A19670 | De-energize & tag out lighting circuit 4D — Hangar bay workshop No. 4 | 0d | 2026-08-28 | 2026-09-11 | A19660 | Electrical [194 h] |
| A03820 | Megger & continuity test cable run 6B — Avionics shop No. 3 | 0d | 2026-08-29 | 2026-09-07 | A03810 | Electrical [128 h] |
| A10490 | De-energize & tag out lighting circuit 6B — Aircraft elevator No. 4 machinery room | 0d | 2026-08-29 | 2026-09-04 | A10480 SS+4.8d | Electrical [196 h] |
| A19630 | Pull & land cable — cable run 3C — Hangar bay workshop No. 4 | 0d | 2026-08-30 | 2026-09-10 | A19620 | Electrical [101 h] |
| A03710 | Pull & land cable — cable run 4C — Squadron ready storeroom No. 1 | 0d | 2026-08-30 | 2026-09-11 | A03700 | Electrical [213 h] |
| A18810 | Pull & land cable — panel group 6B — Conflagration station No. 3 | 0d | 2026-08-30 | 2026-09-13 | A18800 | Electrical [225 h] |
| A16210 | De-energize & tag out panel group 3C — Ordnance staging area No. 2 | 0d | 2026-08-30 | 2026-09-10 | A16200 FS+2.4d | Electrical [78 h] |
| A18630 | De-energize & tag out lighting circuit 3D — Hangar Bay 3 | 0d | 2026-08-31 | 2026-09-08 | A18620 FS+0.8d | Electrical [48 h] |
| A09870 | Pull & land cable — cable run 4D — Weapons elevator No. 2 machinery room – port | 0d | 2026-08-31 | 2026-09-09 | A09860 | Electrical [151 h] |
| A08850 | De-energize & tag out panel group 8C — Weapons elevator No. 1 machinery room – starboard | 0d | 2026-08-31 | 2026-09-09 | A08840 FS+0.8d | Electrical [54 h] |
| A03140 | De-energize & tag out cable run 3D (03-61-1-Q) | 0d | 2026-08-31 | 2026-09-07 | A03130 | Electrical [172 h]; Rigging & Weight Handling [43 h] |
| A06320 | Megger & continuity test cable run 6A — Gallery deck passage No. 3 | 0d | 2026-08-31 | 2026-09-11 | A06310 FS+0.8d | Electrical [273 h] |
| A08300 | De-energize & tag out panel group 7B — Carrier air traffic control center (CATCC) | 0d | 2026-08-31 | 2026-09-14 | A08290 | Electrical [400 h] |
| A09420 | Energize & close-out panel group 5A — Weapons elevator No. 2 machinery room – starboard | 0d | 2026-08-31 | 2026-09-12 | A09410 FS+0.8d | Electrical [319 h] |
| A05570 | Pull & land cable — lighting circuit 3A — Ready Room No. 4 | 0d | 2026-08-31 | 2026-09-05 | A05560 FS+0.8d | Electrical [147 h] |
| A08750 | De-energize & tag out lighting circuit 2A — Weapons elevator No. 1 machinery room – starboard | 0d | 2026-08-31 | 2026-09-13 | A08740 FS+0.8d | Electrical [416 h] |
| A08970 | Pull & land cable — panel group 1E — Weapons elevator No. 1 machinery room – starboard | 0d | 2026-08-31 | 2026-09-10 | A08960 | Electrical [157 h] |
| A06000 | De-energize & tag out lighting circuit 1A — Ready Room No. 6 | 0d | 2026-09-01 | 2026-09-10 | A05990 FS-4.8d | Electrical [172 h] |
| A11300 | Megger & continuity test cable run 1B — Aircraft elevator No. 3 machinery room | 0d | 2026-09-01 | 2026-09-08 | A11290 FS+2.4d | Electrical [106 h] |
| A06610 | Pull & land cable — panel group 7A — Arresting gear engine room No. 1 | 0d | 2026-09-01 | 2026-09-14 | A06600 FS+0.8d | Electrical [386 h] |
| A19340 | Energize & close-out cable run 6A — Ordnance staging area No. 7 | 0d | 2026-09-02 | 2026-09-15 | A19330 FS+2.4d | Electrical [155 h] |
| A12000 | Pull & land cable — panel group 7B — Weapons elevator No. 6 machinery room – port | 0d | 2026-09-02 | 2026-09-06 | A11990 | Electrical [53 h] |
| A06520 | Megger & continuity test panel group 4A — Ready Room No. 9 | 0d | 2026-09-03 | 2026-09-05 | A06510 | Electrical [47 h]; Rigging & Weight Handling [12 h] |
| A10350 | Pull & land cable — cable run 8C — Weapons elevator No. 3 machinery room – starboard | 0d | 2026-09-03 | 2026-09-15 | A10340 FS+2.4d | Electrical [203 h] |
| A11640 | Energize & close-out lighting circuit 5D — Weapons elevator No. 5 machinery room – port | 0d | 2026-09-03 | 2026-09-12 | A11630 | Electrical [134 h] |
| A06370 | Megger & continuity test cable run 7B — Gallery deck passage No. 3 | 0d | 2026-09-03 | 2026-09-06 | A06360 FS+2.4d | Electrical [27 h] |
| A06810 | Pull & land cable — cable run 3B — Arresting gear engine room No. 2 | 0d | 2026-09-03 | 2026-09-14 | A06800 | Electrical [67 h] |
| A11970 | Energize & close-out cable run 3A — Weapons elevator No. 6 machinery room – port | 0d | 2026-09-03 | 2026-09-09 | A11960 FS+2.4d | Electrical [171 h] |
| A17250 | Pull & land cable — cable run 8A — Hangar deck control | 0d | 2026-09-04 | 2026-09-11 | A17240 | Electrical [43 h]; Rigging & Weight Handling [11 h] |
| A18180 | Pull & land cable — cable run 1C — Ordnance staging area No. 5 | 0d | 2026-09-04 | 2026-09-15 | A18170 | Electrical [186 h]; Rigging & Weight Handling [47 h] |
| A17970 | De-energize & tag out lighting circuit 1C — Hangar bay fire station No. 4 | 0d | 2026-09-05 | 2026-09-10 | A17960 FS+0.8d | Electrical [61 h] |
| A10500 | Pull & land cable — lighting circuit 6B — Aircraft elevator No. 4 machinery room | 0d | 2026-09-05 | 2026-09-16 | A10490 SS+2.4d | Electrical [73 h] |
| A14670 | Pull & land cable — panel group 6A — AIMD Survival equipment shop | 0d | 2026-09-05 | 2026-09-18 | A14660 | Electrical [201 h] |
| A05580 | Megger & continuity test lighting circuit 3A — Ready Room No. 4 | 0d | 2026-09-06 | 2026-09-11 | A05570 FS+0.8d | Electrical [116 h] |
| A11340 | Pull & land cable — cable run 6A — Weapons elevator No. 5 machinery room – starboard | 0d | 2026-09-06 | 2026-09-15 | A11330 | Electrical [115 h] |
| A17680 | Megger & continuity test panel group 2A — Ordnance staging area No. 4 | 0d | 2026-09-07 | 2026-09-17 | A17670 | Electrical [88 h] |
| A09920 | Pull & land cable — lighting circuit 2A — Aircraft elevator No. 2 machinery room | 0d | 2026-09-07 | 2026-09-19 | A09910 FS+0.8d | Electrical [225 h] |
| A12010 | Megger & continuity test panel group 7B — Weapons elevator No. 6 machinery room – port | 0d | 2026-09-07 | 2026-09-18 | A12000 | Electrical [182 h] |
| A09790 | Energize & close-out cable run 6B — Weapons elevator No. 2 machinery room – port | 0d | 2026-09-07 | 2026-09-19 | A09780 FS+2.4d | Electrical [71 h] |
| A06530 | Energize & close-out panel group 4A — Ready Room No. 9 | 0d | 2026-09-08 | 2026-09-11 | A06520 | Electrical [57 h] |
| A04600 | Energize & close-out panel group 9A — Catapult No. 3 machinery room | 0d | 2026-09-08 | 2026-09-17 | A04590 FS+2.4d | Electrical [54 h]; Rigging & Weight Handling [14 h] |
| A03830 | Energize & close-out cable run 6B — Avionics shop No. 3 | 0d | 2026-09-08 | 2026-09-13 | A03820 | Electrical [145 h] |
| A16530 | Pull & land cable — panel group 8B — Hangar bay divisional door No. 1 | 0d | 2026-09-08 | 2026-09-17 | A16520 | Electrical [150 h] |
| A16140 | Energize & close-out cable run 5A — Ordnance staging area No. 2 | 0d | 2026-09-08 | 2026-09-19 | A16130 FS+2.4d | Electrical [315 h] |
| A11310 | Energize & close-out cable run 1B — Aircraft elevator No. 3 machinery room | 0d | 2026-09-08 | 2026-09-20 | A11300 FS+0.8d | Electrical [358 h] |
| A18640 | Pull & land cable — lighting circuit 3D — Hangar Bay 3 | 0d | 2026-09-09 | 2026-09-11 | A18630 | Electrical [32 h] |
| A06380 | Energize & close-out cable run 7B — Gallery deck passage No. 3 | 0d | 2026-09-09 | 2026-09-15 | A06370 FS-4.8d | Electrical [100 h] |

| ID | Activity | Duration | Start | Finish | Predecessors | Resources |
| --- | --- | --- | --- | --- | --- | --- |
| A08860 | Pull & land cable — panel group 8C — Weapons elevator No. 1 machinery room – starboard | 0d | 2026-09-09 | 2026-09-14 | A08850 | Electrical [105 h] |
| A15770 | Energize & close-out cable run 5A — Hangar bay workshop No. 1 | 0d | 2026-09-10 | 2026-09-17 | A15760 | Electrical [95 h] |
| A03150 | Pull & land cable — cable run 3D (03-61-1-Q) | 0d | 2026-09-10 | 2026-09-13 | A03140 | Electrical [22 h] |
| A06330 | Energize & close-out cable run 6A — Gallery deck passage No. 3 | 0d | 2026-09-11 | 2026-09-16 | A06320 FS+2.4d | Electrical [46 h] |
| A19640 | Megger & continuity test cable run 3C — Hangar bay workshop No. 4 | 0d | 2026-09-11 | 2026-09-18 | A19630 | Electrical [104 h] |
| A08980 | Megger & continuity test panel group 1E — Weapons elevator No. 1 machinery room – starboard | 0d | 2026-09-11 | 2026-09-14 | A08970 | Electrical [89 h] |
| A19680 | Pull & land cable — lighting circuit 4D — Hangar bay workshop No. 4 | 0d | 2026-09-11 | 2026-09-19 | A19670 | Electrical [119 h] |
| A06010 | Pull & land cable — lighting circuit 1A — Ready Room No. 6 | 0d | 2026-09-11 | 2026-09-17 | A06000 | Electrical [100 h] |
| A17260 | Megger & continuity test cable run 8A — Hangar deck control | 0d | 2026-09-11 | 2026-09-24 | A17250 FS+0.8d | Electrical [107 h] |
| A17980 | Pull & land cable — lighting circuit 1C — Hangar bay fire station No. 4 | 0d | 2026-09-12 | 2026-09-23 | A17970 | Electrical [248 h] |
| A16220 | Pull & land cable — panel group 3C — Ordnance staging area No. 2 | 0d | 2026-09-12 | 2026-09-18 | A16210 | Electrical [130 h] |
| A09880 | Megger & continuity test cable run 4D — Weapons elevator No. 2 machinery room – port | 0d | 2026-09-12 | 2026-09-26 | A09870 FS+2.4d | Electrical [303 h] |
| A18820 | Megger & continuity test panel group 6B — Conflagration station No. 3 | 0d | 2026-09-13 | 2026-09-20 | A18810 | Electrical [176 h] |
| A18650 | Megger & continuity test lighting circuit 3D — Hangar Bay 3 | 0d | 2026-09-13 | 2026-09-19 | A18640 FS+2.4d | Electrical [162 h] |
| A08760 | Pull & land cable — lighting circuit 2A — Weapons elevator No. 1 machinery room – starboard | 0d | 2026-09-13 | 2026-09-26 | A08750 FS+0.8d | Electrical [72 h] |
| A03720 | Megger & continuity test cable run 4C — Squadron ready storeroom No. 1 | 0d | 2026-09-13 | 2026-09-22 | A03710 | Electrical [157 h] |
| A05590 | Energize & close-out lighting circuit 3A — Ready Room No. 4 | 0d | 2026-09-13 | 2026-09-27 | A05580 | Electrical [118 h] |
| A08990 | Energize & close-out panel group 1E — Weapons elevator No. 1 machinery room – starboard | 0d | 2026-09-14 | 2026-09-22 | A08980 | Electrical [164 h] |
| A03160 | Megger & continuity test cable run 3D (03-61-1-Q) | 0d | 2026-09-15 | 2026-09-26 | A03150 FS+2.4d | Electrical [202 h] |
| A06620 | Megger & continuity test panel group 7A — Arresting gear engine room No. 1 | 0d | 2026-09-15 | 2026-09-19 | A06610 FS+0.8d | Electrical [57 h] |
| A08870 | Megger & continuity test panel group 8C — Weapons elevator No. 1 machinery room – starboard | 0d | 2026-09-16 | 2026-09-21 | A08860 | Electrical [79 h] |
| A06820 | Megger & continuity test cable run 3B — Arresting gear engine room No. 2 | 0d | 2026-09-16 | 2026-09-22 | A06810 FS+2.4d | Electrical [44 h] |
| A11350 | Megger & continuity test cable run 6A — Weapons elevator No. 5 machinery room – starboard | 0d | 2026-09-16 | 2026-09-19 | A11340 FS+2.4d | Electrical [71 h] |
| A08310 | Pull & land cable — panel group 7B — Carrier air traffic control center (CATCC) | 0d | 2026-09-16 | 2026-09-22 | A08300 | Electrical [51 h] |
| A10510 | Megger & continuity test lighting circuit 6B — Aircraft elevator No. 4 machinery room | 0d | 2026-09-17 | 2026-09-27 | A10500 FS+0.8d | Electrical [147 h] |
| A10360 | Megger & continuity test cable run 8C — Weapons elevator No. 3 machinery room – starboard | 0d | 2026-09-17 | 2026-09-20 | A10350 | Electrical [19 h] |
| A17690 | Energize & close-out panel group 2A — Ordnance staging area No. 4 | 0d | 2026-09-18 | 2026-09-21 | A17680 FS+2.4d | Electrical [36 h] |
| A18190 | Megger & continuity test cable run 1C — Ordnance staging area No. 5 | 0d | 2026-09-18 | 2026-09-24 | A18180 FS+0.8d | Electrical [84 h] |
| A12020 | Energize & close-out panel group 7B — Weapons elevator No. 6 machinery room – port | 0d | 2026-09-18 | 2026-09-23 | A12010 SS+4.8d | Electrical [47 h] |
| A16230 | Megger & continuity test panel group 3C — Ordnance staging area No. 2 | 0d | 2026-09-18 | 2026-09-26 | A16220 FS-4.8d | Electrical [159 h] |
| A16540 | Megger & continuity test panel group 8B — Hangar bay divisional door No. 1 | 0d | 2026-09-19 | 2026-09-25 | A16530 | Electrical [54 h] |
| A06020 | Megger & continuity test lighting circuit 1A — Ready Room No. 6 | 0d | 2026-09-19 | 2026-09-26 | A06010 SS+2.4d | Electrical [157 h] |
| A19690 | Megger & continuity test lighting circuit 4D — Hangar bay workshop No. 4 | 0d | 2026-09-20 | 2026-09-28 | A19680 | Electrical [203 h] |
| A09930 | Megger & continuity test lighting circuit 2A — Aircraft elevator No. 2 machinery room | 0d | 2026-09-20 | 2026-10-03 | A09920 | Electrical [90 h] |
| A19650 | Energize & close-out cable run 3C — Hangar bay workshop No. 4 | 0d | 2026-09-20 | 2026-09-30 | A19640 | Electrical [221 h] |
| A14680 | Megger & continuity test panel group 6A — AIMD Survival equipment shop | 0d | 2026-09-20 | 2026-09-29 | A14670 FS+0.8d | Electrical [121 h]; Rigging & Weight Handling [31 h] |
| A18660 | Energize & close-out lighting circuit 3D — Hangar Bay 3 | 0d | 2026-09-21 | 2026-09-28 | A18650 FS+2.4d | Electrical [75 h]; Rigging & Weight Handling [19 h] |
| A18830 | Energize & close-out panel group 6B — Conflagration station No. 3 | 0d | 2026-09-21 | 2026-10-03 | A18820 | Electrical [227 h] |
| A06630 | Energize & close-out panel group 7A — Arresting gear engine room No. 1 | 0d | 2026-09-21 | 2026-10-04 | A06620 | Electrical [100 h] |
| A10370 | Energize & close-out cable run 8C — Weapons elevator No. 3 machinery room – starboard | 0d | 2026-09-21 | 2026-09-24 | A10360 | Electrical [42 h] |
| A11360 | Energize & close-out cable run 6A — Weapons elevator No. 5 machinery room – starboard | 0d | 2026-09-22 | 2026-09-25 | A11350 FS+0.8d | Electrical [26 h] |
| A08880 | Energize & close-out panel group 8C — Weapons elevator No. 1 machinery room – starboard | 0d | 2026-09-23 | 2026-10-04 | A08870 FS+2.4d | Electrical [201 h] |
| A17990 | Megger & continuity test lighting circuit 1C — Hangar bay fire station No. 4 | 0d | 2026-09-24 | 2026-10-03 | A17980 | Electrical [67 h] |
| A06830 | Energize & close-out cable run 3B — Arresting gear engine room No. 2 | 0d | 2026-09-24 | 2026-10-05 | A06820 FS+2.4d | Electrical [156 h] |
| A08320 | Megger & continuity test panel group 7B — Carrier air traffic control center (CATCC) | 0d | 2026-09-25 | 2026-09-29 | A08310 | Electrical [57 h] |
| A03730 | Energize & close-out cable run 4C — Squadron ready storeroom No. 1 | 0d | 2026-09-25 | 2026-10-05 | A03720 | Electrical [80 h] |
| A17270 | Energize & close-out cable run 8A — Hangar deck control | 0d | 2026-09-25 | 2026-10-06 | A17260 | Electrical [64 h]; Rigging & Weight Handling [17 h] |
| A18200 | Energize & close-out cable run 1C — Ordnance staging area No. 5 | 0d | 2026-09-25 | 2026-09-29 | A18190 FS+2.4d | Electrical [96 h] |
| A16240 | Energize & close-out panel group 3C — Ordnance staging area No. 2 | 0d | 2026-09-26 | 2026-10-02 | A16230 FS+2.4d | Electrical [76 h]; Rigging & Weight Handling [19 h] |
| A03170 | Energize & close-out cable run 3D (03-61-1-Q) | 0d | 2026-09-27 | 2026-09-30 | A03160 FS+0.8d | Electrical [68 h]; Rigging & Weight Handling [17 h] |
| A16550 | Energize & close-out panel group 8B — Hangar bay divisional door No. 1 | 0d | 2026-09-27 | 2026-10-05 | A16540 | Electrical [191 h] |
| A09890 | Energize & close-out cable run 4D — Weapons elevator No. 2 machinery room – port | 0d | 2026-09-27 | 2026-10-03 | A09880 FS+2.4d | Electrical [46 h] |
| A08770 | Megger & continuity test lighting circuit 2A — Weapons elevator No. 1 machinery room – starboard | 0d | 2026-09-27 | 2026-10-02 | A08760 | Electrical [26 h] |
| A10520 | Energize & close-out lighting circuit 6B — Aircraft elevator No. 4 machinery room | 0d | 2026-09-28 | 2026-10-09 | A10510 FS+2.4d | Electrical [182 h] |
| A06030 | Energize & close-out lighting circuit 1A — Ready Room No. 6 | 0d | 2026-09-28 | 2026-10-06 | A06020 FS+2.4d | Electrical [42 h] |
| A14690 | Energize & close-out panel group 6A — AIMD Survival equipment shop | 0d | 2026-10-01 | 2026-10-06 | A14680 | Electrical [144 h]; Rigging & Weight Handling [37 h] |
| A08330 | Energize & close-out panel group 7B — Carrier air traffic control center (CATCC) | 0d | 2026-10-01 | 2026-10-08 | A08320 FS+0.8d | Electrical [161 h] |
| A19700 | Energize & close-out lighting circuit 4D — Hangar bay workshop No. 4 | 0d | 2026-10-01 | 2026-10-05 | A19690 FS+2.4d | Electrical [26 h] |
| A08780 | Energize & close-out lighting circuit 2A — Weapons elevator No. 1 machinery room – starboard | 0d | 2026-10-04 | 2026-10-17 | A08770 SS+7.2d | Electrical [101 h] |
| A18000 | Energize & close-out lighting circuit 1C — Hangar bay fire station No. 4 | 0d | 2026-10-04 | 2026-10-07 | A17990 | Electrical [79 h] |
| A09940 | Energize & close-out lighting circuit 2A — Aircraft elevator No. 2 machinery room | 0d | 2026-10-06 | 2026-10-18 | A09930 FS+2.4d | Electrical [211 h] |

| ID | WBS | Activity | Duration | Start | Finish | Predecessors | Complete | Remaining | Resources |
| --- | --- | --- | --- | --- | --- | --- | --- | --- | --- |
|  | 430 | **430 Interior Communications** |  | 2026-07-27 | 2026-10-09 |  |  |  |  |
| A05010 |  | Circuit trace — announcing group 1A — Strike operations | 0d | 2026-07-27 A | 2026-08-05 A |  | 100% |  | Interior Communications [53 h] |
| A17280 |  | Circuit trace — IC circuit 8B (1-136-1-C) | 0d | 2026-07-30 A | 2026-08-05 A |  | 100% |  | Interior Communications [55 h] |
| A04520 |  | Circuit trace — IC circuit 4A — Combat Direction Center | 0d | 2026-08-03 A | 2026-08-07 A |  | 100% |  | Interior Communications [57 h] |
| A08170 |  | Circuit trace — IC circuit 9A — Air operations | 0d | 2026-08-05 A | 2026-08-16 |  | 40% | 0d | Interior Communications [68 h] |
| A08250 |  | Circuit trace — announcing group 1A — Carrier air traffic control center (CATCC) | 0d | 2026-08-06 A | 2026-08-20 |  | 17% | 0d | Interior Communications [481 h] |
| A17290 |  | Rip out IC circuit 8B (1-136-1-C) | 0d | 2026-08-06 A | 2026-08-16 | A17280 | 34% | 0d | Interior Communications [62 h] |
| A05020 |  | Rip out announcing group 1A — Strike operations | 0d | 2026-08-07 A | 2026-08-10 | A05010 SS+2.4d | 95% | 0d | Interior Communications [56 h] |
| A04530 |  | Rip out IC circuit 4A — Combat Direction Center | 0d | 2026-08-07 A | 2026-08-12 | A04520 | 50% | 0d | Interior Communications [32 h] |
| A05030 |  | Install & terminate announcing group 1A — Strike operations | 0d | 2026-08-10 | 2026-08-13 | A05020 FS+2.4d |  |  | Interior Communications [110 h] |
| A04540 |  | Install & terminate IC circuit 4A — Combat Direction Center | 0d | 2026-08-13 | 2026-08-27 | A04530 |  |  | Interior Communications [166 h] |
| A18750 |  | Circuit trace — IC circuit 7A — Conflagration station No. 3 | 0d | 2026-08-13 | 2026-08-18 |  |  |  | Interior Communications [131 h] |
| A08210 |  | Circuit trace — IC circuit 8B (02-60-0-C) | 0d | 2026-08-14 | 2026-08-19 |  |  |  | Interior Communications [37 h] |
| A05040 |  | Ring-out & test announcing group 1A — Strike operations | 0d | 2026-08-15 | 2026-08-25 | A05030 FS+0.8d |  |  | Interior Communications [320 h] |
| A15480 |  | Circuit trace — IC circuit 5B — Conflagration station No. 1 | 0d | 2026-08-16 | 2026-08-30 |  |  |  | Interior Communications [113 h] |
| A08180 |  | Rip out IC circuit 9A — Air operations | 0d | 2026-08-17 | 2026-08-28 | A08170 |  |  | Interior Communications [317 h] |
| A17300 |  | Install & terminate IC circuit 8B (1-136-1-C) | 0d | 2026-08-18 | 2026-08-24 | A17290 |  |  | Interior Communications [137 h] |
| A18760 |  | Rip out IC circuit 7A — Conflagration station No. 3 | 0d | 2026-08-18 | 2026-08-26 | A18750 FS+0.8d |  |  | Interior Communications [48 h] |
| A15440 |  | Circuit trace — announcing group 6A — Conflagration station No. 1 | 0d | 2026-08-19 | 2026-08-21 |  |  |  | Interior Communications [28 h]; Rigging & Weight Handling [8 h] |
| A08220 |  | Rip out IC circuit 8B (02-60-0-C) | 0d | 2026-08-21 | 2026-08-26 | A08210 FS+0.8d |  |  | Interior Communications [37 h] |
| A15450 |  | Rip out announcing group 6A — Conflagration station No. 1 | 0d | 2026-08-22 | 2026-08-30 | A15440 |  |  | Interior Communications [95 h] |
| A08260 |  | Rip out announcing group 1A — Carrier air traffic control center (CATCC) | 0d | 2026-08-23 | 2026-09-04 | A08250 |  |  | Interior Communications [180 h] |
| A18770 |  | Install & terminate IC circuit 7A — Conflagration station No. 3 | 0d | 2026-08-26 | 2026-09-02 | A18760 SS+7.2d |  |  | Interior Communications [65 h]; Rigging & Weight Handling [17 h] |
| A17310 |  | Ring-out & test IC circuit 8B (1-136-1-C) | 0d | 2026-08-27 | 2026-09-02 | A17300 SS+2.4d |  |  | Interior Communications [73 h] |
| A08230 |  | Install & terminate IC circuit 8B (02-60-0-C) | 0d | 2026-08-27 | 2026-08-29 | A08220 SS+2.4d |  |  | Interior Communications [12 h] |
| A04550 |  | Ring-out & test IC circuit 4A — Combat Direction Center | 0d | 2026-08-29 | 2026-09-02 | A04540 |  |  | Interior Communications [76 h] |
| A15460 |  | Install & terminate announcing group 6A — Conflagration station No. 1 | 0d | 2026-08-30 | 2026-09-08 | A15450 FS+2.4d |  |  | Interior Communications [200 h] |
| A08190 |  | Install & terminate IC circuit 9A — Air operations | 0d | 2026-08-30 | 2026-09-07 | A08180 |  |  | Interior Communications [62 h] |
| A08240 |  | Ring-out & test IC circuit 8B (02-60-0-C) | 0d | 2026-08-31 | 2026-09-13 | A08230 FS+0.8d |  |  | Interior Communications [180 h]; Rigging & Weight Handling [45 h] |
| A15490 |  | Rip out IC circuit 5B — Conflagration station No. 1 | 0d | 2026-09-01 | 2026-09-15 | A15480 |  |  | Interior Communications [239 h] |
| A18780 |  | Ring-out & test IC circuit 7A — Conflagration station No. 3 | 0d | 2026-09-04 | 2026-09-18 | A18770 FS+0.8d |  |  | Interior Communications [435 h] |
| A08270 |  | Install & terminate announcing group 1A — Carrier air traffic control center (CATCC) | 0d | 2026-09-05 | 2026-09-09 | A08260 |  |  | Interior Communications [21 h] |
| A15470 |  | Ring-out & test announcing group 6A — Conflagration station No. 1 | 0d | 2026-09-08 | 2026-09-11 | A15460 FS+0.8d |  |  | Interior Communications [30 h] |
| A08200 |  | Ring-out & test IC circuit 9A — Air operations | 0d | 2026-09-09 | 2026-09-19 | A08190 |  |  | Interior Communications [264 h]; Rigging & Weight Handling [67 h] |
| A08280 |  | Ring-out & test announcing group 1A — Carrier air traffic control center (CATCC) | 0d | 2026-09-10 | 2026-09-22 | A08270 |  |  | Interior Communications [154 h] |
| A15500 |  | Install & terminate IC circuit 5B — Conflagration station No. 1 | 0d | 2026-09-18 | 2026-10-01 | A15490 |  |  | Interior Communications [108 h] |
| A15510 |  | Ring-out & test IC circuit 5B — Conflagration station No. 1 | 0d | 2026-10-02 | 2026-10-09 | A15500 |  |  | Interior Communications [89 h] |

| ID | WBS | Activity | Duration | Start | Finish | Predecessors | Complete | Remaining | Resources |
| --- | --- | --- | --- | --- | --- | --- | --- | --- | --- |
|  | 505 | **505 Piping Systems** |  | 2026-07-28 | 2026-10-27 |  |  |  |  |
| A12810 |  | Lay-up & drain valve bank 6A — AIMD Hydraulics shop | 0d | 2026-07-28 A | 2026-08-09 A |  | 100% |  | Pipefitting [218 h] |
| A03430 |  | Lay-up & drain valve bank 6A — Aviation storeroom No. 1 | 0d | 2026-07-28 A | 2026-08-09 A |  | 100% |  | Pipefitting [216 h]; Rigging & Weight Handling [55 h] |
| A13750 |  | Lay-up & drain valve bank 6B — Boat davit machinery – port | 0d | 2026-07-29 A | 2026-08-05 A |  | 100% |  | Pipefitting [124 h] |
| A11540 |  | Lay-up & drain valve bank 4C — Weapons elevator No. 5 machinery room – port | 0d | 2026-07-29 A | 2026-08-09 A |  | 100% |  | Pipefitting [98 h] |
| A08890 |  | Lay-up & drain valve bank 5D — Weapons elevator No. 1 machinery room – starboard | 0d | 2026-07-29 A | 2026-08-12 |  | 87% | 0d | Pipefitting [287 h] |
| A16300 |  | Lay-up & drain valve bank 4B (1-112-2-Q) | 0d | 2026-08-02 A | 2026-08-14 |  | 49% | 0d | Pipefitting [343 h] |
| A11370 |  | Lay-up & drain drain riser 8B — Weapons elevator No. 5 machinery room – starboard | 0d | 2026-08-05 A | 2026-08-13 |  | 65% | 0d | Pipefitting [269 h] |
| A17590 |  | Lay-up & drain drain riser 5B — Hangar Bay 3 (uptake bay) | 0d | 2026-08-06 A | 2026-08-12 |  | 64% | 0d | Pipefitting [94 h] |
| A04830 |  | Lay-up & drain pipe spool group 6A — Catapult No. 4 machinery room | 0d | 2026-08-06 A | 2026-08-11 |  | 65% | 0d | Pipefitting [37 h] |
| A14480 |  | Lay-up & drain pipe spool group 4A — AIMD Composite repair shop | 0d | 2026-08-06 A | 2026-08-11 |  | 76% | 0d | Pipefitting [25 h] |
| A11210 |  | Lay-up & drain drain riser 4A — Aircraft elevator No. 3 machinery room | 0d | 2026-08-07 A | 2026-08-14 |  | 34% | 0d | Pipefitting [87 h]; Rigging & Weight Handling [22 h] |
| A15330 |  | Lay-up & drain pipe spool group 1A — Ordnance staging area No. 1 | 0d | 2026-08-07 A | 2026-08-17 |  | 28% | 0d | Pipefitting [170 h] |
| A18210 |  | Lay-up & drain pipe spool group 4A — Hangar bay divisional door No. 2 | 0d | 2026-08-07 A | 2026-08-17 |  | 25% | 0d | Pipefitting [180 h]; Rigging & Weight Handling [45 h] |
| A13760 |  | Cut out valve bank 6B — Boat davit machinery – port | 0d | 2026-08-07 A | 2026-08-19 | A13750 | 20% | 0d | Pipefitting [84 h]; Rigging & Weight Handling [22 h] |
| A19140 |  | Lay-up & drain drain riser 5B — Ordnance staging area No. 6 | 0d | 2026-08-08 A | 2026-08-16 |  | 17% | 0d | Pipefitting [272 h] |
| A13640 |  | Lay-up & drain valve bank 6E — Boat davit machinery – starboard | 0d | 2026-08-09 A | 2026-08-20 |  | 4% | 0d | Pipefitting [92 h] |
| A12820 |  | Cut out valve bank 6A — AIMD Hydraulics shop | 0d | 2026-08-10 | 2026-08-12 | A12810 FS+2.4d |  |  | Pipefitting [23 h] |
| A13130 |  | Lay-up & drain valve bank 9A — AIMD Tire & wheel shop | 0d | 2026-08-10 | 2026-08-20 |  |  |  | Pipefitting [226 h] |
| A11550 |  | Cut out valve bank 4C — Weapons elevator No. 5 machinery room – port | 0d | 2026-08-10 | 2026-08-18 | A11540 |  |  | Pipefitting [208 h] |
| A04410 |  | Lay-up & drain drain riser 7B — Jet blast deflector No. 2 machinery room | 0d | 2026-08-11 | 2026-08-17 |  |  |  | Pipefitting [150 h] |
| A14490 |  | Cut out pipe spool group 4A — AIMD Composite repair shop | 0d | 2026-08-12 | 2026-08-25 | A14480 |  |  | Pipefitting [105 h] |
| A03440 |  | Cut out valve bank 6A — Aviation storeroom No. 1 | 0d | 2026-08-12 | 2026-08-26 | A03430 |  |  | Pipefitting [194 h] |
| A04840 |  | Cut out pipe spool group 6A — Catapult No. 4 machinery room | 0d | 2026-08-12 | 2026-08-18 | A04830 |  |  | Pipefitting [77 h] |
| A17370 |  | Lay-up & drain pipe spool group 7A — Aircraft tie-down locker No. 2 | 0d | 2026-08-12 | 2026-08-19 |  |  |  | Pipefitting [93 h] |
| A17530 |  | Lay-up & drain pipe spool group 9A — Hangar Bay 3 (uptake bay) | 0d | 2026-08-13 | 2026-08-22 |  |  |  | Pipefitting [230 h] |
| A11380 |  | Cut out drain riser 8B — Weapons elevator No. 5 machinery room – starboard | 0d | 2026-08-13 | 2026-08-25 | A11370 FS+2.4d |  |  | Pipefitting [71 h] |
| A10780 |  | Lay-up & drain valve bank 6A — Weapons elevator No. 4 machinery room – starboard | 0d | 2026-08-13 | 2026-08-20 |  |  |  | Pipefitting [158 h] |
| A17600 |  | Cut out drain riser 5B — Hangar Bay 3 (uptake bay) | 0d | 2026-08-13 | 2026-08-19 | A17590 FS+0.8d |  |  | Pipefitting [72 h]; Rigging & Weight Handling [19 h] |
| A11050 |  | Lay-up & drain pipe spool group 1B — Weapons elevator No. 4 machinery room – port | 0d | 2026-08-13 | 2026-08-21 |  |  |  | Pipefitting [131 h] |
| A15570 |  | Lay-up & drain pipe spool group 1B — Hangar bay fire station No. 2 | 0d | 2026-08-14 | 2026-08-16 |  |  |  | Pipefitting [29 h] |
| A10220 |  | Lay-up & drain drain riser 2A — Weapons elevator No. 3 machinery room – starboard | 0d | 2026-08-14 | 2026-08-25 |  |  |  | Pipefitting [131 h] |
| A08900 |  | Cut out valve bank 5D — Weapons elevator No. 1 machinery room – starboard | 0d | 2026-08-14 | 2026-08-26 | A08890 |  |  | Pipefitting [86 h] |
| A11480 |  | Lay-up & drain valve bank 8B — Weapons elevator No. 5 machinery room – port | 0d | 2026-08-14 | 2026-08-17 |  |  |  | Pipefitting [30 h]; Rigging & Weight Handling [8 h] |
| A17800 |  | Lay-up & drain drain riser 7A — Hangar bay fire station No. 3 | 0d | 2026-08-14 | 2026-08-27 |  |  |  | Pipefitting [417 h] |
| A16610 |  | Lay-up & drain pipe spool group 6A — Hangar Bay 2 | 0d | 2026-08-14 | 2026-08-20 |  |  |  | Pipefitting [43 h] |
| A12830 |  | Fab & fit valve bank 6A — AIMD Hydraulics shop | 0d | 2026-08-14 | 2026-08-18 | A12820 FS+2.4d |  |  | Pipefitting [21 h] |
| A04090 |  | Lay-up & drain valve bank 4B — Aviation storeroom No. 3 | 0d | 2026-08-15 | 2026-08-23 |  |  |  | Pipefitting [266 h] |
| A16310 |  | Cut out valve bank 4B (1-112-2-Q) | 0d | 2026-08-15 | 2026-08-24 | A16300 |  |  | Pipefitting [65 h] |
| A10840 |  | Lay-up & drain drain riser 9B — Weapons elevator No. 4 machinery room – starboard | 0d | 2026-08-15 | 2026-08-21 |  |  |  | Pipefitting [73 h] |
| A04890 |  | Lay-up & drain valve bank 6B — Catapult No. 4 machinery room | 0d | 2026-08-16 | 2026-08-23 |  |  |  | Pipefitting [91 h] |
| A16040 |  | Lay-up & drain pipe spool group 2C — Hangar deck storeroom No. 1 | 0d | 2026-08-16 | 2026-08-23 |  |  |  | Pipefitting [82 h] |
| A11220 |  | Cut out drain riser 4A — Aircraft elevator No. 3 machinery room | 0d | 2026-08-16 | 2026-08-20 | A11210 FS+2.4d |  |  | Pipefitting [111 h] |
| A09170 |  | Lay-up & drain pipe spool group 9B — Weapons elevator No. 1 machinery room – port | 0d | 2026-08-16 | 2026-08-25 |  |  |  | Pipefitting [68 h] |
| A15580 |  | Cut out pipe spool group 1B — Hangar bay fire station No. 2 | 0d | 2026-08-17 | 2026-08-28 | A15570 |  |  | Pipefitting [189 h] |
| A18220 |  | Cut out pipe spool group 4A — Hangar bay divisional door No. 2 | 0d | 2026-08-17 | 2026-08-29 | A18210 |  |  | Pipefitting [213 h] |
| A15340 |  | Cut out pipe spool group 1A — Ordnance staging area No. 1 | 0d | 2026-08-17 | 2026-08-24 | A15330 FS+2.4d |  |  | Pipefitting [136 h] |
| A19500 |  | Lay-up & drain drain riser 8A — Hangar bay workshop No. 4 | 0d | 2026-08-18 | 2026-08-24 |  |  |  | Pipefitting [129 h] |
| A19150 |  | Cut out drain riser 5B — Ordnance staging area No. 6 | 0d | 2026-08-18 | 2026-08-28 | A19140 |  |  | Pipefitting [265 h] |
| A11490 |  | Cut out valve bank 8B — Weapons elevator No. 5 machinery room – port | 0d | 2026-08-18 | 2026-08-28 | A11480 FS-2.4d |  |  | Pipefitting [177 h] |
| A04420 |  | Cut out drain riser 7B — Jet blast deflector No. 2 machinery room | 0d | 2026-08-18 | 2026-08-24 | A04410 |  |  | Pipefitting [46 h] |
| A15980 |  | Lay-up & drain pipe spool group 8B (1-96-1-Q) | 0d | 2026-08-18 | 2026-08-23 |  |  |  | Pipefitting [120 h] |
| A04710 |  | Lay-up & drain pipe spool group 1D — Catapult No. 3 machinery room | 0d | 2026-08-19 | 2026-08-25 |  |  |  | Pipefitting [89 h] |
| A11560 |  | Fab & fit valve bank 4C — Weapons elevator No. 5 machinery room – port | 0d | 2026-08-19 | 2026-08-30 | A11550 FS+2.4d |  |  | Pipefitting [197 h]; Rigging & Weight Handling [50 h] |
| A17380 |  | Cut out pipe spool group 7A — Aircraft tie-down locker No. 2 | 0d | 2026-08-20 | 2026-08-31 | A17370 FS+2.4d |  |  | Pipefitting [178 h] |
| A13770 |  | Fab & fit valve bank 6B — Boat davit machinery – port | 0d | 2026-08-20 | 2026-08-23 | A13760 SS+2.4d |  |  | Pipefitting [84 h] |
| A04850 |  | Fab & fit pipe spool group 6A — Catapult No. 4 machinery room | 0d | 2026-08-20 | 2026-08-24 | A04840 |  |  | Pipefitting [88 h] |
| A12840 |  | Weld out valve bank 6A — AIMD Hydraulics shop | 0d | 2026-08-20 | 2026-08-24 | A12830 |  |  | Pipefitting [29 h] |
| A16620 |  | Cut out pipe spool group 6A — Hangar Bay 2 | 0d | 2026-08-20 | 2026-08-31 | A16610 |  |  | Pipefitting [144 h] |
| A10790 |  | Cut out valve bank 6A — Weapons elevator No. 4 machinery room – starboard | 0d | 2026-08-21 | 2026-08-25 | A10780 |  |  | Pipefitting [36 h] |
| A11230 |  | Fab & fit drain riser 4A — Aircraft elevator No. 3 machinery room | 0d | 2026-08-21 | 2026-09-02 | A11220 |  |  | Pipefitting [198 h] |
| A13650 |  | Cut out valve bank 6E — Boat davit machinery – starboard | 0d | 2026-08-21 | 2026-09-02 | A13640 |  |  | Pipefitting [138 h] |
| A13140 |  | Cut out valve bank 9A — AIMD Tire & wheel shop | 0d | 2026-08-22 | 2026-09-04 | A13130 FS+2.4d |  |  | Pipefitting [79 h] |
| A17610 |  | Fab & fit drain riser 5B — Hangar Bay 3 (uptake bay) | 0d | 2026-08-22 | 2026-08-24 | A17600 |  |  | Pipefitting [33 h] |
| A10850 |  | Cut out drain riser 9B — Weapons elevator No. 4 machinery room – starboard | 0d | 2026-08-23 | 2026-08-27 | A10840 FS+0.8d |  |  | Pipefitting [96 h] |
| A11060 |  | Cut out pipe spool group 1B — Weapons elevator No. 4 machinery room – port | 0d | 2026-08-23 | 2026-08-27 | A11050 FS+0.8d |  |  | Pipefitting [70 h] |
| A13780 |  | Weld out valve bank 6B — Boat davit machinery – port | 0d | 2026-08-23 | 2026-09-05 | A13770 |  |  | Pipefitting [217 h] |
| A04900 |  | Cut out valve bank 6B — Catapult No. 4 machinery room | 0d | 2026-08-24 | 2026-08-27 | A04890 FS+2.4d |  |  | Pipefitting [21 h] |
| A04100 |  | Cut out valve bank 4B — Aviation storeroom No. 3 | 0d | 2026-08-24 | 2026-08-27 | A04090 FS+0.8d |  |  | Pipefitting [82 h] |
| A17620 |  | Weld out drain riser 5B — Hangar Bay 3 (uptake bay) | 0d | 2026-08-24 | 2026-08-30 | A17610 |  |  | Pipefitting [54 h] |

| ID | Activity | Duration | Start | Finish | Predecessors | Resources |
| --- | --- | --- | --- | --- | --- | --- |
| A04860 | Weld out pipe spool group 6A — Catapult No. 4 machinery room | 0d | 2026-08-24 | 2026-08-30 | A04850 | Pipefitting [188 h] |
| A04430 | Fab & fit drain riser 7B — Jet blast deflector No. 2 machinery room | 0d | 2026-08-24 | 2026-09-03 | A04420 FS+2.4d | Pipefitting [138 h] |
| A15350 | Fab & fit pipe spool group 1A — Ordnance staging area No. 1 | 0d | 2026-08-24 | 2026-08-27 | A15340 FS+2.4d | Pipefitting [17 h] |
| A16050 | Cut out pipe spool group 2C — Hangar deck storeroom No. 1 | 0d | 2026-08-25 | 2026-08-28 | A16040 | Pipefitting [58 h] |
| A17540 | Cut out pipe spool group 9A — Hangar Bay 3 (uptake bay) | 0d | 2026-08-25 | 2026-09-05 | A17530 | Pipefitting [326 h] |
| A16320 | Fab & fit valve bank 4B (1-112-2-Q) | 0d | 2026-08-26 | 2026-08-29 | A16310 | Pipefitting [56 h] |
| A11390 | Fab & fit drain riser 8B — Weapons elevator No. 5 machinery room – starboard | 0d | 2026-08-26 | 2026-09-04 | A11380 FS+2.4d | Pipefitting [114 h] |
| A12850 | Hydro test valve bank 6A — AIMD Hydraulics shop | 0d | 2026-08-26 | 2026-08-31 | A12840 FS+0.8d | Pipefitting [82 h] |
| A15990 | Cut out pipe spool group 8B (1-96-1-Q) | 0d | 2026-08-26 | 2026-09-03 | A15980 FS+0.8d | Pipefitting [56 h] |
| A14500 | Fab & fit pipe spool group 4A — AIMD Composite repair shop | 0d | 2026-08-26 | 2026-09-05 | A14490 FS+2.4d | Pipefitting [334 h] |
| A03450 | Fab & fit valve bank 6A — Aviation storeroom No. 1 | 0d | 2026-08-26 | 2026-09-07 | A03440 FS+0.8d | Pipefitting [83 h] |
| A19510 | Cut out drain riser 8A — Hangar bay workshop No. 4 | 0d | 2026-08-26 | 2026-09-07 | A19500 | Pipefitting [180 h] |
| A09180 | Cut out pipe spool group 9B — Weapons elevator No. 1 machinery room – port | 0d | 2026-08-27 | 2026-09-05 | A09170 | Pipefitting [114 h]; Rigging & Weight Handling [29 h] |
| A04720 | Cut out pipe spool group 1D — Catapult No. 3 machinery room | 0d | 2026-08-27 | 2026-09-08 | A04710 FS+0.8d | Pipefitting [282 h] |
| A10230 | Cut out drain riser 2A — Weapons elevator No. 3 machinery room – starboard | 0d | 2026-08-28 | 2026-09-07 | A10220 FS+2.4d | Pipefitting [61 h]; Rigging & Weight Handling [16 h] |
| A10800 | Fab & fit valve bank 6A — Weapons elevator No. 4 machinery room – starboard | 0d | 2026-08-28 | 2026-09-09 | A10790 | Pipefitting [331 h] |
| A17810 | Cut out drain riser 7A — Hangar bay fire station No. 3 | 0d | 2026-08-28 | 2026-09-03 | A17800 FS+0.8d | Pipefitting [174 h] |
| A11500 | Fab & fit valve bank 8B — Weapons elevator No. 5 machinery room – port | 0d | 2026-08-28 | 2026-09-05 | A11490 FS+2.4d | Pipefitting [178 h] |
| A10860 | Fab & fit drain riser 9B — Weapons elevator No. 4 machinery room – starboard | 0d | 2026-08-28 | 2026-08-31 | A10850 | Pipefitting [29 h] |
| A15360 | Weld out pipe spool group 1A — Ordnance staging area No. 1 | 0d | 2026-08-28 | 2026-09-10 | A15350 | Pipefitting [97 h] |
| A16060 | Fab & fit pipe spool group 2C — Hangar deck storeroom No. 1 | 0d | 2026-08-29 | 2026-09-11 | A16050 SS+2.4d | Pipefitting [99 h] |
| A15590 | Fab & fit pipe spool group 1B — Hangar bay fire station No. 2 | 0d | 2026-08-29 | 2026-09-04 | A15580 FS+0.8d | Pipefitting [113 h] |
| A08910 | Fab & fit valve bank 5D — Weapons elevator No. 1 machinery room – starboard | 0d | 2026-08-29 | 2026-09-06 | A08900 SS+2.4d | Pipefitting [103 h] |
| A04110 | Fab & fit valve bank 4B — Aviation storeroom No. 3 | 0d | 2026-08-29 | 2026-09-05 | A04100 | Pipefitting [110 h] |
| A04910 | Fab & fit valve bank 6B — Catapult No. 4 machinery room | 0d | 2026-08-30 | 2026-09-10 | A04900 | Pipefitting [69 h]; Rigging & Weight Handling [18 h] |
| A11070 | Fab & fit pipe spool group 1B — Weapons elevator No. 4 machinery room – port | 0d | 2026-08-30 | 2026-09-12 | A11060 FS+0.8d | Pipefitting [112 h] |
| A19160 | Fab & fit drain riser 5B — Ordnance staging area No. 6 | 0d | 2026-08-30 | 2026-09-02 | A19150 FS+0.8d | Pipefitting [37 h] |
| A18230 | Fab & fit pipe spool group 4A — Hangar bay divisional door No. 2 | 0d | 2026-08-31 | 2026-09-09 | A18220 FS+2.4d | Pipefitting [165 h] |
| A10870 | Weld out drain riser 9B — Weapons elevator No. 4 machinery room – starboard | 0d | 2026-08-31 | 2026-09-10 | A10860 | Pipefitting [78 h] |
| A16330 | Weld out valve bank 4B (1-112-2-Q) | 0d | 2026-08-31 | 2026-09-14 | A16320 | Pipefitting [192 h] |
| A16630 | Fab & fit pipe spool group 6A — Hangar Bay 2 | 0d | 2026-08-31 | 2026-09-13 | A16620 | Pipefitting [76 h] |
| A17630 | Hydro test drain riser 5B — Hangar Bay 3 (uptake bay) | 0d | 2026-08-31 | 2026-09-09 | A17620 FS+0.8d | Pipefitting [218 h] |
| A04870 | Hydro test pipe spool group 6A — Catapult No. 4 machinery room | 0d | 2026-08-31 | 2026-09-04 | A04860 | Pipefitting [34 h]; Rigging & Weight Handling [9 h] |
| A11570 | Weld out valve bank 4C — Weapons elevator No. 5 machinery room – port | 0d | 2026-09-01 | 2026-09-07 | A11560 | Pipefitting [29 h] |
| A17390 | Fab & fit pipe spool group 7A — Aircraft tie-down locker No. 2 | 0d | 2026-09-02 | 2026-09-09 | A17380 FS+0.8d | Pipefitting [121 h]; Rigging & Weight Handling [31 h] |
| A19170 | Weld out drain riser 5B — Ordnance staging area No. 6 | 0d | 2026-09-03 | 2026-09-09 | A19160 | Pipefitting [106 h] |
| A12860 | Flush & restore valve bank 6A — AIMD Hydraulics shop | 0d | 2026-09-03 | 2026-09-17 | A12850 | Pipefitting [86 h] |
| A04440 | Weld out drain riser 7B — Jet blast deflector No. 2 machinery room | 0d | 2026-09-03 | 2026-09-06 | A04430 | Pipefitting [21 h] |
| A13660 | Fab & fit valve bank 6E — Boat davit machinery – starboard | 0d | 2026-09-03 | 2026-09-13 | A13650 | Pipefitting [114 h] |
| A16000 | Fab & fit pipe spool group 8B (1-96-1-Q) | 0d | 2026-09-03 | 2026-09-06 | A15990 SS+4.8d | Pipefitting [20 h] |
| A17820 | Fab & fit drain riser 7A — Hangar bay fire station No. 3 | 0d | 2026-09-04 | 2026-09-12 | A17810 | Pipefitting [179 h] |
| A11240 | Weld out drain riser 4A — Aircraft elevator No. 3 machinery room | 0d | 2026-09-05 | 2026-09-14 | A11230 SS+7.2d | Pipefitting [207 h] |
| A11400 | Weld out drain riser 8B — Weapons elevator No. 5 machinery room – starboard | 0d | 2026-09-05 | 2026-09-08 | A11390 FS+0.8d | Pipefitting [40 h] |
| A13150 | Fab & fit valve bank 9A — AIMD Tire & wheel shop | 0d | 2026-09-05 | 2026-09-14 | A13140 | Pipefitting [120 h] |
| A17550 | Fab & fit pipe spool group 9A — Hangar Bay 3 (uptake bay) | 0d | 2026-09-05 | 2026-09-15 | A17540 | Pipefitting [90 h] |
| A09190 | Fab & fit pipe spool group 9B — Weapons elevator No. 1 machinery room – port | 0d | 2026-09-06 | 2026-09-13 | A09180 FS+2.4d | Pipefitting [196 h] |
| A04120 | Weld out valve bank 4B — Aviation storeroom No. 3 | 0d | 2026-09-06 | 2026-09-16 | A04110 | Pipefitting [56 h]; Rigging & Weight Handling [14 h] |
| A14510 | Weld out pipe spool group 4A — AIMD Composite repair shop | 0d | 2026-09-06 | 2026-09-10 | A14500 FS+0.8d | Pipefitting [28 h] |
| A13790 | Hydro test valve bank 6B — Boat davit machinery – port | 0d | 2026-09-06 | 2026-09-13 | A13780 FS+0.8d | Pipefitting [134 h] |
| A15600 | Weld out pipe spool group 1B — Hangar bay fire station No. 2 | 0d | 2026-09-06 | 2026-09-19 | A15590 | Pipefitting [320 h] |
| A04880 | Flush & restore pipe spool group 6A — Catapult No. 4 machinery room | 0d | 2026-09-07 | 2026-09-13 | A04870 | Pipefitting [33 h] |
| A11510 | Weld out valve bank 8B — Weapons elevator No. 5 machinery room – port | 0d | 2026-09-07 | 2026-09-17 | A11500 | Pipefitting [248 h] |
| A04450 | Hydro test drain riser 7B — Jet blast deflector No. 2 machinery room | 0d | 2026-09-07 | 2026-09-11 | A04440 FS+0.8d | Pipefitting [35 h] |
| A11580 | Hydro test valve bank 4C — Weapons elevator No. 5 machinery room – port | 0d | 2026-09-08 | 2026-09-22 | A11570 FS+2.4d | Pipefitting [221 h] |
| A16010 | Weld out pipe spool group 8B (1-96-1-Q) | 0d | 2026-09-08 | 2026-09-17 | A16000 FS+0.8d | Pipefitting [66 h] |
| A03460 | Weld out valve bank 6A — Aviation storeroom No. 1 | 0d | 2026-09-08 | 2026-09-13 | A03450 | Pipefitting [72 h] |
| A04730 | Fab & fit pipe spool group 1D — Catapult No. 3 machinery room | 0d | 2026-09-08 | 2026-09-13 | A04720 | Pipefitting [58 h] |
| A11410 | Hydro test drain riser 8B — Weapons elevator No. 5 machinery room – starboard | 0d | 2026-09-08 | 2026-09-13 | A11400 FS+0.8d | Pipefitting [108 h] |
| A08920 | Weld out valve bank 5D — Weapons elevator No. 1 machinery room – starboard | 0d | 2026-09-09 | 2026-09-13 | A08910 | Pipefitting [26 h] |
| A10240 | Fab & fit drain riser 2A — Weapons elevator No. 3 machinery room – starboard | 0d | 2026-09-09 | 2026-09-18 | A10230 SS+2.4d | Pipefitting [167 h] |
| A10810 | Weld out valve bank 6A — Weapons elevator No. 4 machinery room – starboard | 0d | 2026-09-10 | 2026-09-15 | A10800 | Pipefitting [26 h] |
| A19520 | Fab & fit drain riser 8A — Hangar bay workshop No. 4 | 0d | 2026-09-10 | 2026-09-21 | A19510 | Pipefitting [96 h] |
| A04920 | Weld out valve bank 6B — Catapult No. 4 machinery room | 0d | 2026-09-11 | 2026-09-14 | A04910 | Pipefitting [74 h] |
| A19180 | Hydro test drain riser 5B — Ordnance staging area No. 6 | 0d | 2026-09-11 | 2026-09-18 | A19170 FS+0.8d | Pipefitting [98 h] |
| A17400 | Weld out pipe spool group 7A — Aircraft tie-down locker No. 2 | 0d | 2026-09-11 | 2026-09-16 | A17390 | Pipefitting [37 h] |
| A10880 | Hydro test drain riser 9B — Weapons elevator No. 4 machinery room – starboard | 0d | 2026-09-11 | 2026-09-18 | A10870 | Pipefitting [57 h] |
| A15370 | Hydro test pipe spool group 1A — Ordnance staging area No. 1 | 0d | 2026-09-11 | 2026-09-22 | A15360 | Pipefitting [62 h] |
| A17640 | Flush & restore drain riser 5B — Hangar Bay 3 (uptake bay) | 0d | 2026-09-12 | 2026-09-22 | A17630 FS+2.4d | Pipefitting [76 h] |
| A14520 | Hydro test pipe spool group 4A — AIMD Composite repair shop | 0d | 2026-09-12 | 2026-09-24 | A14510 | Pipefitting [289 h]; Rigging & Weight Handling [73 h] |
| A18240 | Weld out pipe spool group 4A — Hangar bay divisional door No. 2 | 0d | 2026-09-12 | 2026-09-23 | A18230 | Pipefitting [169 h] |

| ID | Activity | Duration | Start | Finish | Predecessors | Resources |
| --- | --- | --- | --- | --- | --- | --- |
| A04740 | Weld out pipe spool group 1D — Catapult No. 3 machinery room | 0d | 2026-09-13 | 2026-09-24 | A04730 SS+2.4d | Pipefitting [86 h] |
| A16070 | Weld out pipe spool group 2C — Hangar deck storeroom No. 1 | 0d | 2026-09-13 | 2026-09-25 | A16060 | Pipefitting [101 h] |
| A16640 | Weld out pipe spool group 6A — Hangar Bay 2 | 0d | 2026-09-13 | 2026-09-27 | A16630 FS+0.8d | Pipefitting [203 h] |
| A04460 | Flush & restore drain riser 7B — Jet blast deflector No. 2 machinery room | 0d | 2026-09-13 | 2026-09-17 | A04450 | Pipefitting [22 h] |
| A03470 | Hydro test valve bank 6A — Aviation storeroom No. 1 | 0d | 2026-09-14 | 2026-09-25 | A03460 FS+0.8d | Pipefitting [406 h] |
| A04930 | Hydro test valve bank 6B — Catapult No. 4 machinery room | 0d | 2026-09-14 | 2026-09-17 | A04920 | Pipefitting [88 h] |
| A11080 | Weld out pipe spool group 1B — Weapons elevator No. 4 machinery room – port | 0d | 2026-09-14 | 2026-09-21 | A11070 FS+0.8d | Pipefitting [67 h] |
| A11420 | Flush & restore drain riser 8B — Weapons elevator No. 5 machinery room – starboard | 0d | 2026-09-14 | 2026-09-25 | A11410 | Pipefitting [91 h] |
| A13800 | Flush & restore valve bank 6B — Boat davit machinery – port | 0d | 2026-09-14 | 2026-09-19 | A13790 FS+0.8d | Pipefitting [89 h] |
| A11250 | Hydro test drain riser 4A — Aircraft elevator No. 3 machinery room | 0d | 2026-09-14 | 2026-09-27 | A11240 | Pipefitting [413 h] |
| A17830 | Weld out drain riser 7A — Hangar bay fire station No. 3 | 0d | 2026-09-15 | 2026-09-19 | A17820 FS+0.8d | Pipefitting [31 h] |
| A13670 | Weld out valve bank 6E — Boat davit machinery – starboard | 0d | 2026-09-15 | 2026-09-28 | A13660 | Pipefitting [116 h] |
| A09200 | Weld out pipe spool group 9B — Weapons elevator No. 1 machinery room – port | 0d | 2026-09-15 | 2026-09-29 | A09190 | Pipefitting [192 h] |
| A13160 | Weld out valve bank 9A — AIMD Tire & wheel shop | 0d | 2026-09-15 | 2026-09-28 | A13150 FS+0.8d | Pipefitting [204 h] |
| A16340 | Hydro test valve bank 4B (1-112-2-Q) | 0d | 2026-09-16 | 2026-09-18 | A16330 FS+0.8d | Pipefitting [38 h] |
| A08930 | Hydro test valve bank 5D — Weapons elevator No. 1 machinery room – starboard | 0d | 2026-09-16 | 2026-09-28 | A08920 | Pipefitting [208 h] |
| A10820 | Hydro test valve bank 6A — Weapons elevator No. 4 machinery room – starboard | 0d | 2026-09-16 | 2026-09-20 | A10810 FS+2.4d | Pipefitting [107 h] |
| A17560 | Weld out pipe spool group 9A — Hangar Bay 3 (uptake bay) | 0d | 2026-09-16 | 2026-09-29 | A17550 | Pipefitting [216 h] |
| A17410 | Hydro test pipe spool group 7A — Aircraft tie-down locker No. 2 | 0d | 2026-09-17 | 2026-09-22 | A17400 FS-4.8d | Pipefitting [106 h] |
| A11520 | Hydro test valve bank 8B — Weapons elevator No. 5 machinery room – port | 0d | 2026-09-17 | 2026-09-26 | A11510 | Pipefitting [74 h] |
| A04130 | Hydro test valve bank 4B — Aviation storeroom No. 3 | 0d | 2026-09-18 | 2026-09-27 | A04120 | Pipefitting [158 h] |
| A04940 | Flush & restore valve bank 6B — Catapult No. 4 machinery room | 0d | 2026-09-18 | 2026-09-23 | A04930 FS+2.4d | Pipefitting [63 h] |
| A16020 | Hydro test pipe spool group 8B (1-96-1-Q) | 0d | 2026-09-18 | 2026-10-02 | A16010 FS+2.4d | Pipefitting [183 h] |
| A16350 | Flush & restore valve bank 4B (1-112-2-Q) | 0d | 2026-09-18 | 2026-09-26 | A16340 FS+2.4d | Pipefitting [145 h] |
| A10890 | Flush & restore drain riser 9B — Weapons elevator No. 4 machinery room – starboard | 0d | 2026-09-19 | 2026-09-28 | A10880 | Pipefitting [140 h] |
| A10250 | Weld out drain riser 2A — Weapons elevator No. 3 machinery room – starboard | 0d | 2026-09-19 | 2026-09-26 | A10240 FS+0.8d | Pipefitting [53 h] |
| A19190 | Flush & restore drain riser 5B — Ordnance staging area No. 6 | 0d | 2026-09-20 | 2026-09-28 | A19180 SS+7.2d | Pipefitting [64 h] |
| A15610 | Hydro test pipe spool group 1B — Hangar bay fire station No. 2 | 0d | 2026-09-20 | 2026-10-01 | A15600 | Pipefitting [74 h] |
| A17840 | Hydro test drain riser 7A — Hangar bay fire station No. 3 | 0d | 2026-09-21 | 2026-10-01 | A17830 FS+2.4d | Pipefitting [128 h] |
| A10830 | Flush & restore valve bank 6A — Weapons elevator No. 4 machinery room – starboard | 0d | 2026-09-21 | 2026-09-25 | A10820 | Pipefitting [63 h] |
| A19530 | Weld out drain riser 8A — Hangar bay workshop No. 4 | 0d | 2026-09-23 | 2026-10-02 | A19520 | Pipefitting [255 h] |
| A11590 | Flush & restore valve bank 4C — Weapons elevator No. 5 machinery room – port | 0d | 2026-09-24 | 2026-10-04 | A11580 | Pipefitting [58 h] |
| A11090 | Hydro test pipe spool group 1B — Weapons elevator No. 4 machinery room – port | 0d | 2026-09-24 | 2026-10-01 | A11080 | Pipefitting [46 h] |
| A15380 | Flush & restore pipe spool group 1A — Ordnance staging area No. 1 | 0d | 2026-09-24 | 2026-09-29 | A15370 | Pipefitting [41 h] |
| A17420 | Flush & restore pipe spool group 7A — Aircraft tie-down locker No. 2 | 0d | 2026-09-25 | 2026-09-28 | A17410 | Pipefitting [33 h] |
| A04750 | Hydro test pipe spool group 1D — Catapult No. 3 machinery room | 0d | 2026-09-25 | 2026-10-09 | A04740 | Pipefitting [385 h] |
| A14530 | Flush & restore pipe spool group 4A — AIMD Composite repair shop | 0d | 2026-09-25 | 2026-10-01 | A14520 | Pipefitting [71 h] |
| A18250 | Hydro test pipe spool group 4A — Hangar bay divisional door No. 2 | 0d | 2026-09-26 | 2026-10-03 | A18240 | Pipefitting [115 h] |
| A16080 | Hydro test pipe spool group 2C — Hangar deck storeroom No. 1 | 0d | 2026-09-27 | 2026-10-08 | A16070 | Pipefitting [225 h] |
| A10260 | Hydro test drain riser 2A — Weapons elevator No. 3 machinery room – starboard | 0d | 2026-09-27 | 2026-10-06 | A10250 | Pipefitting [54 h] |
| A03480 | Flush & restore valve bank 6A — Aviation storeroom No. 1 | 0d | 2026-09-27 | 2026-09-30 | A03470 | Pipefitting [37 h] |
| A11530 | Flush & restore valve bank 8B — Weapons elevator No. 5 machinery room – port | 0d | 2026-09-28 | 2026-10-08 | A11520 FS+0.8d | Pipefitting [121 h] |
| A16650 | Hydro test pipe spool group 6A — Hangar Bay 2 | 0d | 2026-09-28 | 2026-10-10 | A16640 FS+2.4d | Pipefitting [173 h]; Rigging & Weight Handling [44 h] |
| A13170 | Hydro test valve bank 9A — AIMD Tire & wheel shop | 0d | 2026-09-28 | 2026-10-08 | A13160 FS+2.4d | Pipefitting [146 h] |
| A04140 | Flush & restore valve bank 4B — Aviation storeroom No. 3 | 0d | 2026-09-29 | 2026-10-06 | A04130 | Pipefitting [161 h] |
| A17570 | Hydro test pipe spool group 9A — Hangar Bay 3 (uptake bay) | 0d | 2026-09-29 | 2026-10-11 | A17560 | Pipefitting [92 h] |
| A13680 | Hydro test valve bank 6E — Boat davit machinery – starboard | 0d | 2026-09-29 | 2026-10-05 | A13670 SS+7.2d | Pipefitting [134 h] |
| A11260 | Flush & restore drain riser 4A — Aircraft elevator No. 3 machinery room | 0d | 2026-09-30 | 2026-10-02 | A11250 FS+2.4d | Pipefitting [22 h] |
| A09210 | Hydro test pipe spool group 9B — Weapons elevator No. 1 machinery room – port | 0d | 2026-09-30 | 2026-10-11 | A09200 | Pipefitting [83 h] |
| A08940 | Flush & restore valve bank 5D — Weapons elevator No. 1 machinery room – starboard | 0d | 2026-09-30 | 2026-10-06 | A08930 FS+0.8d | Pipefitting [86 h]; Rigging & Weight Handling [22 h] |
| A17850 | Flush & restore drain riser 7A — Hangar bay fire station No. 3 | 0d | 2026-10-01 | 2026-10-15 | A17840 | Pipefitting [93 h] |
| A11100 | Flush & restore pipe spool group 1B — Weapons elevator No. 4 machinery room – port | 0d | 2026-10-01 | 2026-10-09 | A11090 | Pipefitting [64 h] |
| A15620 | Flush & restore pipe spool group 1B — Hangar bay fire station No. 2 | 0d | 2026-10-02 | 2026-10-12 | A15610 | Pipefitting [87 h] |
| A19540 | Hydro test drain riser 8A — Hangar bay workshop No. 4 | 0d | 2026-10-03 | 2026-10-12 | A19530 FS+0.8d | Pipefitting [220 h] |
| A16030 | Flush & restore pipe spool group 8B (1-96-1-Q) | 0d | 2026-10-05 | 2026-10-13 | A16020 FS+0.8d | Pipefitting [142 h] |
| A13690 | Flush & restore valve bank 6E — Boat davit machinery – starboard | 0d | 2026-10-05 | 2026-10-18 | A13680 | Pipefitting [352 h] |
| A18260 | Flush & restore pipe spool group 4A — Hangar bay divisional door No. 2 | 0d | 2026-10-06 | 2026-10-14 | A18250 SS+2.4d | Pipefitting [143 h] |
| A10270 | Flush & restore drain riser 2A — Weapons elevator No. 3 machinery room – starboard | 0d | 2026-10-08 | 2026-10-14 | A10260 | Pipefitting [142 h] |
| A13180 | Flush & restore valve bank 9A — AIMD Tire & wheel shop | 0d | 2026-10-09 | 2026-10-20 | A13170 | Pipefitting [197 h] |
| A16090 | Flush & restore pipe spool group 2C — Hangar deck storeroom No. 1 | 0d | 2026-10-10 | 2026-10-17 | A16080 FS+2.4d | Pipefitting [68 h] |
| A16660 | Flush & restore pipe spool group 6A — Hangar Bay 2 | 0d | 2026-10-10 | 2026-10-21 | A16650 | Pipefitting [143 h] |
| A04760 | Flush & restore pipe spool group 1D — Catapult No. 3 machinery room | 0d | 2026-10-11 | 2026-10-19 | A04750 | Pipefitting [197 h] |
| A09220 | Flush & restore pipe spool group 9B — Weapons elevator No. 1 machinery room – port | 0d | 2026-10-13 | 2026-10-19 | A09210 | Pipefitting [53 h] |
| A17580 | Flush & restore pipe spool group 9A — Hangar Bay 3 (uptake bay) | 0d | 2026-10-13 | 2026-10-27 | A17570 FS-0.8d | Pipefitting [116 h] |
| A19550 | Flush & restore drain riser 8A — Hangar bay workshop No. 4 | 0d | 2026-10-14 | 2026-10-20 | A19540 FS+0.8d | Pipefitting [31 h]; Rigging & Weight Handling [8 h] |

| ID | WBS | Activity | Duration | Start | Finish | Predecessors | Complete | Remaining | Resources |
| --- | --- | --- | --- | --- | --- | --- | --- | --- | --- |
|  | 508 | **508 Insulation & Lagging** |  | 2026-07-29 | 2026-09-22 |  |  |  |  |
| A18710 |  | Strip lagging — lagging section 1B — Aircraft elevator No. 3 trunk | 0d | 2026-07-29 A | 2026-08-11 |  | 90% | 0d | Insulation & Lagging [112 h] |
| A05210 |  | Strip lagging — hull board field 9A — Gallery deck passage No. 2 | 0d | 2026-08-01 A | 2026-08-04 A |  | 100% |  | Insulation & Lagging [36 h] |
| A05250 |  | Strip lagging — lagging section 7A — Ready Room No. 2 | 0d | 2026-08-01 A | 2026-08-14 |  | 62% | 0d | Insulation & Lagging [116 h] |
| A18670 |  | Strip lagging — lagging section 1A — Aircraft elevator No. 3 trunk | 0d | 2026-08-03 A | 2026-08-16 |  | 51% | 0d | Insulation & Lagging [288 h] |
| A05220 |  | Asbestos survey — hull board field 9A — Gallery deck passage No. 2 | 0d | 2026-08-06 A | 2026-08-11 | A05210 | 70% | 0d | Insulation & Lagging [33 h] |
| A18720 |  | Asbestos survey — lagging section 1B — Aircraft elevator No. 3 trunk | 0d | 2026-08-11 | 2026-08-22 | A18710 |  |  | Insulation & Lagging [297 h] |
| A05230 |  | Re-insulate hull board field 9A — Gallery deck passage No. 2 | 0d | 2026-08-13 | 2026-08-26 | A05220 FS+0.8d |  |  | Insulation & Lagging [111 h] |
| A05260 |  | Asbestos survey — lagging section 7A — Ready Room No. 2 | 0d | 2026-08-17 | 2026-08-19 | A05250 |  |  | Insulation & Lagging [60 h] |
| A18680 |  | Asbestos survey — lagging section 1A — Aircraft elevator No. 3 trunk | 0d | 2026-08-19 | 2026-08-23 | A18670 |  |  | Insulation & Lagging [30 h] |
| A06200 |  | Strip lagging — lagging section 6B — Air wing offices | 0d | 2026-08-20 | 2026-08-27 |  |  |  | Insulation & Lagging [198 h] |
| A05800 |  | Strip lagging — hull board field 2A — Ready Room No. 5 | 0d | 2026-08-21 | 2026-08-28 |  |  |  | Insulation & Lagging [55 h] |
| A05270 |  | Re-insulate lagging section 7A — Ready Room No. 2 | 0d | 2026-08-21 | 2026-08-26 | A05260 FS+2.4d |  |  | Insulation & Lagging [82 h] |
| A18730 |  | Re-insulate lagging section 1B — Aircraft elevator No. 3 trunk | 0d | 2026-08-23 | 2026-08-27 | A18720 FS+2.4d |  |  | Insulation & Lagging [29 h] |
| A18690 |  | Re-insulate lagging section 1A — Aircraft elevator No. 3 trunk | 0d | 2026-08-26 | 2026-08-30 | A18680 |  |  | Insulation & Lagging [65 h] |
| A18740 |  | Sheathing & finish lagging section 1B — Aircraft elevator No. 3 trunk | 0d | 2026-08-27 | 2026-09-06 | A18730 |  |  | Insulation & Lagging [66 h] |
| A05280 |  | Sheathing & finish lagging section 7A — Ready Room No. 2 | 0d | 2026-08-27 | 2026-09-09 | A05270 FS+2.4d |  |  | Insulation & Lagging [72 h] |
| A05810 |  | Asbestos survey — hull board field 2A — Ready Room No. 5 | 0d | 2026-08-28 | 2026-09-07 | A05800 |  |  | Insulation & Lagging [83 h] |
| A05240 |  | Sheathing & finish hull board field 9A — Gallery deck passage No. 2 | 0d | 2026-08-28 | 2026-09-03 | A05230 FS+2.4d |  |  | Insulation & Lagging [69 h] |
| A06210 |  | Asbestos survey — lagging section 6B — Air wing offices | 0d | 2026-08-29 | 2026-09-02 | A06200 FS+0.8d |  |  | Insulation & Lagging [67 h] |
| A18700 |  | Sheathing & finish lagging section 1A — Aircraft elevator No. 3 trunk | 0d | 2026-09-01 | 2026-09-08 | A18690 FS+0.8d |  |  | Insulation & Lagging [139 h] |
| A06220 |  | Re-insulate lagging section 6B — Air wing offices | 0d | 2026-09-04 | 2026-09-07 | A06210 |  |  | Insulation & Lagging [59 h] |
| A06230 |  | Sheathing & finish lagging section 6B — Air wing offices | 0d | 2026-09-08 | 2026-09-20 | A06220 |  |  | Insulation & Lagging [334 h] |
| A05820 |  | Re-insulate hull board field 2A — Ready Room No. 5 | 0d | 2026-09-08 | 2026-09-11 | A05810 |  |  | Insulation & Lagging [40 h]; Rigging & Weight Handling [10 h] |
| A05830 |  | Sheathing & finish hull board field 2A — Ready Room No. 5 | 0d | 2026-09-11 | 2026-09-22 | A05820 SS+2.4d |  |  | Insulation & Lagging [81 h] |

| ID | WBS | Activity | Duration | Start | Finish | Predecessors | Complete | Remaining | Resources |
| --- | --- | --- | --- | --- | --- | --- | --- | --- | --- |
|  | 512 | **512 Ventilation & Uptakes** |  | 2026-07-27 | 2026-10-28 |  |  |  |  |
| A14590 |  | Survey & mark supply trunk 4B — Aviation supply storeroom No. 3 | 0d | 2026-07-27 A | 2026-08-03 A |  | 100% |  | Sheet Metal / HVAC [81 h] |
| A10000 |  | Survey & mark supply trunk 7C (02-136-1-Q) | 0d | 2026-07-29 A | 2026-08-02 A |  | 100% |  | Sheet Metal / HVAC [34 h] |
| A09640 |  | Survey & mark exhaust riser 9A — Sponson storeroom No. 3 | 0d | 2026-07-29 A | 2026-08-07 A |  | 100% |  | Sheet Metal / HVAC [105 h] |
| A04770 |  | Survey & mark exhaust riser 7A — Carrier Intelligence Center (CVIC) | 0d | 2026-07-29 A | 2026-08-12 |  | 80% | 0d | Sheet Metal / HVAC [108 h] |
| A06890 |  | Survey & mark vent branch 2B — Arresting gear engine room No. 3 | 0d | 2026-07-29 A | 2026-08-10 |  | 84% | 0d | Sheet Metal / HVAC [175 h] |
| A14260 |  | Survey & mark supply trunk 6A — Tool issue room No. 4 | 0d | 2026-07-31 A | 2026-08-09 A |  | 100% |  | Sheet Metal / HVAC [216 h]; Rigging & Weight Handling [54 h] |
| A10110 |  | Survey & mark supply trunk 8E — Aircraft elevator No. 2 machinery room | 0d | 2026-08-01 A | 2026-08-04 A |  | 100% |  | Sheet Metal / HVAC [18 h] |
| A17020 |  | Survey & mark exhaust riser 1A — Conflagration station No. 2 | 0d | 2026-08-02 A | 2026-08-08 A |  | 100% |  | Sheet Metal / HVAC [105 h] |
| A14600 |  | Remove & tag supply trunk 4B — Aviation supply storeroom No. 3 | 0d | 2026-08-03 A | 2026-08-07 A | A14590 FS+2.4d | 100% |  | Sheet Metal / HVAC [110 h] |
| A06140 |  | Survey & mark exhaust riser 9A — Air wing offices | 0d | 2026-08-03 A | 2026-08-06 A |  | 100% |  | Sheet Metal / HVAC [19 h] |
| A05100 |  | Survey & mark vent branch 2B — Ready Room No. 1 | 0d | 2026-08-03 A | 2026-08-11 |  | 54% | 0d | Sheet Metal / HVAC [108 h] |
| A10010 |  | Remove & tag supply trunk 7C (02-136-1-Q) | 0d | 2026-08-03 A | 2026-08-17 | A10000 FS+0.8d | 47% | 0d | Sheet Metal / HVAC [327 h] |
| A11710 |  | Survey & mark vent branch 3B — Ordnance ready service locker No. 8 | 0d | 2026-08-04 A | 2026-08-17 |  | 46% | 0d | Sheet Metal / HVAC [223 h] |
| A10120 |  | Remove & tag supply trunk 8E — Aircraft elevator No. 2 machinery room | 0d | 2026-08-05 A | 2026-08-07 A | A10110 | 100% |  | Sheet Metal / HVAC [27 h] |
| A11650 |  | Survey & mark supply trunk 4A — Ordnance ready service locker No. 8 | 0d | 2026-08-05 A | 2026-08-13 |  | 44% | 0d | Sheet Metal / HVAC [120 h] |
| A08110 |  | Survey & mark supply trunk 2A — Life raft stowage No. 1 | 0d | 2026-08-06 A | 2026-08-11 |  | 70% | 0d | Sheet Metal / HVAC [33 h] |
| A04950 |  | Survey & mark supply trunk 4A (03-140-0-C) | 0d | 2026-08-07 A | 2026-08-13 |  | 45% | 0d | Sheet Metal / HVAC [141 h] |
| A06150 |  | Remove & tag exhaust riser 9A — Air wing offices | 0d | 2026-08-07 A | 2026-08-16 | A06140 FS+2.4d | 27% | 0d | Sheet Metal / HVAC [77 h] |
| A10130 |  | Fab replacement duct — supply trunk 8E — Aircraft elevator No. 2 machinery room | 0d | 2026-08-08 A | 2026-08-11 | A10120 | 59% | 0d | Sheet Metal / HVAC [17 h] |
| A09650 |  | Remove & tag exhaust riser 9A — Sponson storeroom No. 3 | 0d | 2026-08-08 A | 2026-08-20 | A09640 | 11% | 0d | Sheet Metal / HVAC [301 h] |
| A09110 |  | Survey & mark supply trunk 9A — Weapons elevator No. 1 machinery room – port | 0d | 2026-08-09 A | 2026-08-12 |  | 27% | 0d | Sheet Metal / HVAC [26 h] |
| A14610 |  | Fab replacement duct — supply trunk 4B — Aviation supply storeroom No. 3 | 0d | 2026-08-09 A | 2026-08-14 | A14600 | 20% | 0d | Sheet Metal / HVAC [147 h] |
| A17030 |  | Remove & tag exhaust riser 1A — Conflagration station No. 2 | 0d | 2026-08-09 A | 2026-08-14 | A17020 | 9% | 0d | Sheet Metal / HVAC [34 h] |
| A12870 |  | Survey & mark exhaust riser 2A — Tool issue room No. 1 | 0d | 2026-08-09 A | 2026-08-20 |  | 4% | 0d | Sheet Metal / HVAC [354 h] |
| A14270 |  | Remove & tag supply trunk 6A — Tool issue room No. 4 | 0d | 2026-08-10 | 2026-08-19 | A14260 FS+0.8d |  |  | Sheet Metal / HVAC [130 h] |
| A05440 |  | Survey & mark supply trunk 2C — Ready Room No. 3 | 0d | 2026-08-10 | 2026-08-13 |  |  |  | Sheet Metal / HVAC [46 h] |
| A10140 |  | Install supply trunk 8E — Aircraft elevator No. 2 machinery room | 0d | 2026-08-11 | 2026-08-16 | A10130 FS+0.8d |  |  | Sheet Metal / HVAC [33 h] |
| A06900 |  | Remove & tag vent branch 2B — Arresting gear engine room No. 3 | 0d | 2026-08-11 | 2026-08-22 | A06890 FS+0.8d |  |  | Sheet Metal / HVAC [90 h] |
| A09430 |  | Survey & mark vent branch 1B — Weapons elevator No. 2 machinery room – starboard | 0d | 2026-08-12 | 2026-08-21 |  |  |  | Sheet Metal / HVAC [175 h] |
| A09120 |  | Remove & tag supply trunk 9A — Weapons elevator No. 1 machinery room – port | 0d | 2026-08-13 | 2026-08-17 | A09110 FS+0.8d |  |  | Sheet Metal / HVAC [35 h] |
| A04780 |  | Remove & tag exhaust riser 7A — Carrier Intelligence Center (CVIC) | 0d | 2026-08-13 | 2026-08-19 | A04770 FS+0.8d |  |  | Sheet Metal / HVAC [78 h] |
| A08120 |  | Remove & tag supply trunk 2A — Life raft stowage No. 1 | 0d | 2026-08-14 | 2026-08-18 | A08110 FS+0.8d |  |  | Sheet Metal / HVAC [91 h] |
| A14420 |  | Survey & mark vent branch 5B — Flammable liquids storeroom No. 3 | 0d | 2026-08-14 | 2026-08-23 |  |  |  | Sheet Metal / HVAC [208 h] |
| A05110 |  | Remove & tag vent branch 2B — Ready Room No. 1 | 0d | 2026-08-14 | 2026-08-17 | A05100 FS+2.4d |  |  | Sheet Metal / HVAC [16 h] |
| A14620 |  | Install supply trunk 4B — Aviation supply storeroom No. 3 | 0d | 2026-08-15 | 2026-08-19 | A14610 FS+0.8d |  |  | Sheet Metal / HVAC [74 h] |
| A05450 |  | Remove & tag supply trunk 2C — Ready Room No. 3 | 0d | 2026-08-15 | 2026-08-20 | A05440 FS+2.4d |  |  | Sheet Metal / HVAC [105 h]; Rigging & Weight Handling [27 h] |
| A09050 |  | Survey & mark vent branch 7B — Hose reel locker No. 2 | 0d | 2026-08-16 | 2026-08-22 |  |  |  | Sheet Metal / HVAC [150 h] |
| A17040 |  | Fab replacement duct — exhaust riser 1A — Conflagration station No. 2 | 0d | 2026-08-16 | 2026-08-19 | A17030 |  |  | Sheet Metal / HVAC [24 h] |
| A11660 |  | Remove & tag supply trunk 4A — Ordnance ready service locker No. 8 | 0d | 2026-08-16 | 2026-08-21 | A11650 SS+2.4d |  |  | Sheet Metal / HVAC [81 h] |
| A04960 |  | Remove & tag supply trunk 4A (03-140-0-C) | 0d | 2026-08-16 | 2026-08-20 | A04950 FS+0.8d |  |  | Sheet Metal / HVAC [67 h] |
| A06160 |  | Fab replacement duct — exhaust riser 9A — Air wing offices | 0d | 2026-08-17 | 2026-08-23 | A06150 |  |  | Sheet Metal / HVAC [41 h] |
| A10150 |  | Duct leak test supply trunk 8E — Aircraft elevator No. 2 machinery room | 0d | 2026-08-17 | 2026-08-25 | A10140 FS+2.4d |  |  | Sheet Metal / HVAC [160 h] |
| A09130 |  | Fab replacement duct — supply trunk 9A — Weapons elevator No. 1 machinery room – port | 0d | 2026-08-18 | 2026-08-25 | A09120 FS+0.8d |  |  | Sheet Metal / HVAC [156 h] |
| A05120 |  | Fab replacement duct — vent branch 2B — Ready Room No. 1 | 0d | 2026-08-18 | 2026-08-24 | A05110 FS+0.8d |  |  | Sheet Metal / HVAC [103 h] |
| A11870 |  | Survey & mark exhaust riser 7C — Weapons elevator No. 6 machinery room – starboard | 0d | 2026-08-18 | 2026-08-20 |  |  |  | Sheet Metal / HVAC [52 h] |
| A10020 |  | Fab replacement duct — supply trunk 7C (02-136-1-Q) | 0d | 2026-08-19 | 2026-08-23 | A10010 |  |  | Sheet Metal / HVAC [27 h] |
| A04790 |  | Fab replacement duct — exhaust riser 7A — Carrier Intelligence Center (CVIC) | 0d | 2026-08-19 | 2026-09-02 | A04780 FS+2.4d |  |  | Sheet Metal / HVAC [81 h] |
| A17050 |  | Install exhaust riser 1A — Conflagration station No. 2 | 0d | 2026-08-20 | 2026-08-30 | A17040 |  |  | Sheet Metal / HVAC [243 h] |
| A11720 |  | Remove & tag vent branch 3B — Ordnance ready service locker No. 8 | 0d | 2026-08-20 | 2026-09-01 | A11710 |  |  | Sheet Metal / HVAC [82 h] |
| A08130 |  | Fab replacement duct — supply trunk 2A — Life raft stowage No. 1 | 0d | 2026-08-20 | 2026-08-31 | A08120 FS+2.4d |  |  | Sheet Metal / HVAC [381 h] |
| A14630 |  | Duct leak test supply trunk 4B — Aviation supply storeroom No. 3 | 0d | 2026-08-20 | 2026-08-30 | A14620 SS+4.8d |  |  | Sheet Metal / HVAC [69 h] |
| A05460 |  | Fab replacement duct — supply trunk 2C — Ready Room No. 3 | 0d | 2026-08-20 | 2026-08-30 | A05450 FS+0.8d |  |  | Sheet Metal / HVAC [168 h] |
| A04300 |  | Survey & mark supply trunk 4B — Jet blast deflector No. 1 machinery room | 0d | 2026-08-21 | 2026-08-24 |  |  |  | Sheet Metal / HVAC [98 h] |
| A11880 |  | Remove & tag exhaust riser 7C — Weapons elevator No. 6 machinery room – starboard | 0d | 2026-08-21 | 2026-09-02 | A11870 FS+2.4d |  |  | Sheet Metal / HVAC [60 h]; Rigging & Weight Handling [15 h] |
| A14280 |  | Fab replacement duct — supply trunk 6A — Tool issue room No. 4 | 0d | 2026-08-22 | 2026-08-26 | A14270 FS+2.4d |  |  | Sheet Metal / HVAC [60 h] |
| A12880 |  | Remove & tag exhaust riser 2A — Tool issue room No. 1 | 0d | 2026-08-22 | 2026-08-27 | A12870 |  |  | Sheet Metal / HVAC [32 h] |
| A09060 |  | Remove & tag vent branch 7B — Hose reel locker No. 2 | 0d | 2026-08-22 | 2026-08-28 | A09050 |  |  | Sheet Metal / HVAC [33 h] |
| A11670 |  | Fab replacement duct — supply trunk 4A — Ordnance ready service locker No. 8 | 0d | 2026-08-22 | 2026-08-25 | A11660 |  |  | Sheet Metal / HVAC [22 h] |
| A04970 |  | Fab replacement duct — supply trunk 4A (03-140-0-C) | 0d | 2026-08-22 | 2026-09-03 | A04960 |  |  | Sheet Metal / HVAC [350 h] |
| A09660 |  | Fab replacement duct — exhaust riser 9A — Sponson storeroom No. 3 | 0d | 2026-08-22 | 2026-09-03 | A09650 FS-1.6d |  |  | Sheet Metal / HVAC [171 h] |
| A09440 |  | Remove & tag vent branch 1B — Weapons elevator No. 2 machinery room – starboard | 0d | 2026-08-23 | 2026-08-30 | A09430 |  |  | Sheet Metal / HVAC [62 h] |
| A06910 |  | Fab replacement duct — vent branch 2B — Arresting gear engine room No. 3 | 0d | 2026-08-23 | 2026-09-05 | A06900 |  |  | Sheet Metal / HVAC [94 h] |
| A10030 |  | Install supply trunk 7C (02-136-1-Q) | 0d | 2026-08-24 | 2026-09-03 | A10020 FS+2.4d |  |  | Sheet Metal / HVAC [254 h] |
| A06170 |  | Install exhaust riser 9A — Air wing offices | 0d | 2026-08-25 | 2026-09-04 | A06160 |  |  | Sheet Metal / HVAC [221 h] |
| A05130 |  | Install vent branch 2B — Ready Room No. 1 | 0d | 2026-08-25 | 2026-09-01 | A05120 |  |  | Sheet Metal / HVAC [58 h] |
| A14430 |  | Remove & tag vent branch 5B — Flammable liquids storeroom No. 3 | 0d | 2026-08-25 | 2026-09-07 | A14420 |  |  | Sheet Metal / HVAC [220 h] |
| A10160 |  | Close-out & QA supply trunk 8E — Aircraft elevator No. 2 machinery room | 0d | 2026-08-26 | 2026-08-30 | A10150 SS+7.2d |  |  | Sheet Metal / HVAC [79 h] |
| A04310 |  | Remove & tag supply trunk 4B — Jet blast deflector No. 1 machinery room | 0d | 2026-08-26 | 2026-09-05 | A04300 |  |  | Sheet Metal / HVAC [99 h]; Rigging & Weight Handling [25 h] |
| A09140 |  | Install supply trunk 9A — Weapons elevator No. 1 machinery room – port | 0d | 2026-08-27 | 2026-09-06 | A09130 FS+2.4d |  |  | Sheet Metal / HVAC [69 h] |

| ID | Activity | Duration | Start | Finish | Predecessors | Resources |
| --- | --- | --- | --- | --- | --- | --- |
| A11680 | Install supply trunk 4A — Ordnance ready service locker No. 8 | 0d | 2026-08-27 | 2026-08-30 | A11670 FS+0.8d | Sheet Metal / HVAC [40 h] |
| A14290 | Install supply trunk 6A — Tool issue room No. 4 | 0d | 2026-08-28 | 2026-09-09 | A14280 | Sheet Metal / HVAC [296 h] |
| A12890 | Fab replacement duct — exhaust riser 2A — Tool issue room No. 1 | 0d | 2026-08-29 | 2026-09-03 | A12880 FS+2.4d | Sheet Metal / HVAC [108 h] |
| A11690 | Duct leak test supply trunk 4A — Ordnance ready service locker No. 8 | 0d | 2026-08-30 | 2026-09-10 | A11680 | Sheet Metal / HVAC [182 h] |
| A09070 | Fab replacement duct — vent branch 7B — Hose reel locker No. 2 | 0d | 2026-08-30 | 2026-09-09 | A09060 | Sheet Metal / HVAC [106 h] |
| A05470 | Install supply trunk 2C — Ready Room No. 3 | 0d | 2026-08-31 | 2026-09-11 | A05460 | Sheet Metal / HVAC [317 h] |
| A08140 | Install supply trunk 2A — Life raft stowage No. 1 | 0d | 2026-09-01 | 2026-09-10 | A08130 | Sheet Metal / HVAC [107 h] |
| A14640 | Close-out & QA supply trunk 4B — Aviation supply storeroom No. 3 | 0d | 2026-09-01 | 2026-09-12 | A14630 | Sheet Metal / HVAC [89 h] |
| A17060 | Duct leak test exhaust riser 1A — Conflagration station No. 2 | 0d | 2026-09-01 | 2026-09-06 | A17050 | Sheet Metal / HVAC [74 h] |
| A09450 | Fab replacement duct — vent branch 1B — Weapons elevator No. 2 machinery room – starboard | 0d | 2026-09-01 | 2026-09-14 | A09440 | Sheet Metal / HVAC [184 h] |
| A11730 | Fab replacement duct — vent branch 3B — Ordnance ready service locker No. 8 | 0d | 2026-09-01 | 2026-09-06 | A11720 | Sheet Metal / HVAC [80 h] |
| A05140 | Duct leak test vent branch 2B — Ready Room No. 1 | 0d | 2026-09-02 | 2026-09-14 | A05130 FS+2.4d | Sheet Metal / HVAC [184 h] |
| A11890 | Fab replacement duct — exhaust riser 7C — Weapons elevator No. 6 machinery room – starboard | 0d | 2026-09-03 | 2026-09-09 | A11880 | Sheet Metal / HVAC [235 h] |
| A10040 | Duct leak test supply trunk 7C (02-136-1-Q) | 0d | 2026-09-03 | 2026-09-08 | A10030 SS+2.4d | Sheet Metal / HVAC [134 h] |
| A04980 | Install supply trunk 4A (03-140-0-C) | 0d | 2026-09-04 | 2026-09-14 | A04970 | Sheet Metal / HVAC [338 h] |
| A04800 | Install exhaust riser 7A — Carrier Intelligence Center (CVIC) | 0d | 2026-09-04 | 2026-09-17 | A04790 | Sheet Metal / HVAC [88 h]; Rigging & Weight Handling [22 h] |
| A09670 | Install exhaust riser 9A — Sponson storeroom No. 3 | 0d | 2026-09-05 | 2026-09-16 | A09660 | Sheet Metal / HVAC [103 h] |
| A12900 | Install exhaust riser 2A — Tool issue room No. 1 | 0d | 2026-09-05 | 2026-09-16 | A12890 | Sheet Metal / HVAC [90 h] |
| A06180 | Duct leak test exhaust riser 9A — Air wing offices | 0d | 2026-09-06 | 2026-09-17 | A06170 | Sheet Metal / HVAC [94 h] |
| A06920 | Install vent branch 2B — Arresting gear engine room No. 3 | 0d | 2026-09-06 | 2026-09-17 | A06910 | Sheet Metal / HVAC [367 h] |
| A17070 | Close-out & QA exhaust riser 1A — Conflagration station No. 2 | 0d | 2026-09-06 | 2026-09-09 | A17060 FS-1.6d | Sheet Metal / HVAC [22 h] |
| A04320 | Fab replacement duct — supply trunk 4B — Jet blast deflector No. 1 machinery room | 0d | 2026-09-07 | 2026-09-15 | A04310 FS+2.4d | Sheet Metal / HVAC [61 h] |
| A14440 | Fab replacement duct — vent branch 5B — Flammable liquids storeroom No. 3 | 0d | 2026-09-07 | 2026-09-21 | A14430 | Sheet Metal / HVAC [140 h]; Rigging & Weight Handling [35 h] |
| A10050 | Close-out & QA supply trunk 7C (02-136-1-Q) | 0d | 2026-09-08 | 2026-09-10 | A10040 | Sheet Metal / HVAC [20 h] |
| A09150 | Duct leak test supply trunk 9A — Weapons elevator No. 1 machinery room – port | 0d | 2026-09-08 | 2026-09-11 | A09140 FS+2.4d | Sheet Metal / HVAC [42 h] |
| A11740 | Install vent branch 3B — Ordnance ready service locker No. 8 | 0d | 2026-09-09 | 2026-09-11 | A11730 | Sheet Metal / HVAC [60 h]; Rigging & Weight Handling [15 h] |
| A14300 | Duct leak test supply trunk 6A — Tool issue room No. 4 | 0d | 2026-09-10 | 2026-09-22 | A14290 | Sheet Metal / HVAC [227 h] |
| A09080 | Install vent branch 7B — Hose reel locker No. 2 | 0d | 2026-09-11 | 2026-09-24 | A09070 FS+2.4d | Sheet Metal / HVAC [187 h] |
| A08150 | Duct leak test supply trunk 2A — Life raft stowage No. 1 | 0d | 2026-09-11 | 2026-09-19 | A08140 FS+0.8d | Sheet Metal / HVAC [62 h] |
| A11700 | Close-out & QA supply trunk 4A — Ordnance ready service locker No. 8 | 0d | 2026-09-12 | 2026-09-17 | A11690 | Sheet Metal / HVAC [29 h] |
| A11750 | Duct leak test vent branch 3B — Ordnance ready service locker No. 8 | 0d | 2026-09-12 | 2026-09-19 | A11740 | Sheet Metal / HVAC [51 h] |
| A11900 | Install exhaust riser 7C — Weapons elevator No. 6 machinery room – starboard | 0d | 2026-09-12 | 2026-09-16 | A11890 | Sheet Metal / HVAC [66 h] |
| A05480 | Duct leak test supply trunk 2C — Ready Room No. 3 | 0d | 2026-09-13 | 2026-09-26 | A05470 FS+2.4d | Sheet Metal / HVAC [79 h] |
| A09160 | Close-out & QA supply trunk 9A — Weapons elevator No. 1 machinery room – port | 0d | 2026-09-13 | 2026-09-19 | A09150 | Sheet Metal / HVAC [184 h] |
| A05150 | Close-out & QA vent branch 2B — Ready Room No. 1 | 0d | 2026-09-14 | 2026-09-23 | A05140 | Sheet Metal / HVAC [143 h] |
| A04330 | Install supply trunk 4B — Jet blast deflector No. 1 machinery room | 0d | 2026-09-16 | 2026-09-18 | A04320 SS+2.4d | Sheet Metal / HVAC [19 h] |
| A04990 | Duct leak test supply trunk 4A (03-140-0-C) | 0d | 2026-09-16 | 2026-09-24 | A04980 FS+2.4d | Sheet Metal / HVAC [163 h] |
| A09680 | Duct leak test exhaust riser 9A — Sponson storeroom No. 3 | 0d | 2026-09-16 | 2026-09-21 | A09670 | Sheet Metal / HVAC [33 h] |
| A09460 | Install vent branch 1B — Weapons elevator No. 2 machinery room – starboard | 0d | 2026-09-16 | 2026-09-30 | A09450 | Sheet Metal / HVAC [423 h] |
| A06190 | Close-out & QA exhaust riser 9A — Air wing offices | 0d | 2026-09-18 | 2026-09-23 | A06180 FS+0.8d | Sheet Metal / HVAC [42 h] |
| A12910 | Duct leak test exhaust riser 2A — Tool issue room No. 1 | 0d | 2026-09-18 | 2026-10-01 | A12900 | Sheet Metal / HVAC [318 h] |
| A11910 | Duct leak test exhaust riser 7C — Weapons elevator No. 6 machinery room – starboard | 0d | 2026-09-18 | 2026-09-23 | A11900 FS+0.8d | Sheet Metal / HVAC [129 h] |
| A04810 | Duct leak test exhaust riser 7A — Carrier Intelligence Center (CVIC) | 0d | 2026-09-19 | 2026-09-28 | A04800 | Sheet Metal / HVAC [78 h] |
| A08160 | Close-out & QA supply trunk 2A — Life raft stowage No. 1 | 0d | 2026-09-20 | 2026-10-02 | A08150 | Sheet Metal / HVAC [230 h] |
| A04340 | Duct leak test supply trunk 4B — Jet blast deflector No. 1 machinery room | 0d | 2026-09-20 | 2026-09-28 | A04330 | Sheet Metal / HVAC [274 h] |
| A06930 | Duct leak test vent branch 2B — Arresting gear engine room No. 3 | 0d | 2026-09-20 | 2026-10-04 | A06920 | Sheet Metal / HVAC [131 h]; Rigging & Weight Handling [33 h] |
| A09690 | Close-out & QA exhaust riser 9A — Sponson storeroom No. 3 | 0d | 2026-09-21 | 2026-09-29 | A09680 | Sheet Metal / HVAC [53 h] |
| A14450 | Install vent branch 5B — Flammable liquids storeroom No. 3 | 0d | 2026-09-22 | 2026-09-26 | A14440 | Sheet Metal / HVAC [61 h] |
| A11760 | Close-out & QA vent branch 3B — Ordnance ready service locker No. 8 | 0d | 2026-09-22 | 2026-09-25 | A11750 FS+0.8d | Sheet Metal / HVAC [21 h] |
| A14310 | Close-out & QA supply trunk 6A — Tool issue room No. 4 | 0d | 2026-09-22 | 2026-09-27 | A14300 | Sheet Metal / HVAC [162 h] |
| A11920 | Close-out & QA exhaust riser 7C — Weapons elevator No. 6 machinery room – starboard | 0d | 2026-09-24 | 2026-10-04 | A11910 FS+0.8d | Sheet Metal / HVAC [165 h] |
| A09090 | Duct leak test vent branch 7B — Hose reel locker No. 2 | 0d | 2026-09-25 | 2026-10-06 | A09080 FS+2.4d | Sheet Metal / HVAC [115 h]; Rigging & Weight Handling [29 h] |
| A05000 | Close-out & QA supply trunk 4A (03-140-0-C) | 0d | 2026-09-26 | 2026-09-30 | A04990 FS+2.4d | Sheet Metal / HVAC [50 h] |
| A05490 | Close-out & QA supply trunk 2C — Ready Room No. 3 | 0d | 2026-09-27 | 2026-10-10 | A05480 | Sheet Metal / HVAC [199 h] |
| A04350 | Close-out & QA supply trunk 4B — Jet blast deflector No. 1 machinery room | 0d | 2026-09-28 | 2026-10-05 | A04340 | Sheet Metal / HVAC [50 h] |
| A14460 | Duct leak test vent branch 5B — Flammable liquids storeroom No. 3 | 0d | 2026-09-28 | 2026-10-02 | A14450 | Sheet Metal / HVAC [27 h] |
| A04820 | Close-out & QA exhaust riser 7A — Carrier Intelligence Center (CVIC) | 0d | 2026-09-29 | 2026-10-05 | A04810 | Sheet Metal / HVAC [95 h] |
| A09470 | Duct leak test vent branch 1B — Weapons elevator No. 2 machinery room – starboard | 0d | 2026-09-30 | 2026-10-12 | A09460 | Sheet Metal / HVAC [167 h] |
| A14470 | Close-out & QA vent branch 5B — Flammable liquids storeroom No. 3 | 0d | 2026-10-02 | 2026-10-14 | A14460 FS+0.8d | Sheet Metal / HVAC [385 h] |
| A12920 | Close-out & QA exhaust riser 2A — Tool issue room No. 1 | 0d | 2026-10-02 | 2026-10-08 | A12910 FS+2.4d | Sheet Metal / HVAC [135 h] |
| A06940 | Close-out & QA vent branch 2B — Arresting gear engine room No. 3 | 0d | 2026-10-06 | 2026-10-15 | A06930 | Sheet Metal / HVAC [59 h] |
| A09100 | Close-out & QA vent branch 7B — Hose reel locker No. 2 | 0d | 2026-10-07 | 2026-10-17 | A09090 FS+0.8d | Sheet Metal / HVAC [75 h] |
| A09480 | Close-out & QA vent branch 1B — Weapons elevator No. 2 machinery room – starboard | 0d | 2026-10-15 | 2026-10-28 | A09470 SS+4.8d | Sheet Metal / HVAC [343 h] |

| ID | WBS | Activity | Duration | Start | Finish | Predecessors | Complete | Remaining | Resources |
| --- | --- | --- | --- | --- | --- | --- | --- | --- | --- |
|  | 560 | **560 Aux Machinery** |  | 2026-07-27 | 2026-10-20 |  |  |  |  |
| A08390 |  | Open & inspect compressor 6A — Aircraft elevator No. 1 machinery room | 0d | 2026-07-27 A | 2026-08-07 A |  | 100% |  | Mechanical [251 h] |
| A05650 |  | Open & inspect compressor 8A — Air wing ordnance shop | 0d | 2026-07-28 A | 2026-08-04 A |  | 100% |  | Mechanical [80 h] |
| A03840 |  | Open & inspect compressor 2A — Squadron ready storeroom No. 2 | 0d | 2026-07-29 A | 2026-08-07 A |  | 100% |  | Mechanical [149 h] |
| A13700 |  | Open & inspect motor group 5A — Boat davit machinery – port | 0d | 2026-07-30 A | 2026-08-07 A |  | 100% |  | Mechanical [124 h] |
| A15830 |  | Open & inspect pump set 6C — Hangar bay workshop No. 1 | 0d | 2026-08-01 A | 2026-08-03 A |  | 100% |  | Mechanical [68 h] |
| A03940 |  | Open & inspect compressor 8C — Squadron ready storeroom No. 2 | 0d | 2026-08-01 A | 2026-08-13 |  | 74% | 0d | Mechanical [140 h] |
| A13390 |  | Open & inspect motor group 3A — AIMD Airframes shop | 0d | 2026-08-01 A | 2026-08-11 |  | 86% | 0d | Mechanical [76 h] |
| A09490 |  | Open & inspect pump set 3C — Weapons elevator No. 2 machinery room – starboard | 0d | 2026-08-01 A | 2026-08-09 A |  | 100% |  | Mechanical [62 h] |
| A18990 |  | Open & inspect motor group 6C — Hangar bay fire station No. 5 | 0d | 2026-08-01 A | 2026-08-08 A |  | 100% |  | Mechanical [50 h] |
| A12980 |  | Open & inspect pump set 8B — AIMD Avionics repair shop | 0d | 2026-08-02 A | 2026-08-12 |  | 69% | 0d | Mechanical [112 h]; Rigging & Weight Handling [29 h] |
| A02980 |  | Open & inspect motor group 6A — Avionics shop No. 1 | 0d | 2026-08-03 A | 2026-08-12 |  | 74% | 0d | Mechanical [269 h] |
| A14010 |  | Open & inspect pump set 3B — AIMD Power plants shop | 0d | 2026-08-04 A | 2026-08-06 A |  | 100% |  | Mechanical [40 h] |
| A03330 |  | Open & inspect pump set 1D — Avionics shop No. 2 | 0d | 2026-08-04 A | 2026-08-15 |  | 52% | 0d | Mechanical [66 h] |
| A03080 |  | Open & inspect pump set 6C — Avionics shop No. 1 | 0d | 2026-08-04 A | 2026-08-06 A |  | 100% |  | Mechanical [15 h] |
| A10060 |  | Open & inspect pump set 1D — Aircraft elevator No. 2 machinery room | 0d | 2026-08-05 A | 2026-08-19 |  | 32% | 0d | Mechanical [320 h] |
| A19450 |  | Open & inspect motor group 5D — Ordnance staging area No. 7 | 0d | 2026-08-05 A | 2026-08-09 A |  | 100% |  | Mechanical [51 h] |
| A13440 |  | Open & inspect compressor 5A — Boat davit machinery – starboard | 0d | 2026-08-05 A | 2026-08-16 |  | 33% | 0d | Mechanical [135 h] |
| A15840 |  | Remove pump set 6C for shop — Hangar bay workshop No. 1 | 0d | 2026-08-05 A | 2026-08-08 A | A15830 FS+2.4d | 100% |  | Mechanical [21 h] |
| A04660 |  | Open & inspect compressor 4C — Catapult No. 3 machinery room | 0d | 2026-08-05 A | 2026-08-17 |  | 38% | 0d | Mechanical [399 h] |
| A05660 |  | Remove compressor 8A for shop — Air wing ordnance shop | 0d | 2026-08-06 A | 2026-08-09 A | A05650 | 100% |  | Mechanical [40 h] |
| A16560 |  | Open & inspect pump set 6C — Hangar bay divisional door No. 1 | 0d | 2026-08-06 A | 2026-08-10 |  | 84% | 0d | Mechanical [31 h] |
| A17080 |  | Open & inspect pump set 5A — Hangar Bay 2 (elevator No. 2 bay) | 0d | 2026-08-06 A | 2026-08-16 |  | 37% | 0d | Mechanical [83 h] |
| A11430 |  | Open & inspect motor group 9A — Weapons elevator No. 5 machinery room – port | 0d | 2026-08-06 A | 2026-08-18 |  | 31% | 0d | Mechanical [422 h] |
| A14750 |  | Open & inspect motor group 5C — AIMD Survival equipment shop | 0d | 2026-08-06 A | 2026-08-11 |  | 58% | 0d | Mechanical [92 h] |
| A03850 |  | Remove compressor 2A for shop — Squadron ready storeroom No. 2 | 0d | 2026-08-07 A | 2026-08-20 | A03840 | 17% | 0d | Mechanical [100 h] |
| A18270 |  | Open & inspect compressor 9B — Hangar bay divisional door No. 2 | 0d | 2026-08-08 A | 2026-08-15 |  | 24% | 0d | Mechanical [226 h] |
| A03890 |  | Open & inspect pump set 7B — Squadron ready storeroom No. 2 | 0d | 2026-08-08 A | 2026-08-14 |  | 23% | 0d | Mechanical [35 h] |
| A13710 |  | Remove motor group 5A for shop — Boat davit machinery – port | 0d | 2026-08-08 A | 2026-08-10 | A13700 SS+4.8d | 63% | 0d | Mechanical [19 h] |
| A14020 |  | Remove pump set 3B for shop — AIMD Power plants shop | 0d | 2026-08-08 A | 2026-08-19 | A14010 | 9% | 0d | Mechanical [381 h] |
| A08400 |  | Remove compressor 6A for shop — Aircraft elevator No. 1 machinery room | 0d | 2026-08-08 A | 2026-08-12 | A08390 | 20% | 0d | Mechanical [90 h] |
| A03090 |  | Remove pump set 6C for shop — Avionics shop No. 1 | 0d | 2026-08-09 A | 2026-08-12 | A03080 FS+2.4d | 23% | 0d | Mechanical [99 h]; Rigging & Weight Handling [25 h] |
| A19000 |  | Remove motor group 6C for shop — Hangar bay fire station No. 5 | 0d | 2026-08-09 A | 2026-08-16 | A18990 | 8% | 0d | Mechanical [48 h] |
| A15850 |  | Shop overhaul — pump set 6C — Hangar bay workshop No. 1 | 0d | 2026-08-09 A | 2026-08-21 | A15840 FS+2.4d | 4% | 0d | Mechanical [225 h]; Rigging & Weight Handling [57 h] |
| A16970 |  | Open & inspect motor group 1A — Hangar deck storeroom No. 2 | 0d | 2026-08-10 A | 2026-08-13 |  | 4% | 0d | Mechanical [77 h] |
| A11000 |  | Open & inspect pump set 1A (02-176-4-Q) | 0d | 2026-08-10 | 2026-08-22 |  |  |  | Mechanical [201 h] |
| A18320 |  | Open & inspect compressor 2C — Hangar bay divisional door No. 2 | 0d | 2026-08-10 | 2026-08-16 |  |  |  | Mechanical [95 h] |
| A04250 |  | Open & inspect pump set 6A — Jet blast deflector No. 1 machinery room | 0d | 2026-08-10 | 2026-08-16 |  |  |  | Mechanical [81 h] |
| A16570 |  | Remove pump set 6C for shop — Hangar bay divisional door No. 1 | 0d | 2026-08-11 | 2026-08-24 | A16560 |  |  | Mechanical [326 h] |
| A16410 |  | Open & inspect motor group 7B — Aircraft tie-down locker No. 1 | 0d | 2026-08-11 | 2026-08-15 |  |  |  | Mechanical [23 h] |
| A09500 |  | Remove pump set 3C for shop — Weapons elevator No. 2 machinery room – starboard | 0d | 2026-08-11 | 2026-08-13 | A09490 |  |  | Mechanical [36 h] |
| A18940 |  | Open & inspect pump set 1B — Hangar bay fire station No. 5 | 0d | 2026-08-11 | 2026-08-25 |  |  |  | Mechanical [214 h] |
| A19460 |  | Remove motor group 5D for shop — Ordnance staging area No. 7 | 0d | 2026-08-11 | 2026-08-14 | A19450 |  |  | Mechanical [25 h] |
| A15630 |  | Open & inspect pump set 4C — Hangar bay fire station No. 2 | 0d | 2026-08-11 | 2026-08-14 |  |  |  | Mechanical [54 h] |
| A56880 |  | Open & inspect — Emergency Diesel Room (fwd) | 0d | 2026-08-11 | 2026-08-17 |  |  |  | Mechanical [142 h] |
| A05670 |  | Shop overhaul — compressor 8A — Air wing ordnance shop | 0d | 2026-08-12 | 2026-08-25 | A05660 |  |  | Mechanical [103 h] |
| A13400 |  | Remove motor group 3A for shop — AIMD Airframes shop | 0d | 2026-08-12 | 2026-08-21 | A13390 |  |  | Mechanical [220 h] |
| A13590 |  | Open & inspect compressor 6D — Boat davit machinery – starboard | 0d | 2026-08-12 | 2026-08-23 |  |  |  | Mechanical [69 h] |
| A11770 |  | Open & inspect compressor 6A — Weapons elevator No. 6 machinery room – starboard | 0d | 2026-08-12 | 2026-08-19 |  |  |  | Mechanical [173 h] |
| A16460 |  | Open & inspect motor group 5A — Hangar bay divisional door No. 1 | 0d | 2026-08-12 | 2026-08-15 |  |  |  | Mechanical [21 h] |
| A13720 |  | Shop overhaul — motor group 5A — Boat davit machinery – port | 0d | 2026-08-12 | 2026-08-26 | A13710 FS+2.4d |  |  | Mechanical [106 h] |
| A18470 |  | Open & inspect motor group 9A — Hangar Bay 3 | 0d | 2026-08-13 | 2026-08-19 |  |  |  | Mechanical [35 h] |
| A18520 |  | Open & inspect pump set 4B — Hangar Bay 3 | 0d | 2026-08-13 | 2026-08-20 |  |  |  | Mechanical [135 h] |
| A03100 |  | Shop overhaul — pump set 6C — Avionics shop No. 1 | 0d | 2026-08-13 | 2026-08-23 | A03090 |  |  | Mechanical [167 h] |
| A13030 |  | Open & inspect motor group 2C — AIMD Avionics repair shop | 0d | 2026-08-13 | 2026-08-20 |  |  |  | Mechanical [136 h] |
| A16980 |  | Remove motor group 1A for shop — Hangar deck storeroom No. 2 | 0d | 2026-08-13 | 2026-08-18 | A16970 |  |  | Mechanical [33 h] |
| A14760 |  | Remove motor group 5C for shop — AIMD Survival equipment shop | 0d | 2026-08-13 | 2026-08-18 | A14750 FS+2.4d |  |  | Mechanical [172 h] |
| A10630 |  | Open & inspect pump set 8B (02-152-4-Q) | 0d | 2026-08-13 | 2026-08-18 |  |  |  | Mechanical [102 h] |
| A08410 |  | Shop overhaul — compressor 6A — Aircraft elevator No. 1 machinery room | 0d | 2026-08-13 | 2026-08-24 | A08400 FS+0.8d |  |  | Mechanical [86 h] |
| A06740 |  | Open & inspect motor group 5A — Arresting gear engine room No. 2 | 0d | 2026-08-14 | 2026-08-17 |  |  |  | Mechanical [49 h] |
| A03950 |  | Remove compressor 8C for shop — Squadron ready storeroom No. 2 | 0d | 2026-08-14 | 2026-08-17 | A03940 |  |  | Mechanical [20 h]; Rigging & Weight Handling [5 h] |
| A02990 |  | Remove motor group 6A for shop — Avionics shop No. 1 | 0d | 2026-08-14 | 2026-08-28 | A02980 |  |  | Mechanical [187 h] |
| A12710 |  | Open & inspect compressor 5A — AIMD Jet engine shop | 0d | 2026-08-15 | 2026-08-23 |  |  |  | Mechanical [111 h] |
| A05500 |  | Open & inspect motor group 4A — Squadron maintenance control No. 1 | 0d | 2026-08-15 | 2026-08-27 |  |  |  | Mechanical [112 h] |
| A09280 |  | Open & inspect motor group 5D — Weapons elevator No. 1 machinery room – port | 0d | 2026-08-15 | 2026-08-19 |  |  |  | Mechanical [31 h] |
| A56890 |  | Repair & restore — Emergency Diesel Room (fwd) | 0d | 2026-08-15 | 2026-08-22 | A56880 |  |  | Mechanical [51 h] |
| A12990 |  | Remove pump set 8B for shop — AIMD Avionics repair shop | 0d | 2026-08-15 | 2026-08-27 | A12980 |  |  | Mechanical [73 h] |
| A08440 |  | Open & inspect motor group 8B — Aircraft elevator No. 1 machinery room | 0d | 2026-08-16 | 2026-08-27 |  |  |  | Mechanical [105 h] |
| A19470 |  | Shop overhaul — motor group 5D — Ordnance staging area No. 7 | 0d | 2026-08-16 | 2026-08-19 | A19460 |  |  | Mechanical [65 h] |
| A03340 |  | Remove pump set 1D for shop — Avionics shop No. 2 | 0d | 2026-08-16 | 2026-08-22 | A03330 |  |  | Mechanical [47 h] |

| ID | Activity | Duration | Start | Finish | Predecessors | Resources |
| --- | --- | --- | --- | --- | --- | --- |
| A09510 | Shop overhaul — pump set 3C — Weapons elevator No. 2 machinery room – starboard | 0d | 2026-08-16 | 2026-08-24 | A09500 | Mechanical [62 h] |
| A03900 | Remove pump set 7B for shop — Squadron ready storeroom No. 2 | 0d | 2026-08-16 | 2026-08-27 | A03890 | Mechanical [266 h] |
| A11820 | Open & inspect pump set 3B (02-216-3-Q) | 0d | 2026-08-16 | 2026-08-25 |  | Mechanical [251 h] |
| A16420 | Remove motor group 7B for shop — Aircraft tie-down locker No. 1 | 0d | 2026-08-16 | 2026-08-26 | A16410 FS+2.4d | Mechanical [167 h] |
| A15520 | Open & inspect compressor 1A — Hangar bay fire station No. 2 | 0d | 2026-08-16 | 2026-08-29 |  | Mechanical [287 h] |
| A18280 | Remove compressor 9B for shop — Hangar bay divisional door No. 2 | 0d | 2026-08-17 | 2026-08-20 | A18270 FS+0.8d | Mechanical [20 h] |
| A04670 | Remove compressor 4C for shop — Catapult No. 3 machinery room | 0d | 2026-08-17 | 2026-08-25 | A04660 | Mechanical [148 h] |
| A16470 | Remove motor group 5A for shop — Hangar bay divisional door No. 1 | 0d | 2026-08-17 | 2026-08-27 | A16460 | Mechanical [115 h] |
| A15640 | Remove pump set 4C for shop — Hangar bay fire station No. 2 | 0d | 2026-08-17 | 2026-08-23 | A15630 SS+2.4d | Mechanical [87 h] |
| A17090 | Remove pump set 5A for shop — Hangar Bay 2 (elevator No. 2 bay) | 0d | 2026-08-17 | 2026-08-23 | A17080 | Mechanical [48 h] |
| A04260 | Remove pump set 6A for shop — Jet blast deflector No. 1 machinery room | 0d | 2026-08-17 | 2026-08-29 | A04250 | Mechanical [303 h] |
| A19010 | Shop overhaul — motor group 6C — Hangar bay fire station No. 5 | 0d | 2026-08-18 | 2026-08-23 | A19000 FS+0.8d | Mechanical [67 h] |
| A13240 | Open & inspect motor group 3C — AIMD Tire & wheel shop | 0d | 2026-08-18 | 2026-08-31 |  | Mechanical [247 h] |
| A16150 | Open & inspect pump set 8B — Ordnance staging area No. 2 | 0d | 2026-08-18 | 2026-08-31 |  | Mechanical [227 h] |
| A11440 | Remove motor group 9A for shop — Weapons elevator No. 5 machinery room – port | 0d | 2026-08-18 | 2026-08-29 | A11430 | Mechanical [173 h] |
| A13450 | Remove compressor 5A for shop — Boat davit machinery – starboard | 0d | 2026-08-18 | 2026-08-30 | A13440 FS+0.8d | Mechanical [92 h] |
| A15130 | Open & inspect pump set 8A — Hangar Bay 1 | 0d | 2026-08-18 | 2026-08-23 |  | Mechanical [88 h] |
| A18330 | Remove compressor 2C for shop — Hangar bay divisional door No. 2 | 0d | 2026-08-19 | 2026-08-22 | A18320 FS+2.4d | Mechanical [39 h] |
| A15780 | Open & inspect compressor 2B — Hangar bay workshop No. 1 | 0d | 2026-08-19 | 2026-08-28 |  | Mechanical [77 h] |
| A14770 | Shop overhaul — motor group 5C — AIMD Survival equipment shop | 0d | 2026-08-19 | 2026-08-28 | A14760 | Mechanical [247 h] |
| A06750 | Remove motor group 5A for shop — Arresting gear engine room No. 2 | 0d | 2026-08-19 | 2026-08-27 | A06740 FS+2.4d | Mechanical [141 h] |
| A16770 | Open & inspect compressor 8D — Hangar Bay 2 | 0d | 2026-08-19 | 2026-08-24 |  | Mechanical [127 h] |
| A10640 | Remove pump set 8B for shop (02-152-4-Q) | 0d | 2026-08-19 | 2026-08-27 | A10630 | Mechanical [155 h] |
| A18480 | Remove motor group 9A for shop — Hangar Bay 3 | 0d | 2026-08-19 | 2026-08-29 | A18470 FS+2.4d | Mechanical [348 h] |
| A05890 | Open & inspect pump set 5B — Squadron maintenance control No. 2 | 0d | 2026-08-19 | 2026-09-01 |  | Mechanical [348 h] |
| A11780 | Remove compressor 6A for shop — Weapons elevator No. 6 machinery room – starboard | 0d | 2026-08-19 | 2026-09-01 | A11770 | Mechanical [102 h] |
| A03960 | Shop overhaul — compressor 8C — Squadron ready storeroom No. 2 | 0d | 2026-08-19 | 2026-08-30 | A03950 | Mechanical [82 h] |
| A13490 | Open & inspect motor group 6B — Boat davit machinery – starboard | 0d | 2026-08-19 | 2026-09-01 |  | Mechanical [299 h] |
| A09290 | Remove motor group 5D for shop — Weapons elevator No. 1 machinery room – port | 0d | 2026-08-20 | 2026-08-27 | A09280 FS+0.8d | Mechanical [47 h] |
| A10070 | Remove pump set 1D for shop — Aircraft elevator No. 2 machinery room | 0d | 2026-08-20 | 2026-08-24 | A10060 | Mechanical [37 h] |
| A19480 | Reinstall & align motor group 5D — Ordnance staging area No. 7 | 0d | 2026-08-20 | 2026-09-03 | A19470 FS+2.4d | Mechanical [101 h] |
| A16990 | Shop overhaul — motor group 1A — Hangar deck storeroom No. 2 | 0d | 2026-08-20 | 2026-08-24 | A16980 | Mechanical [77 h] |
| A17750 | Open & inspect compressor 6C — Ordnance staging area No. 4 | 0d | 2026-08-21 | 2026-08-25 |  | Mechanical [34 h] |
| A18890 | Open & inspect compressor 8A — Hangar bay fire station No. 5 | 0d | 2026-08-21 | 2026-08-27 |  | Mechanical [55 h] |
| A15680 | Open & inspect motor group 2D — Hangar bay fire station No. 2 | 0d | 2026-08-21 | 2026-08-24 |  | Mechanical [63 h] |
| A03860 | Shop overhaul — compressor 2A — Squadron ready storeroom No. 2 | 0d | 2026-08-21 | 2026-09-02 | A03850 | Mechanical [78 h] |
| A14030 | Shop overhaul — pump set 3B — AIMD Power plants shop | 0d | 2026-08-21 | 2026-09-03 | A14020 | Mechanical [152 h] |
| A13040 | Remove motor group 2C for shop — AIMD Avionics repair shop | 0d | 2026-08-21 | 2026-08-31 | A13030 | Mechanical [128 h] |
| A18290 | Shop overhaul — compressor 9B — Hangar bay divisional door No. 2 | 0d | 2026-08-22 | 2026-08-27 | A18280 FS+2.4d | Mechanical [45 h] |
| A15860 | Reinstall & align pump set 6C — Hangar bay workshop No. 1 | 0d | 2026-08-22 | 2026-09-01 | A15850 | Mechanical [57 h] |
| A18530 | Remove pump set 4B for shop — Hangar Bay 3 | 0d | 2026-08-22 | 2026-08-27 | A18520 FS+2.4d | Mechanical [54 h] |
| A11010 | Remove pump set 1A for shop (02-176-4-Q) | 0d | 2026-08-23 | 2026-08-28 | A11000 SS+2.4d | Mechanical [26 h] |
| A03350 | Shop overhaul — pump set 1D — Avionics shop No. 2 | 0d | 2026-08-23 | 2026-09-04 | A03340 | Mechanical [145 h] |
| A13410 | Shop overhaul — motor group 3A — AIMD Airframes shop | 0d | 2026-08-23 | 2026-09-05 | A13400 FS+2.4d | Mechanical [187 h] |
| A15140 | Remove pump set 8A for shop — Hangar Bay 1 | 0d | 2026-08-24 | 2026-08-29 | A15130 | Mechanical [102 h] |
| A18340 | Shop overhaul — compressor 2C — Hangar bay divisional door No. 2 | 0d | 2026-08-24 | 2026-08-27 | A18330 FS+0.8d | Mechanical [21 h] |
| A16580 | Shop overhaul — pump set 6C — Hangar bay divisional door No. 1 | 0d | 2026-08-24 | 2026-09-04 | A16570 FS+2.4d | Mechanical [142 h] |
| A03110 | Reinstall & align pump set 6C — Avionics shop No. 1 | 0d | 2026-08-24 | 2026-09-03 | A03100 | Mechanical [199 h] |
| A12720 | Remove compressor 5A for shop — AIMD Jet engine shop | 0d | 2026-08-25 | 2026-09-05 | A12710 | Mechanical [284 h] |
| A17100 | Shop overhaul — pump set 5A — Hangar Bay 2 (elevator No. 2 bay) | 0d | 2026-08-25 | 2026-09-07 | A17090 | Mechanical [164 h] |
| A13600 | Remove compressor 6D for shop — Boat davit machinery – starboard | 0d | 2026-08-25 | 2026-09-06 | A13590 | Mechanical [256 h] |
| A19020 | Reinstall & align motor group 6C — Hangar bay fire station No. 5 | 0d | 2026-08-25 | 2026-08-31 | A19010 | Mechanical [128 h] |
| A15650 | Shop overhaul — pump set 4C — Hangar bay fire station No. 2 | 0d | 2026-08-25 | 2026-09-06 | A15640 FS+2.4d | Mechanical [187 h] |
| A04680 | Shop overhaul — compressor 4C — Catapult No. 3 machinery room | 0d | 2026-08-25 | 2026-09-02 | A04670 | Mechanical [64 h] |
| A08420 | Reinstall & align compressor 6A — Aircraft elevator No. 1 machinery room | 0d | 2026-08-25 | 2026-09-03 | A08410 FS+2.4d | Mechanical [61 h] |
| A15690 | Remove motor group 2D for shop — Hangar bay fire station No. 2 | 0d | 2026-08-25 | 2026-08-31 | A15680 | Mechanical [135 h] |
| A10080 | Shop overhaul — pump set 1D — Aircraft elevator No. 2 machinery room | 0d | 2026-08-27 | 2026-09-01 | A10070 | Mechanical [38 h] |
| A13730 | Reinstall & align motor group 5A — Boat davit machinery – port | 0d | 2026-08-27 | 2026-08-31 | A13720 FS+0.8d | Mechanical [87 h] |
| A17000 | Reinstall & align motor group 1A — Hangar deck storeroom No. 2 | 0d | 2026-08-27 | 2026-09-05 | A16990 | Mechanical [54 h] |
| A09520 | Reinstall & align pump set 3C — Weapons elevator No. 2 machinery room – starboard | 0d | 2026-08-27 | 2026-09-09 | A09510 | Mechanical [219 h] |
| A18950 | Remove pump set 1B for shop — Hangar bay fire station No. 5 | 0d | 2026-08-27 | 2026-08-30 | A18940 | Mechanical [51 h] |
| A16780 | Remove compressor 8D for shop — Hangar Bay 2 | 0d | 2026-08-27 | 2026-09-06 | A16770 | Mechanical [68 h] |
| A18540 | Shop overhaul — pump set 4B — Hangar Bay 3 | 0d | 2026-08-27 | 2026-09-06 | A18530 FS+2.4d | Mechanical [146 h]; Rigging & Weight Handling [37 h] |
| A11830 | Remove pump set 3B for shop (02-216-3-Q) | 0d | 2026-08-27 | 2026-09-07 | A11820 | Mechanical [62 h] |
| A05680 | Reinstall & align compressor 8A — Air wing ordnance shop | 0d | 2026-08-28 | 2026-08-30 | A05670 | Mechanical [33 h] |
| A03910 | Shop overhaul — pump set 7B — Squadron ready storeroom No. 2 | 0d | 2026-08-28 | 2026-08-30 | A03900 FS+2.4d | Mechanical [35 h] |
| A13000 | Shop overhaul — pump set 8B — AIMD Avionics repair shop | 0d | 2026-08-28 | 2026-09-06 | A12990 FS+0.8d | Mechanical [169 h] |
| A16430 | Shop overhaul — motor group 7B — Aircraft tie-down locker No. 1 | 0d | 2026-08-28 | 2026-08-30 | A16420 FS+0.8d | Mechanical [58 h] |
| A16480 | Shop overhaul — motor group 5A — Hangar bay divisional door No. 1 | 0d | 2026-08-28 | 2026-09-02 | A16470 | Mechanical [65 h] |
| A17760 | Remove compressor 6C for shop — Ordnance staging area No. 4 | 0d | 2026-08-28 | 2026-09-09 | A17750 | Mechanical [309 h] |

| ID | Activity | Duration | Start | Finish | Predecessors | Resources |
| --- | --- | --- | --- | --- | --- | --- |
| A08450 | Remove motor group 8B for shop — Aircraft elevator No. 1 machinery room | 0d | 2026-08-28 | 2026-09-10 | A08440 FS+0.8d | Mechanical [248 h] |
| A06760 | Shop overhaul — motor group 5A — Arresting gear engine room No. 2 | 0d | 2026-08-28 | 2026-09-04 | A06750 SS+2.4d | Mechanical [80 h] |
| A09300 | Shop overhaul — motor group 5D — Weapons elevator No. 1 machinery room – port | 0d | 2026-08-29 | 2026-09-02 | A09290 | Mechanical [68 h]; Rigging & Weight Handling [18 h] |
| A56900 | Open & inspect — JP-5 Service Tank | 0d | 2026-08-29 | 2026-09-05 | A56890 | Mechanical [121 h] |
| A11020 | Shop overhaul — pump set 1A (02-176-4-Q) | 0d | 2026-08-29 | 2026-09-04 | A11010 | Mechanical [95 h] |
| A18350 | Reinstall & align compressor 2C — Hangar bay divisional door No. 2 | 0d | 2026-08-29 | 2026-09-06 | A18340 | Mechanical [170 h] |
| A10650 | Shop overhaul — pump set 8B (02-152-4-Q) | 0d | 2026-08-30 | 2026-09-02 | A10640 FS+2.4d | Mechanical [17 h]; Rigging & Weight Handling [5 h] |
| A03000 | Shop overhaul — motor group 6A — Avionics shop No. 1 | 0d | 2026-08-30 | 2026-09-07 | A02990 FS-0.8d | Mechanical [177 h] |
| A18300 | Reinstall & align compressor 9B — Hangar bay divisional door No. 2 | 0d | 2026-08-30 | 2026-09-12 | A18290 FS+0.8d | Mechanical [176 h] |
| A05510 | Remove motor group 4A for shop — Squadron maintenance control No. 1 | 0d | 2026-08-30 | 2026-09-06 | A05500 | Mechanical [51 h] |
| A18900 | Remove compressor 8A for shop — Hangar bay fire station No. 5 | 0d | 2026-08-30 | 2026-09-10 | A18890 SS+4.8d | Mechanical [149 h] |
| A15790 | Remove compressor 2B for shop — Hangar bay workshop No. 1 | 0d | 2026-08-30 | 2026-09-07 | A15780 FS+0.8d | Mechanical [118 h] |
| A15530 | Remove compressor 1A for shop — Hangar bay fire station No. 2 | 0d | 2026-08-30 | 2026-09-13 | A15520 | Mechanical [433 h] |
| A13460 | Shop overhaul — compressor 5A — Boat davit machinery – starboard | 0d | 2026-08-31 | 2026-09-06 | A13450 | Mechanical [35 h] |
| A15150 | Shop overhaul — pump set 8A — Hangar Bay 1 | 0d | 2026-08-31 | 2026-09-02 | A15140 FS+2.4d | Mechanical [14 h] |
| A14780 | Reinstall & align motor group 5C — AIMD Survival equipment shop | 0d | 2026-08-31 | 2026-09-13 | A14770 | Mechanical [96 h] |
| A05690 | Operational test compressor 8A — Air wing ordnance shop | 0d | 2026-08-31 | 2026-09-07 | A05680 | Mechanical [146 h] |
| A04270 | Shop overhaul — pump set 6A — Jet blast deflector No. 1 machinery room | 0d | 2026-08-31 | 2026-09-08 | A04260 | Mechanical [44 h] |
| A03920 | Reinstall & align pump set 7B — Squadron ready storeroom No. 2 | 0d | 2026-08-31 | 2026-09-14 | A03910 FS+2.4d | Mechanical [322 h] |
| A18490 | Shop overhaul — motor group 9A — Hangar Bay 3 | 0d | 2026-08-31 | 2026-09-12 | A18480 | Mechanical [192 h] |
| A11450 | Shop overhaul — motor group 9A — Weapons elevator No. 5 machinery room – port | 0d | 2026-09-01 | 2026-09-11 | A11440 FS+0.8d | Mechanical [176 h] |
| A18960 | Shop overhaul — pump set 1B — Hangar bay fire station No. 5 | 0d | 2026-09-01 | 2026-09-09 | A18950 | Mechanical [58 h] |
| A13740 | Operational test motor group 5A — Boat davit machinery – port | 0d | 2026-09-01 | 2026-09-09 | A13730 FS+2.4d | Mechanical [115 h] |
| A16160 | Remove pump set 8B for shop — Ordnance staging area No. 2 | 0d | 2026-09-01 | 2026-09-08 | A16150 FS+2.4d | Mechanical [135 h] |
| A03970 | Reinstall & align compressor 8C — Squadron ready storeroom No. 2 | 0d | 2026-09-01 | 2026-09-08 | A03960 | Mechanical [42 h] |
| A19030 | Operational test motor group 6C — Hangar bay fire station No. 5 | 0d | 2026-09-02 | 2026-09-12 | A19020 FS-4.8d | Mechanical [64 h] |
| A15700 | Shop overhaul — motor group 2D — Hangar bay fire station No. 2 | 0d | 2026-09-02 | 2026-09-04 | A15690 | Mechanical [94 h] |
| A15870 | Operational test pump set 6C — Hangar bay workshop No. 1 | 0d | 2026-09-02 | 2026-09-05 | A15860 | Mechanical [93 h] |
| A16440 | Reinstall & align motor group 7B — Aircraft tie-down locker No. 1 | 0d | 2026-09-02 | 2026-09-12 | A16430 | Mechanical [269 h] |
| A13050 | Shop overhaul — motor group 2C — AIMD Avionics repair shop | 0d | 2026-09-02 | 2026-09-12 | A13040 | Mechanical [66 h] |
| A56930 | Repair & restore — Forward IC Gyro | 0d | 2026-09-02 | 2026-09-12 | A56920 | Mechanical [157 h] |
| A11790 | Shop overhaul — compressor 6A — Weapons elevator No. 6 machinery room – starboard | 0d | 2026-09-02 | 2026-09-13 | A11780 | Mechanical [62 h] |
| A13250 | Remove motor group 3C for shop — AIMD Tire & wheel shop | 0d | 2026-09-03 | 2026-09-11 | A13240 FS+0.8d | Mechanical [230 h] |
| A19490 | Operational test motor group 5D — Ordnance staging area No. 7 | 0d | 2026-09-03 | 2026-09-14 | A19480 | Mechanical [76 h] |
| A10660 | Reinstall & align pump set 8B (02-152-4-Q) | 0d | 2026-09-03 | 2026-09-13 | A10650 FS+0.8d | Mechanical [64 h] |
| A04690 | Reinstall & align compressor 4C — Catapult No. 3 machinery room | 0d | 2026-09-03 | 2026-09-05 | A04680 FS+0.8d | Mechanical [11 h]; Rigging & Weight Handling [3 h] |
| A13500 | Remove motor group 6B for shop — Boat davit machinery – starboard | 0d | 2026-09-03 | 2026-09-13 | A13490 | Mechanical [220 h] |
| A14040 | Reinstall & align pump set 3B — AIMD Power plants shop | 0d | 2026-09-03 | 2026-09-07 | A14030 | Mechanical [119 h] |
| A05900 | Remove pump set 5B for shop — Squadron maintenance control No. 2 | 0d | 2026-09-03 | 2026-09-08 | A05890 FS+0.8d | Mechanical [82 h] |
| A15160 | Reinstall & align pump set 8A — Hangar Bay 1 | 0d | 2026-09-03 | 2026-09-13 | A15150 | Mechanical [68 h]; Rigging & Weight Handling [17 h] |
| A11030 | Reinstall & align pump set 1A (02-176-4-Q) | 0d | 2026-09-04 | 2026-09-06 | A11020 FS+0.8d | Mechanical [33 h] |
| A10090 | Reinstall & align pump set 1D — Aircraft elevator No. 2 machinery room | 0d | 2026-09-04 | 2026-09-07 | A10080 FS+2.4d | Mechanical [25 h] |
| A03870 | Reinstall & align compressor 2A — Squadron ready storeroom No. 2 | 0d | 2026-09-04 | 2026-09-09 | A03860 | Mechanical [60 h] |
| A09310 | Reinstall & align motor group 5D — Weapons elevator No. 1 machinery room – port | 0d | 2026-09-04 | 2026-09-07 | A09300 | Mechanical [57 h] |
| A03120 | Operational test pump set 6C — Avionics shop No. 1 | 0d | 2026-09-04 | 2026-09-10 | A03110 | Mechanical [46 h] |
| A08430 | Operational test compressor 6A — Aircraft elevator No. 1 machinery room | 0d | 2026-09-04 | 2026-09-10 | A08420 | Mechanical [44 h] |
| A06770 | Reinstall & align motor group 5A — Arresting gear engine room No. 2 | 0d | 2026-09-05 | 2026-09-13 | A06760 | Mechanical [50 h] |
| A16590 | Reinstall & align pump set 6C — Hangar bay divisional door No. 1 | 0d | 2026-09-05 | 2026-09-16 | A16580 FS+2.4d | Mechanical [97 h] |
| A16490 | Reinstall & align motor group 5A — Hangar bay divisional door No. 1 | 0d | 2026-09-05 | 2026-09-19 | A16480 | Mechanical [87 h] |
| A12730 | Shop overhaul — compressor 5A — AIMD Jet engine shop | 0d | 2026-09-06 | 2026-09-11 | A12720 | Mechanical [121 h] |
| A18360 | Operational test compressor 2C — Hangar bay divisional door No. 2 | 0d | 2026-09-06 | 2026-09-19 | A18350 FS+0.8d | Mechanical [487 h] |
| A15660 | Reinstall & align pump set 4C — Hangar bay fire station No. 2 | 0d | 2026-09-06 | 2026-09-18 | A15650 FS+2.4d | Mechanical [137 h]; Rigging & Weight Handling [35 h] |
| A13470 | Reinstall & align compressor 5A — Boat davit machinery – starboard | 0d | 2026-09-06 | 2026-09-09 | A13460 | Mechanical [24 h] |
| A04700 | Operational test compressor 4C — Catapult No. 3 machinery room | 0d | 2026-09-06 | 2026-09-12 | A04690 FS+0.8d | Mechanical [166 h] |
| A13010 | Reinstall & align pump set 8B — AIMD Avionics repair shop | 0d | 2026-09-06 | 2026-09-14 | A13000 | Mechanical [50 h] |
| A11040 | Operational test pump set 1A (02-176-4-Q) | 0d | 2026-09-07 | 2026-09-20 | A11030 FS+2.4d | Mechanical [318 h] |
| A13610 | Shop overhaul — compressor 6D — Boat davit machinery – starboard | 0d | 2026-09-07 | 2026-09-19 | A13600 | Mechanical [451 h] |
| A17010 | Operational test motor group 1A — Hangar deck storeroom No. 2 | 0d | 2026-09-07 | 2026-09-15 | A17000 | Mechanical [241 h] |
| A14050 | Operational test pump set 3B — AIMD Power plants shop | 0d | 2026-09-07 | 2026-09-17 | A14040 FS+0.8d | Mechanical [115 h] |
| A03360 | Reinstall & align pump set 1D — Avionics shop No. 2 | 0d | 2026-09-07 | 2026-09-10 | A03350 SS+7.2d | Mechanical [36 h] |
| A15710 | Reinstall & align motor group 2D — Hangar bay fire station No. 2 | 0d | 2026-09-07 | 2026-09-16 | A15700 | Mechanical [204 h] |
| A05520 | Shop overhaul — motor group 4A — Squadron maintenance control No. 1 | 0d | 2026-09-08 | 2026-09-20 | A05510 | Mechanical [346 h] |
| A18550 | Reinstall & align pump set 4B — Hangar Bay 3 | 0d | 2026-09-08 | 2026-09-15 | A18540 FS+2.4d | Mechanical [94 h] |
| A09320 | Operational test motor group 5D — Weapons elevator No. 1 machinery room – port | 0d | 2026-09-08 | 2026-09-12 | A09310 FS-1.6d | Mechanical [27 h] |
| A13420 | Reinstall & align motor group 3A — AIMD Airframes shop | 0d | 2026-09-08 | 2026-09-21 | A13410 | Mechanical [208 h] |
| A16790 | Shop overhaul — compressor 8D — Hangar Bay 2 | 0d | 2026-09-08 | 2026-09-16 | A16780 FS+2.4d | Mechanical [71 h] |
| A10100 | Operational test pump set 1D — Aircraft elevator No. 2 machinery room | 0d | 2026-09-08 | 2026-09-17 | A10090 FS+0.8d | Mechanical [46 h] |
| A17110 | Reinstall & align pump set 5A — Hangar Bay 2 (elevator No. 2 bay) | 0d | 2026-09-08 | 2026-09-18 | A17100 FS+2.4d | Mechanical [277 h] |
| A11840 | Shop overhaul — pump set 3B (02-216-3-Q) | 0d | 2026-09-09 | 2026-09-11 | A11830 | Mechanical [13 h] |
| A16170 | Shop overhaul — pump set 8B — Ordnance staging area No. 2 | 0d | 2026-09-09 | 2026-09-21 | A16160 SS+7.2d | Mechanical [71 h] |

| ID | Activity | Duration | Start | Finish | Predecessors | Resources |
| --- | --- | --- | --- | --- | --- | --- |
| A05910 | Shop overhaul — pump set 5B — Squadron maintenance control No. 2 | 0d | 2026-09-09 | 2026-09-15 | A05900 SS+2.4d | Mechanical [37 h] |
| A04280 | Reinstall & align pump set 6A — Jet blast deflector No. 1 machinery room | 0d | 2026-09-09 | 2026-09-21 | A04270 FS+2.4d | Mechanical [151 h] |
| A09530 | Operational test pump set 3C — Weapons elevator No. 2 machinery room – starboard | 0d | 2026-09-09 | 2026-09-19 | A09520 SS+4.8d | Mechanical [270 h]; Rigging & Weight Handling [68 h] |
| A15800 | Shop overhaul — compressor 2B — Hangar bay workshop No. 1 | 0d | 2026-09-09 | 2026-09-23 | A15790 FS+0.8d | Mechanical [106 h] |
| A03010 | Reinstall & align motor group 6A — Avionics shop No. 1 | 0d | 2026-09-09 | 2026-09-21 | A03000 | Mechanical [184 h] |
| A56910 | Repair & restore — JP-5 Service Tank | 0d | 2026-09-10 | 2026-09-15 | A56900 | Mechanical [92 h] |
| A08460 | Shop overhaul — motor group 8B — Aircraft elevator No. 1 machinery room | 0d | 2026-09-10 | 2026-09-18 | A08450 FS+0.8d | Mechanical [107 h] |
| A03980 | Operational test compressor 8C — Squadron ready storeroom No. 2 | 0d | 2026-09-10 | 2026-09-22 | A03970 | Mechanical [139 h] |
| A11850 | Reinstall & align pump set 3B (02-216-3-Q) | 0d | 2026-09-11 | 2026-09-22 | A11840 FS+2.4d | Mechanical [77 h] |
| A13480 | Operational test compressor 5A — Boat davit machinery – starboard | 0d | 2026-09-11 | 2026-09-21 | A13470 FS+2.4d | Mechanical [183 h] |
| A03370 | Operational test pump set 1D — Avionics shop No. 2 | 0d | 2026-09-11 | 2026-09-21 | A03360 FS+2.4d | Mechanical [59 h] |
| A17770 | Shop overhaul — compressor 6C — Ordnance staging area No. 4 | 0d | 2026-09-11 | 2026-09-17 | A17760 FS+0.8d | Mechanical [43 h] |
| A03880 | Operational test compressor 2A — Squadron ready storeroom No. 2 | 0d | 2026-09-12 | 2026-09-20 | A03870 | Mechanical [206 h] |
| A18910 | Shop overhaul — compressor 8A — Hangar bay fire station No. 5 | 0d | 2026-09-12 | 2026-09-23 | A18900 | Mechanical [139 h] |
| A18970 | Reinstall & align pump set 1B — Hangar bay fire station No. 5 | 0d | 2026-09-12 | 2026-09-20 | A18960 FS+0.8d | Mechanical [55 h]; Rigging & Weight Handling [14 h] |
| A18500 | Reinstall & align motor group 9A — Hangar Bay 3 | 0d | 2026-09-12 | 2026-09-23 | A18490 | Mechanical [88 h] |
| A13060 | Reinstall & align motor group 2C — AIMD Avionics repair shop | 0d | 2026-09-13 | 2026-09-20 | A13050 FS+0.8d | Mechanical [60 h] |
| A11460 | Reinstall & align motor group 9A — Weapons elevator No. 5 machinery room – port | 0d | 2026-09-13 | 2026-09-24 | A11450 | Mechanical [214 h]; Rigging & Weight Handling [54 h] |
| A13260 | Shop overhaul — motor group 3C — AIMD Tire & wheel shop | 0d | 2026-09-13 | 2026-09-21 | A13250 | Mechanical [138 h] |
| A12740 | Reinstall & align compressor 5A — AIMD Jet engine shop | 0d | 2026-09-13 | 2026-09-26 | A12730 FS-4.8d | Mechanical [81 h] |
| A15540 | Shop overhaul — compressor 1A — Hangar bay fire station No. 2 | 0d | 2026-09-14 | 2026-09-16 | A15530 | Mechanical [26 h] |
| A11800 | Reinstall & align compressor 6A — Weapons elevator No. 6 machinery room – starboard | 0d | 2026-09-14 | 2026-09-22 | A11790 SS+2.4d | Mechanical [122 h] |
| A18310 | Operational test compressor 9B — Hangar bay divisional door No. 2 | 0d | 2026-09-14 | 2026-09-23 | A18300 FS+2.4d | Mechanical [83 h] |
| A06780 | Operational test motor group 5A — Arresting gear engine room No. 2 | 0d | 2026-09-14 | 2026-09-28 | A06770 | Mechanical [109 h] |
| A14790 | Operational test motor group 5C — AIMD Survival equipment shop | 0d | 2026-09-14 | 2026-09-22 | A14780 FS+0.8d | Mechanical [130 h] |
| A13510 | Shop overhaul — motor group 6B — Boat davit machinery – starboard | 0d | 2026-09-14 | 2026-09-17 | A13500 | Mechanical [24 h]; Rigging & Weight Handling [7 h] |
| A16450 | Operational test motor group 7B — Aircraft tie-down locker No. 1 | 0d | 2026-09-15 | 2026-09-18 | A16440 | Mechanical [72 h] |
| A10670 | Operational test pump set 8B (02-152-4-Q) | 0d | 2026-09-15 | 2026-09-28 | A10660 FS+2.4d | Mechanical [206 h] |
| A03930 | Operational test pump set 7B — Squadron ready storeroom No. 2 | 0d | 2026-09-16 | 2026-09-30 | A03920 | Mechanical [83 h] |
| A15170 | Operational test pump set 8A — Hangar Bay 1 | 0d | 2026-09-16 | 2026-09-27 | A15160 | Mechanical [169 h] |
| A13020 | Operational test pump set 8B — AIMD Avionics repair shop | 0d | 2026-09-16 | 2026-09-20 | A13010 | Mechanical [23 h] |
| A05920 | Reinstall & align pump set 5B — Squadron maintenance control No. 2 | 0d | 2026-09-16 | 2026-09-21 | A05910 | Mechanical [81 h] |
| A16800 | Reinstall & align compressor 8D — Hangar Bay 2 | 0d | 2026-09-16 | 2026-09-23 | A16790 SS+4.8d | Mechanical [212 h] |
| A16600 | Operational test pump set 6C — Hangar bay divisional door No. 1 | 0d | 2026-09-17 | 2026-09-24 | A16590 | Mechanical [96 h] |
| A15720 | Operational test motor group 2D — Hangar bay fire station No. 2 | 0d | 2026-09-17 | 2026-09-27 | A15710 | Mechanical [364 h] |
| A18560 | Operational test pump set 4B — Hangar Bay 3 | 0d | 2026-09-17 | 2026-09-27 | A18550 FS+2.4d | Mechanical [82 h] |
| A17780 | Reinstall & align compressor 6C — Ordnance staging area No. 4 | 0d | 2026-09-18 | 2026-09-25 | A17770 | Mechanical [58 h] |
| A15550 | Reinstall & align compressor 1A — Hangar bay fire station No. 2 | 0d | 2026-09-19 | 2026-10-01 | A15540 | Mechanical [88 h] |
| A16500 | Operational test motor group 5A — Hangar bay divisional door No. 1 | 0d | 2026-09-19 | 2026-09-22 | A16490 FS+2.4d | Mechanical [17 h] |
| A13520 | Reinstall & align motor group 6B — Boat davit machinery – starboard | 0d | 2026-09-20 | 2026-10-02 | A13510 | Mechanical [220 h] |
| A08470 | Reinstall & align motor group 8B — Aircraft elevator No. 1 machinery room | 0d | 2026-09-20 | 2026-10-04 | A08460 FS+2.4d | Mechanical [205 h] |
| A15670 | Operational test pump set 4C — Hangar bay fire station No. 2 | 0d | 2026-09-20 | 2026-10-01 | A15660 FS+2.4d | Mechanical [334 h] |
| A17120 | Operational test pump set 5A — Hangar Bay 2 (elevator No. 2 bay) | 0d | 2026-09-20 | 2026-09-24 | A17110 | Mechanical [89 h] |
| A13620 | Reinstall & align compressor 6D — Boat davit machinery – starboard | 0d | 2026-09-20 | 2026-09-26 | A13610 FS+2.4d | Mechanical [61 h] |
| A56920 | Open & inspect — Forward IC Gyro | 0d | 2026-09-21 | 2026-09-27 | A56910 | Mechanical [35 h] |
| A13070 | Operational test motor group 2C — AIMD Avionics repair shop | 0d | 2026-09-21 | 2026-09-26 | A13060 | Mechanical [78 h] |
| A18980 | Operational test pump set 1B — Hangar bay fire station No. 5 | 0d | 2026-09-21 | 2026-10-02 | A18970 | Mechanical [72 h] |
| A05930 | Operational test pump set 5B — Squadron maintenance control No. 2 | 0d | 2026-09-21 | 2026-09-25 | A05920 | Mechanical [26 h] |
| A13430 | Operational test motor group 3A — AIMD Airframes shop | 0d | 2026-09-22 | 2026-09-29 | A13420 FS+2.4d | Mechanical [44 h] |
| A04290 | Operational test pump set 6A — Jet blast deflector No. 1 machinery room | 0d | 2026-09-22 | 2026-10-01 | A04280 FS+2.4d | Mechanical [66 h] |
| A16180 | Reinstall & align pump set 8B — Ordnance staging area No. 2 | 0d | 2026-09-22 | 2026-09-26 | A16170 | Mechanical [57 h] |
| A05530 | Reinstall & align motor group 4A — Squadron maintenance control No. 1 | 0d | 2026-09-22 | 2026-10-06 | A05520 | Mechanical [223 h] |
| A13270 | Reinstall & align motor group 3C — AIMD Tire & wheel shop | 0d | 2026-09-22 | 2026-10-05 | A13260 FS+2.4d | Mechanical [104 h] |
| A11810 | Operational test compressor 6A — Weapons elevator No. 6 machinery room – starboard | 0d | 2026-09-23 | 2026-09-30 | A11800 | Mechanical [97 h] |
| A03020 | Operational test motor group 6A — Avionics shop No. 1 | 0d | 2026-09-23 | 2026-09-28 | A03010 | Mechanical [189 h] |
| A18510 | Operational test motor group 9A — Hangar Bay 3 | 0d | 2026-09-23 | 2026-10-03 | A18500 | Mechanical [98 h]; Rigging & Weight Handling [25 h] |
| A11860 | Operational test pump set 3B (02-216-3-Q) | 0d | 2026-09-23 | 2026-10-02 | A11850 | Mechanical [58 h]; Rigging & Weight Handling [15 h] |
| A18920 | Reinstall & align compressor 8A — Hangar bay fire station No. 5 | 0d | 2026-09-23 | 2026-09-26 | A18910 | Mechanical [19 h] |
| A15810 | Reinstall & align compressor 2B — Hangar bay workshop No. 1 | 0d | 2026-09-24 | 2026-10-02 | A15800 | Mechanical [138 h] |
| A11470 | Operational test motor group 9A — Weapons elevator No. 5 machinery room – port | 0d | 2026-09-25 | 2026-10-04 | A11460 SS+4.8d | Mechanical [176 h] |
| A16810 | Operational test compressor 8D — Hangar Bay 2 | 0d | 2026-09-26 | 2026-09-28 | A16800 FS+0.8d | Mechanical [46 h] |
| A17790 | Operational test compressor 6C — Ordnance staging area No. 4 | 0d | 2026-09-26 | 2026-10-05 | A17780 FS+0.8d | Mechanical [134 h] |
| A16190 | Operational test pump set 8B — Ordnance staging area No. 2 | 0d | 2026-09-26 | 2026-09-30 | A16180 | Mechanical [62 h] |
| A13630 | Operational test compressor 6D — Boat davit machinery – starboard | 0d | 2026-09-26 | 2026-09-30 | A13620 | Mechanical [126 h] |
| A18930 | Operational test compressor 8A — Hangar bay fire station No. 5 | 0d | 2026-09-26 | 2026-10-10 | A18920 FS+2.4d | Mechanical [293 h] |
| A12750 | Operational test compressor 5A — AIMD Jet engine shop | 0d | 2026-09-27 | 2026-10-05 | A12740 FS+2.4d | Mechanical [192 h] |
| A15560 | Operational test compressor 1A — Hangar bay fire station No. 2 | 0d | 2026-10-02 | 2026-10-12 | A15550 SS+2.4d | Mechanical [149 h] |
| A15820 | Operational test compressor 2B — Hangar bay workshop No. 1 | 0d | 2026-10-03 | 2026-10-12 | A15810 FS+2.4d | Mechanical [143 h] |
| A13530 | Operational test motor group 6B — Boat davit machinery – starboard | 0d | 2026-10-03 | 2026-10-07 | A13520 | Mechanical [128 h] |
| A13280 | Operational test motor group 3C — AIMD Tire & wheel shop | 0d | 2026-10-06 | 2026-10-20 | A13270 FS+2.4d | Mechanical [284 h] |

| ID | WBS | Activity | Duration | Start | Finish | Predecessors | Complete | Remaining | Resources |
| --- | --- | --- | --- | --- | --- | --- | --- | --- | --- |
| A05540 |  | Operational test motor group 4A — Squadron maintenance control No. 1 | 0d | 2026-10-07 | 2026-10-16 | A05530 FS+2.4d |  |  | Mechanical [110 h] |
| A08480 |  | Operational test motor group 8B — Aircraft elevator No. 1 machinery room | 0d | 2026-10-07 | 2026-10-20 | A08470 FS+2.4d |  |  | Mechanical [205 h] |
|  | 631 | **631 Preservation** |  | 2026-07-27 | 2026-10-19 |  |  |  |  |
| A15930 |  | Surface survey — overhead coating 4A — Hangar deck storeroom No. 1 | 0d | 2026-07-27 A | 2026-08-06 A |  | 100% |  | Preservation / Blast & Coat [232 h] |
| A17130 |  | Surface survey — deck coating 8B — Hangar Bay 2 (elevator No. 2 bay) | 0d | 2026-07-28 A | 2026-08-05 A |  | 100% |  | Preservation / Blast & Coat [95 h]; Rigging & Weight Handling [24 h] |
| A06240 |  | Surface survey — bilge preservation 8A — Ready Room No. 7 | 0d | 2026-07-29 A | 2026-08-01 A |  | 100% |  | Preservation / Blast & Coat [27 h] |
| A11110 |  | Surface survey — bilge preservation 5A — Sponson storeroom No. 4 | 0d | 2026-07-29 A | 2026-08-06 A |  | 100% |  | Preservation / Blast & Coat [262 h] |
| A06090 |  | Surface survey — bilge preservation 1C — Ready Room No. 6 | 0d | 2026-07-30 A | 2026-08-06 A |  | 100% |  | Preservation / Blast & Coat [193 h] |
| A17430 |  | Surface survey — deck coating 8B — Aircraft tie-down locker No. 2 | 0d | 2026-07-30 A | 2026-08-12 |  | 74% | 0d | Preservation / Blast & Coat [176 h] |
| A17320 |  | Surface survey — deck coating 9A — Hangar bay workshop No. 3 | 0d | 2026-07-30 A | 2026-08-08 A |  | 100% |  | Preservation / Blast & Coat [65 h] |
| A15880 |  | Surface survey — bilge preservation 7D — Hangar bay workshop No. 1 | 0d | 2026-07-31 A | 2026-08-11 |  | 83% | 0d | Preservation / Blast & Coat [77 h] |
| A15280 |  | Surface survey — bilge preservation 9A — Hangar bay fire station No. 1 | 0d | 2026-07-31 A | 2026-08-03 A |  | 100% |  | Preservation / Blast & Coat [52 h]; Rigging & Weight Handling [14 h] |
| A10430 |  | Surface survey — bilge preservation 7A — Aircraft elevator No. 4 machinery room | 0d | 2026-07-31 A | 2026-08-04 A |  | 100% |  | Preservation / Blast & Coat [83 h]; Rigging & Weight Handling [21 h] |
| A05050 |  | Surface survey — overhead coating 6A — Ready Room No. 1 | 0d | 2026-07-31 A | 2026-08-09 A |  | 100% |  | Preservation / Blast & Coat [50 h] |
| A08490 |  | Surface survey — deck coating 6C — Aircraft elevator No. 1 machinery room | 0d | 2026-07-31 A | 2026-08-13 |  | 45% | 0d | Preservation / Blast & Coat [152 h] |
| A05340 |  | Surface survey — bilge preservation 6A — Ready Room No. 3 | 0d | 2026-07-31 A | 2026-08-06 A |  | 100% |  | Preservation / Blast & Coat [73 h] |
| A06390 |  | Surface survey — overhead coating 8A — Ready Room No. 8 | 0d | 2026-08-01 A | 2026-08-05 A |  | 100% |  | Preservation / Blast & Coat [100 h] |
| A12030 |  | Surface survey — overhead coating 5C — Weapons elevator No. 6 machinery room – port | 0d | 2026-08-01 A | 2026-08-14 |  | 52% | 0d | Preservation / Blast & Coat [208 h] |
| A18420 |  | Surface survey — overhead coating 6E — Hangar bay divisional door No. 2 | 0d | 2026-08-01 A | 2026-08-08 A |  | 100% |  | Preservation / Blast & Coat [173 h] |
| A16820 |  | Surface survey — deck coating 1A — Ordnance staging area No. 3 | 0d | 2026-08-02 A | 2026-08-08 A |  | 100% |  | Preservation / Blast & Coat [33 h] |
| A06250 |  | Blast / mechanical prep bilge preservation 8A — Ready Room No. 7 | 0d | 2026-08-03 A | 2026-08-13 | A06240 | 68% | 0d | Preservation / Blast & Coat [269 h] |
| A16870 |  | Surface survey — deck coating 8B — Ordnance staging area No. 3 | 0d | 2026-08-04 A | 2026-08-06 A |  | 100% |  | Preservation / Blast & Coat [25 h]; Rigging & Weight Handling [7 h] |
| A13910 |  | Surface survey — bilge preservation 6B — Tool issue room No. 3 | 0d | 2026-08-04 A | 2026-08-07 A |  | 100% |  | Preservation / Blast & Coat [21 h] |
| A03740 |  | Surface survey — bilge preservation 1A — Avionics shop No. 3 | 0d | 2026-08-04 A | 2026-08-13 |  | 63% | 0d | Preservation / Blast & Coat [225 h] |
| A14210 |  | Surface survey — overhead coating 3B — AIMD Aviation electricians' shop | 0d | 2026-08-05 A | 2026-08-10 |  | 100% | 0d | Preservation / Blast & Coat [168 h] |
| A17140 |  | Blast / mechanical prep deck coating 8B — Hangar Bay 2 (elevator No. 2 bay) | 0d | 2026-08-05 A | 2026-08-11 | A17130 SS+2.4d | 78% | 0d | Preservation / Blast & Coat [55 h] |
| A09800 |  | Surface survey — deck coating 2C — Weapons elevator No. 2 machinery room – port | 0d | 2026-08-05 A | 2026-08-13 |  | 33% | 0d | Preservation / Blast & Coat [143 h] |
| A08790 |  | Surface survey — overhead coating 9B — Weapons elevator No. 1 machinery room – starboard | 0d | 2026-08-05 A | 2026-08-15 |  | 44% | 0d | Preservation / Blast & Coat [123 h] |
| A10440 |  | Blast / mechanical prep bilge preservation 7A — Aircraft elevator No. 4 machinery room | 0d | 2026-08-05 A | 2026-08-16 | A10430 FS+0.8d | 42% | 0d | Preservation / Blast & Coat [67 h] |
| A06040 |  | Surface survey — deck coating 3B — Ready Room No. 6 | 0d | 2026-08-06 A | 2026-08-12 |  | 43% | 0d | Preservation / Blast & Coat [181 h] |
| A17700 |  | Surface survey — bilge preservation 8B — Ordnance staging area No. 4 | 0d | 2026-08-06 A | 2026-08-18 |  | 34% | 0d | Preservation / Blast & Coat [136 h] |
| A08690 |  | Surface survey — bilge preservation 9B — Life raft stowage No. 3 | 0d | 2026-08-06 A | 2026-08-11 |  | 73% | 0d | Preservation / Blast & Coat [45 h] |
| A10900 |  | Surface survey — overhead coating 3A — Ordnance ready service locker No. 4 | 0d | 2026-08-06 A | 2026-08-12 |  | 43% | 0d | Preservation / Blast & Coat [115 h] |
| A15290 |  | Blast / mechanical prep bilge preservation 9A — Hangar bay fire station No. 1 | 0d | 2026-08-06 A | 2026-08-12 | A15280 SS+4.8d | 62% | 0d | Preservation / Blast & Coat [68 h] |
| A15940 |  | Blast / mechanical prep overhead coating 4A — Hangar deck storeroom No. 1 | 0d | 2026-08-06 A | 2026-08-13 | A15930 | 50% | 0d | Preservation / Blast & Coat [183 h] |
| A06100 |  | Blast / mechanical prep bilge preservation 1C — Ready Room No. 6 | 0d | 2026-08-07 A | 2026-08-11 | A06090 FS+2.4d | 52% | 0d | Preservation / Blast & Coat [21 h]; Rigging & Weight Handling [6 h] |
| A16670 |  | Surface survey — overhead coating 4B — Hangar Bay 2 | 0d | 2026-08-07 A | 2026-08-15 |  | 32% | 0d | Preservation / Blast & Coat [133 h] |
| A13920 |  | Blast / mechanical prep bilge preservation 6B — Tool issue room No. 3 | 0d | 2026-08-07 A | 2026-08-13 | A13910 FS+0.8d | 47% | 0d | Preservation / Blast & Coat [77 h]; Rigging & Weight Handling [20 h] |
| A16880 |  | Blast / mechanical prep deck coating 8B — Ordnance staging area No. 3 | 0d | 2026-08-08 A | 2026-08-12 | A16870 FS+2.4d | 48% | 0d | Preservation / Blast & Coat [31 h] |
| A05350 |  | Blast / mechanical prep bilge preservation 6A — Ready Room No. 3 | 0d | 2026-08-08 A | 2026-08-17 | A05340 SS+2.4d | 21% | 0d | Preservation / Blast & Coat [111 h] |
| A11120 |  | Blast / mechanical prep bilge preservation 5A — Sponson storeroom No. 4 | 0d | 2026-08-08 A | 2026-08-20 | A11110 FS+2.4d | 14% | 0d | Preservation / Blast & Coat [391 h] |
| A06400 |  | Blast / mechanical prep overhead coating 8A — Ready Room No. 8 | 0d | 2026-08-08 A | 2026-08-10 | A06390 FS+2.4d | 85% | 0d | Preservation / Blast & Coat [10 h]; Rigging & Weight Handling [3 h] |
| A17480 |  | Surface survey — overhead coating 5A — Aircraft elevator No. 4 trunk | 0d | 2026-08-08 A | 2026-08-19 |  | 18% | 0d | Preservation / Blast & Coat [67 h] |
| A18430 |  | Blast / mechanical prep overhead coating 6E — Hangar bay divisional door No. 2 | 0d | 2026-08-08 A | 2026-08-10 | A18420 | 71% | 0d | Preservation / Blast & Coat [45 h] |
| A05600 |  | Surface survey — deck coating 1B — Ready Room No. 4 | 0d | 2026-08-09 A | 2026-08-20 |  | 11% | 0d | Preservation / Blast & Coat [296 h] |
| A09230 |  | Surface survey — deck coating 9C — Weapons elevator No. 1 machinery room – port | 0d | 2026-08-09 A | 2026-08-21 |  | 8% | 0d | Preservation / Blast & Coat [86 h] |
| A05060 |  | Blast / mechanical prep overhead coating 6A — Ready Room No. 1 | 0d | 2026-08-10 A | 2026-08-22 | A05050 SS+2.4d |  | 0d | Preservation / Blast & Coat [205 h] |
| A16830 |  | Blast / mechanical prep deck coating 1A — Ordnance staging area No. 3 | 0d | 2026-08-10 A | 2026-08-22 | A16820 |  | 0d | Preservation / Blast & Coat [204 h] |
| A10680 |  | Surface survey — overhead coating 2A — Life raft stowage No. 5 | 0d | 2026-08-10 A | 2026-08-14 |  |  | 0d | Preservation / Blast & Coat [77 h] |
| A10950 |  | Surface survey — bilge preservation 5B — Ordnance ready service locker No. 4 | 0d | 2026-08-10 | 2026-08-12 |  |  |  | Preservation / Blast & Coat [16 h] |
| A12930 |  | Surface survey — deck coating 2A — AIMD Avionics repair shop | 0d | 2026-08-10 | 2026-08-22 |  |  |  | Preservation / Blast & Coat [108 h] |
| A14220 |  | Blast / mechanical prep overhead coating 3B — AIMD Aviation electricians' shop | 0d | 2026-08-10 | 2026-08-22 | A14210 FS+2.4d |  |  | Preservation / Blast & Coat [97 h] |
| A17330 |  | Blast / mechanical prep deck coating 9A — Hangar bay workshop No. 3 | 0d | 2026-08-10 | 2026-08-14 | A17320 |  |  | Preservation / Blast & Coat [74 h] |
| A12660 |  | Surface survey — overhead coating 6B — Flammable liquids storeroom No. 1 | 0d | 2026-08-10 | 2026-08-13 |  |  |  | Preservation / Blast & Coat [26 h] |
| A05160 |  | Surface survey — deck coating 5C — Ready Room No. 1 | 0d | 2026-08-11 | 2026-08-17 |  |  |  | Preservation / Blast & Coat [84 h]; Rigging & Weight Handling [22 h] |
| A08060 |  | Surface survey — overhead coating 7A (02-56-2-A) | 0d | 2026-08-11 | 2026-08-15 |  |  |  | Preservation / Blast & Coat [37 h] |
| A06110 |  | Prime coat bilge preservation 1C — Ready Room No. 6 | 0d | 2026-08-11 | 2026-08-17 | A06100 FS+2.4d |  |  | Preservation / Blast & Coat [159 h] |
| A09330 |  | Surface survey — overhead coating 2E — Weapons elevator No. 1 machinery room – port | 0d | 2026-08-11 | 2026-08-14 |  |  |  | Preservation / Blast & Coat [20 h] |
| A05750 |  | Surface survey — overhead coating 4C — Air wing ordnance shop | 0d | 2026-08-12 | 2026-08-17 |  |  |  | Preservation / Blast & Coat [30 h] |
| A16890 |  | Prime coat deck coating 8B — Ordnance staging area No. 3 | 0d | 2026-08-12 | 2026-08-20 | A16880 FS+2.4d |  |  | Preservation / Blast & Coat [68 h] |
| A06440 |  | Surface survey — deck coating 4B — Ready Room No. 8 | 0d | 2026-08-12 | 2026-08-22 |  |  |  | Preservation / Blast & Coat [362 h] |
| A15300 |  | Prime coat bilge preservation 9A — Hangar bay fire station No. 1 | 0d | 2026-08-12 | 2026-08-24 | A15290 SS+2.4d |  |  | Preservation / Blast & Coat [277 h] |
| A08700 |  | Blast / mechanical prep bilge preservation 9B — Life raft stowage No. 3 | 0d | 2026-08-12 | 2026-08-22 | A08690 FS+2.4d |  |  | Preservation / Blast & Coat [139 h]; Rigging & Weight Handling [35 h] |
| A15890 |  | Blast / mechanical prep bilge preservation 7D — Hangar bay workshop No. 1 | 0d | 2026-08-12 | 2026-08-16 | A15880 FS+2.4d |  |  | Preservation / Blast & Coat [83 h]; Rigging & Weight Handling [21 h] |
| A19250 |  | Surface survey — overhead coating 8A — Hangar bay fire station No. 6 | 0d | 2026-08-12 | 2026-08-21 |  |  |  | Preservation / Blast & Coat [128 h] |
| A06410 |  | Prime coat overhead coating 8A — Ready Room No. 8 | 0d | 2026-08-12 | 2026-08-15 | A06400 |  |  | Preservation / Blast & Coat [57 h] |
| A10580 |  | Surface survey — deck coating 9A — Weapons elevator No. 3 machinery room – port | 0d | 2026-08-12 | 2026-08-15 |  |  |  | Preservation / Blast & Coat [58 h] |
| A05290 |  | Surface survey — deck coating 5B — Ready Room No. 2 | 0d | 2026-08-13 | 2026-08-17 |  |  |  | Preservation / Blast & Coat [33 h] |
| A15390 |  | Surface survey — bilge preservation 8B — Ordnance staging area No. 1 | 0d | 2026-08-13 | 2026-08-20 |  |  |  | Preservation / Blast & Coat [61 h] |
| A13930 |  | Prime coat bilge preservation 6B — Tool issue room No. 3 | 0d | 2026-08-13 | 2026-08-26 | A13920 SS+7.2d |  |  | Preservation / Blast & Coat [324 h] |

| ID | Activity | Duration | Start | Finish | Predecessors | Resources |
| --- | --- | --- | --- | --- | --- | --- |
| A17150 | Prime coat deck coating 8B — Hangar Bay 2 (elevator No. 2 bay) | 0d | 2026-08-13 | 2026-08-26 | A17140 | Preservation / Blast & Coat [492 h] |
| A17440 | Blast / mechanical prep deck coating 8B — Aircraft tie-down locker No. 2 | 0d | 2026-08-13 | 2026-08-22 | A17430 | Preservation / Blast & Coat [217 h] |
| A18440 | Prime coat overhead coating 6E — Hangar bay divisional door No. 2 | 0d | 2026-08-13 | 2026-08-24 | A18430 FS+0.8d | Preservation / Blast & Coat [337 h] |
| A03230 | Surface survey — deck coating 5B — Avionics shop No. 2 | 0d | 2026-08-13 | 2026-08-20 |  | Preservation / Blast & Coat [252 h] |
| A03750 | Blast / mechanical prep bilge preservation 1A — Avionics shop No. 3 | 0d | 2026-08-13 | 2026-08-16 | A03740 | Preservation / Blast & Coat [19 h] |
| A12610 | Surface survey — overhead coating 8A — Flammable liquids storeroom No. 1 | 0d | 2026-08-13 | 2026-08-16 |  | Preservation / Blast & Coat [30 h] |
| A10910 | Blast / mechanical prep overhead coating 3A — Ordnance ready service locker No. 4 | 0d | 2026-08-14 | 2026-08-19 | A10900 | Preservation / Blast & Coat [92 h] |
| A06050 | Blast / mechanical prep deck coating 3B — Ready Room No. 6 | 0d | 2026-08-14 | 2026-08-19 | A06040 FS+0.8d | Preservation / Blast & Coat [124 h] |
| A06540 | Surface survey — overhead coating 3B — Ready Room No. 9 | 0d | 2026-08-14 | 2026-08-28 |  | Preservation / Blast & Coat [353 h] |
| A15180 | Surface survey — bilge preservation 2B — Hangar Bay 1 | 0d | 2026-08-14 | 2026-08-21 |  | Preservation / Blast & Coat [237 h] |
| A06260 | Prime coat bilge preservation 8A — Ready Room No. 7 | 0d | 2026-08-14 | 2026-08-16 | A06250 FS+2.4d | Preservation / Blast & Coat [35 h] |
| A03490 | Surface survey — bilge preservation 4B (03-73-1-Q) | 0d | 2026-08-14 | 2026-08-25 |  | Preservation / Blast & Coat [70 h]; Rigging & Weight Handling [18 h] |
| A19200 | Surface survey — overhead coating 1C — Ordnance staging area No. 6 | 0d | 2026-08-14 | 2026-08-20 |  | Preservation / Blast & Coat [133 h]; Rigging & Weight Handling [34 h] |
| A15950 | Prime coat overhead coating 4A — Hangar deck storeroom No. 1 | 0d | 2026-08-15 | 2026-08-20 | A15940 FS+0.8d | Preservation / Blast & Coat [41 h] |
| A10960 | Blast / mechanical prep bilge preservation 5B — Ordnance ready service locker No. 4 | 0d | 2026-08-15 | 2026-08-24 | A10950 FS+0.8d | Preservation / Blast & Coat [160 h] |
| A09810 | Blast / mechanical prep deck coating 2C — Weapons elevator No. 2 machinery room – port | 0d | 2026-08-15 | 2026-08-27 | A09800 | Preservation / Blast & Coat [189 h] |
| A10690 | Blast / mechanical prep overhead coating 2A — Life raft stowage No. 5 | 0d | 2026-08-15 | 2026-08-25 | A10680 | Preservation / Blast & Coat [68 h] |
| A08500 | Blast / mechanical prep deck coating 6C — Aircraft elevator No. 1 machinery room | 0d | 2026-08-15 | 2026-08-27 | A08490 FS+2.4d | Preservation / Blast & Coat [104 h] |
| A08070 | Blast / mechanical prep overhead coating 7A (02-56-2-A) | 0d | 2026-08-15 | 2026-08-20 | A08060 | Preservation / Blast & Coat [41 h] |
| A14370 | Surface survey — deck coating 6A — Flammable liquids storeroom No. 3 | 0d | 2026-08-15 | 2026-08-28 |  | Preservation / Blast & Coat [176 h] |
| A16680 | Blast / mechanical prep overhead coating 4B — Hangar Bay 2 | 0d | 2026-08-16 | 2026-08-18 | A16670 | Preservation / Blast & Coat [9 h]; Rigging & Weight Handling [3 h] |
| A18010 | Surface survey — bilge preservation 5D — Hangar bay fire station No. 4 | 0d | 2026-08-16 | 2026-08-20 |  | Preservation / Blast & Coat [30 h] |
| A08800 | Blast / mechanical prep overhead coating 9B — Weapons elevator No. 1 machinery room – starboard | 0d | 2026-08-16 | 2026-08-21 | A08790 | Preservation / Blast & Coat [40 h] |
| A19560 | Surface survey — overhead coating 4B — Hangar bay workshop No. 4 | 0d | 2026-08-16 | 2026-08-26 |  | Preservation / Blast & Coat [172 h] |
| A08640 | Surface survey — overhead coating 1A — Life raft stowage No. 3 | 0d | 2026-08-16 | 2026-08-24 |  | Preservation / Blast & Coat [111 h] |
| A12670 | Blast / mechanical prep overhead coating 6B — Flammable liquids storeroom No. 1 | 0d | 2026-08-16 | 2026-08-21 | A12660 | Preservation / Blast & Coat [73 h] |
| A06420 | Top coat overhead coating 8A — Ready Room No. 8 | 0d | 2026-08-16 | 2026-08-22 | A06410 FS+2.4d | Preservation / Blast & Coat [178 h] |
| A17340 | Prime coat deck coating 9A — Hangar bay workshop No. 3 | 0d | 2026-08-17 | 2026-08-21 | A17330 FS+2.4d | Preservation / Blast & Coat [111 h] |
| A12040 | Blast / mechanical prep overhead coating 5C — Weapons elevator No. 6 machinery room – port | 0d | 2026-08-17 | 2026-08-21 | A12030 FS+2.4d | Preservation / Blast & Coat [35 h] |
| A09340 | Blast / mechanical prep overhead coating 2E — Weapons elevator No. 1 machinery room – port | 0d | 2026-08-17 | 2026-08-27 | A09330 | Preservation / Blast & Coat [85 h] |
| A10590 | Blast / mechanical prep deck coating 9A — Weapons elevator No. 3 machinery room – port | 0d | 2026-08-17 | 2026-08-23 | A10580 | Preservation / Blast & Coat [98 h] |
| A12620 | Blast / mechanical prep overhead coating 8A — Flammable liquids storeroom No. 1 | 0d | 2026-08-17 | 2026-08-19 | A12610 FS+0.8d | Preservation / Blast & Coat [75 h] |
| A09700 | Surface survey — bilge preservation 9A — Weapons elevator No. 2 machinery room – port | 0d | 2026-08-17 | 2026-08-20 |  | Preservation / Blast & Coat [113 h] |
| A06270 | Top coat bilge preservation 8A — Ready Room No. 7 | 0d | 2026-08-17 | 2026-08-28 | A06260 | Preservation / Blast & Coat [75 h]; Rigging & Weight Handling [19 h] |
| A15900 | Prime coat bilge preservation 7D — Hangar bay workshop No. 1 | 0d | 2026-08-17 | 2026-08-25 | A15890 | Preservation / Blast & Coat [61 h] |
| A05760 | Blast / mechanical prep overhead coating 4C — Air wing ordnance shop | 0d | 2026-08-18 | 2026-08-24 | A05750 FS+0.8d | Preservation / Blast & Coat [163 h] |
| A18110 | Surface survey — deck coating 9B — Ordnance staging area No. 5 | 0d | 2026-08-18 | 2026-08-26 |  | Preservation / Blast & Coat [72 h] |
| A10450 | Prime coat bilge preservation 7A — Aircraft elevator No. 4 machinery room | 0d | 2026-08-18 | 2026-08-29 | A10440 | Preservation / Blast & Coat [195 h] |
| A05170 | Blast / mechanical prep deck coating 5C — Ready Room No. 1 | 0d | 2026-08-18 | 2026-08-25 | A05160 FS+0.8d | Preservation / Blast & Coat [40 h] |
| A03760 | Prime coat bilge preservation 1A — Avionics shop No. 3 | 0d | 2026-08-18 | 2026-09-01 | A03750 FS+0.8d | Preservation / Blast & Coat [102 h] |
| A17710 | Blast / mechanical prep bilge preservation 8B — Ordnance staging area No. 4 | 0d | 2026-08-18 | 2026-08-21 | A17700 FS+0.8d | Preservation / Blast & Coat [66 h] |
| A04200 | Surface survey — bilge preservation 9D — Aviation storeroom No. 3 | 0d | 2026-08-18 | 2026-08-25 |  | Preservation / Blast & Coat [54 h] |
| A05360 | Prime coat bilge preservation 6A — Ready Room No. 3 | 0d | 2026-08-18 | 2026-08-30 | A05350 SS+7.2d | Preservation / Blast & Coat [203 h] |
| A14160 | Surface survey — overhead coating 7A — AIMD Aviation electricians' shop | 0d | 2026-08-19 | 2026-08-26 |  | Preservation / Blast & Coat [98 h] |
| A10920 | Prime coat overhead coating 3A — Ordnance ready service locker No. 4 | 0d | 2026-08-19 | 2026-08-27 | A10910 FS+0.8d | Preservation / Blast & Coat [139 h] |
| A05300 | Blast / mechanical prep deck coating 5B — Ready Room No. 2 | 0d | 2026-08-19 | 2026-09-01 | A05290 | Preservation / Blast & Coat [79 h] |
| A05390 | Surface survey — overhead coating 7B — Ready Room No. 3 | 0d | 2026-08-19 | 2026-08-30 |  | Preservation / Blast & Coat [389 h] |
| A06120 | Top coat bilge preservation 1C — Ready Room No. 6 | 0d | 2026-08-19 | 2026-08-25 | A06110 | Preservation / Blast & Coat [36 h] |
| A16690 | Prime coat overhead coating 4B — Hangar Bay 2 | 0d | 2026-08-20 | 2026-08-27 | A16680 SS+4.8d | Preservation / Blast & Coat [184 h] |
| A06060 | Prime coat deck coating 3B — Ready Room No. 6 | 0d | 2026-08-20 | 2026-09-02 | A06050 FS-0.8d | Preservation / Blast & Coat [73 h] |
| A13340 | Surface survey — deck coating 9A — Squadron storeroom No. 4 | 0d | 2026-08-21 | 2026-08-26 |  | Preservation / Blast & Coat [47 h] |
| A17350 | Top coat deck coating 9A — Hangar bay workshop No. 3 | 0d | 2026-08-21 | 2026-08-31 | A17340 | Preservation / Blast & Coat [223 h] |
| A11130 | Prime coat bilge preservation 5A — Sponson storeroom No. 4 | 0d | 2026-08-21 | 2026-09-03 | A11120 FS+2.4d | Preservation / Blast & Coat [308 h] |
| A12630 | Prime coat overhead coating 8A — Flammable liquids storeroom No. 1 | 0d | 2026-08-21 | 2026-08-27 | A12620 | Preservation / Blast & Coat [141 h] |
| A19210 | Blast / mechanical prep overhead coating 1C — Ordnance staging area No. 6 | 0d | 2026-08-21 | 2026-09-03 | A19200 | Preservation / Blast & Coat [201 h] |
| A09710 | Blast / mechanical prep bilge preservation 9A — Weapons elevator No. 2 machinery room – port | 0d | 2026-08-21 | 2026-09-04 | A09700 | Preservation / Blast & Coat [200 h] |
| A18020 | Blast / mechanical prep bilge preservation 5D — Hangar bay fire station No. 4 | 0d | 2026-08-21 | 2026-08-27 | A18010 | Preservation / Blast & Coat [33 h] |
| A17490 | Blast / mechanical prep overhead coating 5A — Aircraft elevator No. 4 trunk | 0d | 2026-08-21 | 2026-08-28 | A17480 | Preservation / Blast & Coat [177 h] |
| A12680 | Prime coat overhead coating 6B — Flammable liquids storeroom No. 1 | 0d | 2026-08-22 | 2026-09-04 | A12670 FS+2.4d | Preservation / Blast & Coat [120 h] |
| A14230 | Prime coat overhead coating 3B — AIMD Aviation electricians' shop | 0d | 2026-08-22 | 2026-08-30 | A14220 FS+0.8d | Preservation / Blast & Coat [168 h] |
| A17720 | Prime coat bilge preservation 8B — Ordnance staging area No. 4 | 0d | 2026-08-22 | 2026-08-29 | A17710 FS+2.4d | Preservation / Blast & Coat [56 h] |
| A15400 | Blast / mechanical prep bilge preservation 8B — Ordnance staging area No. 1 | 0d | 2026-08-22 | 2026-08-28 | A15390 | Preservation / Blast & Coat [61 h]; Rigging & Weight Handling [16 h] |
| A03240 | Blast / mechanical prep deck coating 5B — Avionics shop No. 2 | 0d | 2026-08-22 | 2026-09-04 | A03230 FS+2.4d | Preservation / Blast & Coat [210 h] |
| A09240 | Blast / mechanical prep deck coating 9C — Weapons elevator No. 1 machinery room – port | 0d | 2026-08-22 | 2026-09-02 | A09230 | Preservation / Blast & Coat [276 h] |
| A05610 | Blast / mechanical prep deck coating 1B — Ready Room No. 4 | 0d | 2026-08-22 | 2026-08-26 | A05600 | Preservation / Blast & Coat [28 h] |
| A08810 | Prime coat overhead coating 9B — Weapons elevator No. 1 machinery room – starboard | 0d | 2026-08-22 | 2026-08-29 | A08800 | Preservation / Blast & Coat [80 h] |
| A15960 | Top coat overhead coating 4A — Hangar deck storeroom No. 1 | 0d | 2026-08-22 | 2026-09-01 | A15950 | Preservation / Blast & Coat [230 h] |
| A16900 | Top coat deck coating 8B — Ordnance staging area No. 3 | 0d | 2026-08-22 | 2026-08-25 | A16890 | Preservation / Blast & Coat [25 h] |
| A08710 | Prime coat bilge preservation 9B — Life raft stowage No. 3 | 0d | 2026-08-22 | 2026-09-01 | A08700 | Preservation / Blast & Coat [242 h]; Rigging & Weight Handling [61 h] |
| A08080 | Prime coat overhead coating 7A (02-56-2-A) | 0d | 2026-08-23 | 2026-08-25 | A08070 | Preservation / Blast & Coat [39 h] |

| ID | Activity | Duration | Start | Finish | Predecessors | Resources |
| --- | --- | --- | --- | --- | --- | --- |
| A12050 | Prime coat overhead coating 5C — Weapons elevator No. 6 machinery room – port | 0d | 2026-08-23 | 2026-09-04 | A12040 | Preservation / Blast & Coat [199 h] |
| A19260 | Blast / mechanical prep overhead coating 8A — Hangar bay fire station No. 6 | 0d | 2026-08-23 | 2026-08-28 | A19250 FS+0.8d | Preservation / Blast & Coat [82 h] |
| A06450 | Blast / mechanical prep deck coating 4B — Ready Room No. 8 | 0d | 2026-08-23 | 2026-08-30 | A06440 | Preservation / Blast & Coat [61 h] |
| A15190 | Blast / mechanical prep bilge preservation 2B — Hangar Bay 1 | 0d | 2026-08-23 | 2026-08-27 | A15180 FS+2.4d | Preservation / Blast & Coat [46 h] |
| A12940 | Blast / mechanical prep deck coating 2A — AIMD Avionics repair shop | 0d | 2026-08-24 | 2026-09-06 | A12930 | Preservation / Blast & Coat [236 h] |
| A18450 | Top coat overhead coating 6E — Hangar bay divisional door No. 2 | 0d | 2026-08-24 | 2026-09-03 | A18440 | Preservation / Blast & Coat [172 h] |
| A05070 | Prime coat overhead coating 6A — Ready Room No. 1 | 0d | 2026-08-25 | 2026-09-07 | A05060 FS+2.4d | Preservation / Blast & Coat [230 h] |
| A16840 | Prime coat deck coating 1A — Ordnance staging area No. 3 | 0d | 2026-08-25 | 2026-08-31 | A16830 | Preservation / Blast & Coat [51 h] |
| A17450 | Prime coat deck coating 8B — Aircraft tie-down locker No. 2 | 0d | 2026-08-25 | 2026-09-01 | A17440 FS+0.8d | Preservation / Blast & Coat [99 h] |
| A06430 | Cure & inspect overhead coating 8A — Ready Room No. 8 | 0d | 2026-08-25 | 2026-09-02 | A06420 | Preservation / Blast & Coat [126 h] |
| A10600 | Prime coat deck coating 9A — Weapons elevator No. 3 machinery room – port | 0d | 2026-08-25 | 2026-08-30 | A10590 FS+0.8d | Preservation / Blast & Coat [38 h] |
| A10700 | Prime coat overhead coating 2A — Life raft stowage No. 5 | 0d | 2026-08-25 | 2026-09-06 | A10690 FS+2.4d | Preservation / Blast & Coat [144 h] |
| A05770 | Prime coat overhead coating 4C — Air wing ordnance shop | 0d | 2026-08-25 | 2026-09-04 | A05760 | Preservation / Blast & Coat [367 h] |
| A04210 | Blast / mechanical prep bilge preservation 9D — Aviation storeroom No. 3 | 0d | 2026-08-25 | 2026-09-01 | A04200 | Preservation / Blast & Coat [202 h] |
| A05180 | Prime coat deck coating 5C — Ready Room No. 1 | 0d | 2026-08-26 | 2026-08-31 | A05170 | Preservation / Blast & Coat [32 h]; Rigging & Weight Handling [8 h] |
| A18120 | Blast / mechanical prep deck coating 9B — Ordnance staging area No. 5 | 0d | 2026-08-26 | 2026-09-06 | A18110 | Preservation / Blast & Coat [260 h] |
| A10970 | Prime coat bilge preservation 5B — Ordnance ready service locker No. 4 | 0d | 2026-08-26 | 2026-09-06 | A10960 FS+2.4d | Preservation / Blast & Coat [277 h] |
| A15310 | Top coat bilge preservation 9A — Hangar bay fire station No. 1 | 0d | 2026-08-26 | 2026-09-04 | A15300 | Preservation / Blast & Coat [76 h]; Rigging & Weight Handling [20 h] |
| A03500 | Blast / mechanical prep bilge preservation 4B (03-73-1-Q) | 0d | 2026-08-26 | 2026-09-05 | A03490 | Preservation / Blast & Coat [153 h] |
| A17160 | Top coat deck coating 8B — Hangar Bay 2 (elevator No. 2 bay) | 0d | 2026-08-27 | 2026-09-02 | A17150 | Preservation / Blast & Coat [204 h] |
| A10930 | Top coat overhead coating 3A — Ordnance ready service locker No. 4 | 0d | 2026-08-27 | 2026-09-05 | A10920 FS+2.4d | Preservation / Blast & Coat [145 h] |
| A08650 | Blast / mechanical prep overhead coating 1A — Life raft stowage No. 3 | 0d | 2026-08-27 | 2026-08-30 | A08640 FS+0.8d | Preservation / Blast & Coat [17 h] |
| A09350 | Prime coat overhead coating 2E — Weapons elevator No. 1 machinery room – port | 0d | 2026-08-27 | 2026-09-03 | A09340 SS+4.8d | Preservation / Blast & Coat [128 h] |
| A13940 | Top coat bilge preservation 6B — Tool issue room No. 3 | 0d | 2026-08-27 | 2026-09-08 | A13930 | Preservation / Blast & Coat [416 h] |
| A08510 | Prime coat deck coating 6C — Aircraft elevator No. 1 machinery room | 0d | 2026-08-27 | 2026-09-08 | A08500 | Preservation / Blast & Coat [73 h] |
| A09820 | Prime coat deck coating 2C — Weapons elevator No. 2 machinery room – port | 0d | 2026-08-27 | 2026-09-08 | A09810 FS+0.8d | Preservation / Blast & Coat [97 h] |
| A06130 | Cure & inspect bilge preservation 1C — Ready Room No. 6 | 0d | 2026-08-27 | 2026-09-02 | A06120 | Preservation / Blast & Coat [78 h] |
| A15910 | Top coat bilge preservation 7D — Hangar bay workshop No. 1 | 0d | 2026-08-27 | 2026-08-30 | A15900 FS+0.8d | Preservation / Blast & Coat [72 h] |
| A19570 | Blast / mechanical prep overhead coating 4B — Hangar bay workshop No. 4 | 0d | 2026-08-28 | 2026-09-10 | A19560 FS+2.4d | Preservation / Blast & Coat [93 h] |
| A08090 | Top coat overhead coating 7A (02-56-2-A) | 0d | 2026-08-28 | 2026-09-02 | A08080 | Preservation / Blast & Coat [76 h] |
| A13350 | Blast / mechanical prep deck coating 9A — Squadron storeroom No. 4 | 0d | 2026-08-28 | 2026-09-11 | A13340 FS+0.8d | Preservation / Blast & Coat [253 h] |
| A14170 | Blast / mechanical prep overhead coating 7A — AIMD Aviation electricians' shop | 0d | 2026-08-28 | 2026-09-02 | A14160 | Preservation / Blast & Coat [118 h] |
| A16910 | Cure & inspect deck coating 8B — Ordnance staging area No. 3 | 0d | 2026-08-28 | 2026-08-31 | A16900 FS+0.8d | Preservation / Blast & Coat [57 h] |
| A06280 | Cure & inspect bilge preservation 8A — Ready Room No. 7 | 0d | 2026-08-28 | 2026-09-11 | A06270 | Preservation / Blast & Coat [88 h] |
| A05620 | Prime coat deck coating 1B — Ready Room No. 4 | 0d | 2026-08-28 | 2026-09-11 | A05610 | Preservation / Blast & Coat [308 h] |
| A15200 | Prime coat bilge preservation 2B — Hangar Bay 1 | 0d | 2026-08-29 | 2026-09-02 | A15190 | Preservation / Blast & Coat [81 h]; Rigging & Weight Handling [21 h] |
| A19270 | Prime coat overhead coating 8A — Hangar bay fire station No. 6 | 0d | 2026-08-29 | 2026-09-11 | A19260 FS+2.4d | Preservation / Blast & Coat [110 h] |
| A06550 | Blast / mechanical prep overhead coating 3B — Ready Room No. 9 | 0d | 2026-08-29 | 2026-09-05 | A06540 | Preservation / Blast & Coat [226 h] |
| A16700 | Top coat overhead coating 4B — Hangar Bay 2 | 0d | 2026-08-29 | 2026-09-07 | A16690 | Preservation / Blast & Coat [287 h] |
| A18030 | Prime coat bilge preservation 5D — Hangar bay fire station No. 4 | 0d | 2026-08-30 | 2026-09-02 | A18020 FS+2.4d | Preservation / Blast & Coat [18 h] |
| A17730 | Top coat bilge preservation 8B — Ordnance staging area No. 4 | 0d | 2026-08-30 | 2026-09-05 | A17720 FS+2.4d | Preservation / Blast & Coat [41 h] |
| A14380 | Blast / mechanical prep deck coating 6A — Flammable liquids storeroom No. 3 | 0d | 2026-08-30 | 2026-09-03 | A14370 | Preservation / Blast & Coat [45 h] |
| A12640 | Top coat overhead coating 8A — Flammable liquids storeroom No. 1 | 0d | 2026-08-30 | 2026-09-06 | A12630 | Preservation / Blast & Coat [92 h] |
| A08820 | Top coat overhead coating 9B — Weapons elevator No. 1 machinery room – starboard | 0d | 2026-08-30 | 2026-09-13 | A08810 | Preservation / Blast & Coat [111 h] |
| A08660 | Prime coat overhead coating 1A — Life raft stowage No. 3 | 0d | 2026-08-31 | 2026-09-09 | A08650 | Preservation / Blast & Coat [318 h] |
| A15410 | Prime coat bilge preservation 8B — Ordnance staging area No. 1 | 0d | 2026-08-31 | 2026-09-08 | A15400 FS-2.4d | Preservation / Blast & Coat [133 h] |
| A17500 | Prime coat overhead coating 5A — Aircraft elevator No. 4 trunk | 0d | 2026-08-31 | 2026-09-07 | A17490 | Preservation / Blast & Coat [58 h] |
| A10460 | Top coat bilge preservation 7A — Aircraft elevator No. 4 machinery room | 0d | 2026-08-31 | 2026-09-02 | A10450 | Preservation / Blast & Coat [53 h] |
| A15920 | Cure & inspect bilge preservation 7D — Hangar bay workshop No. 1 | 0d | 2026-09-01 | 2026-09-11 | A15910 FS+2.4d | Preservation / Blast & Coat [97 h] |
| A05400 | Blast / mechanical prep overhead coating 7B — Ready Room No. 3 | 0d | 2026-09-01 | 2026-09-12 | A05390 FS+0.8d | Preservation / Blast & Coat [97 h] |
| A17360 | Cure & inspect deck coating 9A — Hangar bay workshop No. 3 | 0d | 2026-09-01 | 2026-09-10 | A17350 | Preservation / Blast & Coat [309 h] |
| A06460 | Prime coat deck coating 4B — Ready Room No. 8 | 0d | 2026-09-01 | 2026-09-11 | A06450 | Preservation / Blast & Coat [267 h] |
| A05310 | Prime coat deck coating 5B — Ready Room No. 2 | 0d | 2026-09-01 | 2026-09-08 | A05300 | Preservation / Blast & Coat [148 h] |
| A05190 | Top coat deck coating 5C — Ready Room No. 1 | 0d | 2026-09-01 | 2026-09-04 | A05180 | Preservation / Blast & Coat [57 h]; Rigging & Weight Handling [15 h] |
| A15970 | Cure & inspect overhead coating 4A — Hangar deck storeroom No. 1 | 0d | 2026-09-01 | 2026-09-08 | A15960 FS+2.4d | Preservation / Blast & Coat [84 h] |
| A05370 | Top coat bilge preservation 6A — Ready Room No. 3 | 0d | 2026-09-01 | 2026-09-11 | A05360 | Preservation / Blast & Coat [81 h] |
| A16850 | Top coat deck coating 1A — Ordnance staging area No. 3 | 0d | 2026-09-02 | 2026-09-05 | A16840 | Preservation / Blast & Coat [45 h] |
| A17170 | Cure & inspect deck coating 8B — Hangar Bay 2 (elevator No. 2 bay) | 0d | 2026-09-02 | 2026-09-16 | A17160 | Preservation / Blast & Coat [279 h] |
| A17460 | Top coat deck coating 8B — Aircraft tie-down locker No. 2 | 0d | 2026-09-02 | 2026-09-10 | A17450 | Preservation / Blast & Coat [67 h] |
| A14240 | Top coat overhead coating 3B — AIMD Aviation electricians' shop | 0d | 2026-09-02 | 2026-09-04 | A14230 | Preservation / Blast & Coat [17 h] |
| A06070 | Top coat deck coating 3B — Ready Room No. 6 | 0d | 2026-09-02 | 2026-09-16 | A06060 FS-0.8d | Preservation / Blast & Coat [214 h] |
| A10610 | Top coat deck coating 9A — Weapons elevator No. 3 machinery room – port | 0d | 2026-09-02 | 2026-09-15 | A10600 FS+2.4d | Preservation / Blast & Coat [164 h]; Rigging & Weight Handling [41 h] |
| A08720 | Top coat bilge preservation 9B — Life raft stowage No. 3 | 0d | 2026-09-02 | 2026-09-04 | A08710 | Preservation / Blast & Coat [13 h] |
| A04220 | Prime coat bilge preservation 9D — Aviation storeroom No. 3 | 0d | 2026-09-03 | 2026-09-09 | A04210 FS+2.4d | Preservation / Blast & Coat [76 h] |
| A08100 | Cure & inspect overhead coating 7A (02-56-2-A) | 0d | 2026-09-03 | 2026-09-17 | A08090 SS+2.4d | Preservation / Blast & Coat [83 h] |
| A03770 | Top coat bilge preservation 1A — Avionics shop No. 3 | 0d | 2026-09-03 | 2026-09-15 | A03760 | Preservation / Blast & Coat [281 h] |
| A15210 | Top coat bilge preservation 2B — Hangar Bay 1 | 0d | 2026-09-03 | 2026-09-12 | A15200 | Preservation / Blast & Coat [205 h] |
| A18040 | Top coat bilge preservation 5D — Hangar bay fire station No. 4 | 0d | 2026-09-03 | 2026-09-07 | A18030 FS+2.4d | Preservation / Blast & Coat [28 h] |
| A14180 | Prime coat overhead coating 7A — AIMD Aviation electricians' shop | 0d | 2026-09-03 | 2026-09-09 | A14170 | Preservation / Blast & Coat [42 h] |
| A10470 | Cure & inspect bilge preservation 7A — Aircraft elevator No. 4 machinery room | 0d | 2026-09-04 | 2026-09-10 | A10460 | Preservation / Blast & Coat [124 h]; Rigging & Weight Handling [31 h] |

| ID | Activity | Duration | Start | Finish | Predecessors | Resources |
| --- | --- | --- | --- | --- | --- | --- |
| A15320 | Cure & inspect bilge preservation 9A — Hangar bay fire station No. 1 | 0d | 2026-09-04 | 2026-09-09 | A15310 FS+2.4d | Preservation / Blast & Coat [94 h] |
| A09250 | Prime coat deck coating 9C — Weapons elevator No. 1 machinery room – port | 0d | 2026-09-04 | 2026-09-17 | A09240 | Preservation / Blast & Coat [330 h] |
| A12690 | Top coat overhead coating 6B — Flammable liquids storeroom No. 1 | 0d | 2026-09-04 | 2026-09-14 | A12680 SS+4.8d | Preservation / Blast & Coat [172 h] |
| A09360 | Top coat overhead coating 2E — Weapons elevator No. 1 machinery room – port | 0d | 2026-09-04 | 2026-09-14 | A09350 FS+2.4d | Preservation / Blast & Coat [56 h] |
| A08730 | Cure & inspect bilge preservation 9B — Life raft stowage No. 3 | 0d | 2026-09-05 | 2026-09-17 | A08720 FS+2.4d | Preservation / Blast & Coat [213 h] |
| A05780 | Top coat overhead coating 4C — Air wing ordnance shop | 0d | 2026-09-05 | 2026-09-11 | A05770 FS+2.4d | Preservation / Blast & Coat [95 h] |
| A12060 | Top coat overhead coating 5C — Weapons elevator No. 6 machinery room – port | 0d | 2026-09-05 | 2026-09-17 | A12050 | Preservation / Blast & Coat [344 h] |
| A18460 | Cure & inspect overhead coating 6E — Hangar bay divisional door No. 2 | 0d | 2026-09-05 | 2026-09-12 | A18450 | Preservation / Blast & Coat [52 h] |
| A11140 | Top coat bilge preservation 5A — Sponson storeroom No. 4 | 0d | 2026-09-05 | 2026-09-18 | A11130 FS+2.4d | Preservation / Blast & Coat [354 h] |
| A14250 | Cure & inspect overhead coating 3B — AIMD Aviation electricians' shop | 0d | 2026-09-05 | 2026-09-10 | A14240 | Preservation / Blast & Coat [92 h] |
| A19220 | Prime coat overhead coating 1C — Ordnance staging area No. 6 | 0d | 2026-09-05 | 2026-09-17 | A19210 FS+0.8d | Preservation / Blast & Coat [83 h] |
| A14390 | Prime coat deck coating 6A — Flammable liquids storeroom No. 3 | 0d | 2026-09-05 | 2026-09-15 | A14380 FS+0.8d | Preservation / Blast & Coat [78 h] |
| A16860 | Cure & inspect deck coating 1A — Ordnance staging area No. 3 | 0d | 2026-09-05 | 2026-09-19 | A16850 | Preservation / Blast & Coat [78 h] |
| A03250 | Prime coat deck coating 5B — Avionics shop No. 2 | 0d | 2026-09-05 | 2026-09-18 | A03240 FS+2.4d | Preservation / Blast & Coat [115 h] |
| A06560 | Prime coat overhead coating 3B — Ready Room No. 9 | 0d | 2026-09-06 | 2026-09-15 | A06550 | Preservation / Blast & Coat [131 h] |
| A10940 | Cure & inspect overhead coating 3A — Ordnance ready service locker No. 4 | 0d | 2026-09-06 | 2026-09-15 | A10930 | Preservation / Blast & Coat [78 h] |
| A17740 | Cure & inspect bilge preservation 8B — Ordnance staging area No. 4 | 0d | 2026-09-06 | 2026-09-19 | A17730 | Preservation / Blast & Coat [174 h]; Rigging & Weight Handling [44 h] |
| A09720 | Prime coat bilge preservation 9A — Weapons elevator No. 2 machinery room – port | 0d | 2026-09-06 | 2026-09-15 | A09710 | Preservation / Blast & Coat [236 h] |
| A05200 | Cure & inspect deck coating 5C — Ready Room No. 1 | 0d | 2026-09-07 | 2026-09-17 | A05190 FS+2.4d | Preservation / Blast & Coat [92 h] |
| A12650 | Cure & inspect overhead coating 8A — Flammable liquids storeroom No. 1 | 0d | 2026-09-07 | 2026-09-15 | A12640 FS+2.4d | Preservation / Blast & Coat [181 h] |
| A10980 | Top coat bilge preservation 5B — Ordnance ready service locker No. 4 | 0d | 2026-09-07 | 2026-09-18 | A10970 | Preservation / Blast & Coat [56 h]; Rigging & Weight Handling [15 h] |
| A03510 | Prime coat bilge preservation 4B (03-73-1-Q) | 0d | 2026-09-07 | 2026-09-10 | A03500 FS+2.4d | Preservation / Blast & Coat [26 h] |
| A10710 | Top coat overhead coating 2A — Life raft stowage No. 5 | 0d | 2026-09-08 | 2026-09-12 | A10700 | Preservation / Blast & Coat [119 h] |
| A09830 | Top coat deck coating 2C — Weapons elevator No. 2 machinery room – port | 0d | 2026-09-08 | 2026-09-14 | A09820 | Preservation / Blast & Coat [88 h] |
| A18050 | Cure & inspect bilge preservation 5D — Hangar bay fire station No. 4 | 0d | 2026-09-08 | 2026-09-12 | A18040 | Preservation / Blast & Coat [57 h] |
| A08520 | Top coat deck coating 6C — Aircraft elevator No. 1 machinery room | 0d | 2026-09-08 | 2026-09-21 | A08510 | Preservation / Blast & Coat [304 h] |
| A17510 | Top coat overhead coating 5A — Aircraft elevator No. 4 trunk | 0d | 2026-09-08 | 2026-09-12 | A17500 FS+0.8d | Preservation / Blast & Coat [20 h]; Rigging & Weight Handling [6 h] |
| A05080 | Top coat overhead coating 6A — Ready Room No. 1 | 0d | 2026-09-08 | 2026-09-20 | A05070 FS+2.4d | Preservation / Blast & Coat [103 h] |
| A18130 | Prime coat deck coating 9B — Ordnance staging area No. 5 | 0d | 2026-09-09 | 2026-09-19 | A18120 | Preservation / Blast & Coat [92 h] |
| A15420 | Top coat bilge preservation 8B — Ordnance staging area No. 1 | 0d | 2026-09-09 | 2026-09-14 | A15410 FS+0.8d | Preservation / Blast & Coat [65 h] |
| A12950 | Prime coat deck coating 2A — AIMD Avionics repair shop | 0d | 2026-09-09 | 2026-09-15 | A12940 FS+0.8d | Preservation / Blast & Coat [36 h] |
| A04230 | Top coat bilge preservation 9D — Aviation storeroom No. 3 | 0d | 2026-09-09 | 2026-09-11 | A04220 FS+0.8d | Preservation / Blast & Coat [12 h] |
| A16710 | Cure & inspect overhead coating 4B — Hangar Bay 2 | 0d | 2026-09-09 | 2026-09-23 | A16700 FS+2.4d | Preservation / Blast & Coat [171 h] |
| A08670 | Top coat overhead coating 1A — Life raft stowage No. 3 | 0d | 2026-09-09 | 2026-09-21 | A08660 FS+0.8d | Preservation / Blast & Coat [274 h] |
| A13950 | Cure & inspect bilge preservation 6B — Tool issue room No. 3 | 0d | 2026-09-10 | 2026-09-14 | A13940 SS+2.4d | Preservation / Blast & Coat [24 h] |
| A14190 | Top coat overhead coating 7A — AIMD Aviation electricians' shop | 0d | 2026-09-10 | 2026-09-14 | A14180 | Preservation / Blast & Coat [67 h] |
| A03520 | Top coat bilge preservation 4B (03-73-1-Q) | 0d | 2026-09-10 | 2026-09-14 | A03510 | Preservation / Blast & Coat [111 h] |
| A05320 | Top coat deck coating 5B — Ready Room No. 2 | 0d | 2026-09-10 | 2026-09-15 | A05310 FS+2.4d | Preservation / Blast & Coat [85 h] |
| A17470 | Cure & inspect deck coating 8B — Aircraft tie-down locker No. 2 | 0d | 2026-09-11 | 2026-09-16 | A17460 SS+4.8d | Preservation / Blast & Coat [33 h] |
| A05790 | Cure & inspect overhead coating 4C — Air wing ordnance shop | 0d | 2026-09-11 | 2026-09-14 | A05780 FS+0.8d | Preservation / Blast & Coat [42 h] |
| A17520 | Cure & inspect overhead coating 5A — Aircraft elevator No. 4 trunk | 0d | 2026-09-12 | 2026-09-26 | A17510 | Preservation / Blast & Coat [416 h] |
| A10720 | Cure & inspect overhead coating 2A — Life raft stowage No. 5 | 0d | 2026-09-12 | 2026-09-17 | A10710 FS+0.8d | Preservation / Blast & Coat [32 h] |
| A13360 | Prime coat deck coating 9A — Squadron storeroom No. 4 | 0d | 2026-09-12 | 2026-09-19 | A13350 SS+7.2d | Preservation / Blast & Coat [120 h] |
| A19580 | Prime coat overhead coating 4B — Hangar bay workshop No. 4 | 0d | 2026-09-13 | 2026-09-26 | A19570 | Preservation / Blast & Coat [225 h] |
| A04240 | Cure & inspect bilge preservation 9D — Aviation storeroom No. 3 | 0d | 2026-09-13 | 2026-09-16 | A04230 | Preservation / Blast & Coat [16 h] |
| A05410 | Prime coat overhead coating 7B — Ready Room No. 3 | 0d | 2026-09-13 | 2026-09-16 | A05400 FS-4.8d | Preservation / Blast & Coat [65 h] |
| A05630 | Top coat deck coating 1B — Ready Room No. 4 | 0d | 2026-09-13 | 2026-09-16 | A05620 SS+7.2d | Preservation / Blast & Coat [66 h] |
| A06470 | Top coat deck coating 4B — Ready Room No. 8 | 0d | 2026-09-13 | 2026-09-21 | A06460 FS+0.8d | Preservation / Blast & Coat [155 h] |
| A05380 | Cure & inspect bilge preservation 6A — Ready Room No. 3 | 0d | 2026-09-13 | 2026-09-16 | A05370 | Preservation / Blast & Coat [26 h] |
| A19280 | Top coat overhead coating 8A — Hangar bay fire station No. 6 | 0d | 2026-09-14 | 2026-09-22 | A19270 FS+0.8d | Preservation / Blast & Coat [46 h] |
| A09370 | Cure & inspect overhead coating 2E — Weapons elevator No. 1 machinery room – port | 0d | 2026-09-14 | 2026-09-17 | A09360 | Preservation / Blast & Coat [43 h]; Rigging & Weight Handling [11 h] |
| A15220 | Cure & inspect bilge preservation 2B — Hangar Bay 1 | 0d | 2026-09-14 | 2026-09-26 | A15210 FS+0.8d | Preservation / Blast & Coat [363 h] |
| A14200 | Cure & inspect overhead coating 7A — AIMD Aviation electricians' shop | 0d | 2026-09-14 | 2026-09-21 | A14190 | Preservation / Blast & Coat [114 h]; Rigging & Weight Handling [29 h] |
| A10620 | Cure & inspect deck coating 9A — Weapons elevator No. 3 machinery room – port | 0d | 2026-09-15 | 2026-09-23 | A10610 | Preservation / Blast & Coat [115 h] |
| A09840 | Cure & inspect deck coating 2C — Weapons elevator No. 2 machinery room – port | 0d | 2026-09-15 | 2026-09-23 | A09830 | Preservation / Blast & Coat [135 h] |
| A15430 | Cure & inspect bilge preservation 8B — Ordnance staging area No. 1 | 0d | 2026-09-15 | 2026-09-28 | A15420 | Preservation / Blast & Coat [223 h] |
| A09730 | Top coat bilge preservation 9A — Weapons elevator No. 2 machinery room – port | 0d | 2026-09-16 | 2026-09-24 | A09720 FS+0.8d | Preservation / Blast & Coat [61 h] |
| A12700 | Cure & inspect overhead coating 6B — Flammable liquids storeroom No. 1 | 0d | 2026-09-16 | 2026-09-29 | A12690 | Preservation / Blast & Coat [77 h] |
| A08830 | Cure & inspect overhead coating 9B — Weapons elevator No. 1 machinery room – starboard | 0d | 2026-09-16 | 2026-09-29 | A08820 | Preservation / Blast & Coat [333 h] |
| A03530 | Cure & inspect bilge preservation 4B (03-73-1-Q) | 0d | 2026-09-16 | 2026-09-20 | A03520 | Preservation / Blast & Coat [28 h] |
| A03780 | Cure & inspect bilge preservation 1A — Avionics shop No. 3 | 0d | 2026-09-16 | 2026-09-29 | A03770 | Preservation / Blast & Coat [114 h] |
| A06080 | Cure & inspect deck coating 3B — Ready Room No. 6 | 0d | 2026-09-17 | 2026-09-26 | A06070 SS+2.4d | Preservation / Blast & Coat [67 h] |
| A05330 | Cure & inspect deck coating 5B — Ready Room No. 2 | 0d | 2026-09-17 | 2026-09-22 | A05320 | Preservation / Blast & Coat [41 h] |
| A05640 | Cure & inspect deck coating 1B — Ready Room No. 4 | 0d | 2026-09-17 | 2026-09-22 | A05630 | Preservation / Blast & Coat [69 h] |
| A12960 | Top coat deck coating 2A — AIMD Avionics repair shop | 0d | 2026-09-17 | 2026-09-29 | A12950 FS+2.4d | Preservation / Blast & Coat [67 h] |
| A14400 | Top coat deck coating 6A — Flammable liquids storeroom No. 3 | 0d | 2026-09-17 | 2026-09-19 | A14390 FS+2.4d | Preservation / Blast & Coat [67 h] |
| A09260 | Top coat deck coating 9C — Weapons elevator No. 1 machinery room – port | 0d | 2026-09-17 | 2026-10-01 | A09250 FS+0.8d | Preservation / Blast & Coat [108 h] |
| A06570 | Top coat overhead coating 3B — Ready Room No. 9 | 0d | 2026-09-18 | 2026-09-24 | A06560 | Preservation / Blast & Coat [86 h] |
| A10990 | Cure & inspect bilge preservation 5B — Ordnance ready service locker No. 4 | 0d | 2026-09-18 | 2026-10-02 | A10980 FS+2.4d | Preservation / Blast & Coat [92 h]; Rigging & Weight Handling [23 h] |
| A05420 | Top coat overhead coating 7B — Ready Room No. 3 | 0d | 2026-09-18 | 2026-09-27 | A05410 FS+0.8d | Preservation / Blast & Coat [139 h] |

| ID | WBS | Activity | Duration | Start | Finish | Predecessors | Complete | Remaining | Resources |
| --- | --- | --- | --- | --- | --- | --- | --- | --- | --- |
| A19230 |  | Top coat overhead coating 1C — Ordnance staging area No. 6 | 0d | 2026-09-18 | 2026-09-25 | A19220 FS+0.8d |  |  | Preservation / Blast & Coat [112 h] |
| A12070 |  | Cure & inspect overhead coating 5C — Weapons elevator No. 6 machinery room – port | 0d | 2026-09-20 | 2026-09-24 | A12060 FS+0.8d |  |  | Preservation / Blast & Coat [38 h] |
| A18140 |  | Top coat deck coating 9B — Ordnance staging area No. 5 | 0d | 2026-09-20 | 2026-09-25 | A18130 SS+2.4d |  |  | Preservation / Blast & Coat [49 h] |
| A13370 |  | Top coat deck coating 9A — Squadron storeroom No. 4 | 0d | 2026-09-20 | 2026-09-29 | A13360 |  |  | Preservation / Blast & Coat [64 h] |
| A11150 |  | Cure & inspect bilge preservation 5A — Sponson storeroom No. 4 | 0d | 2026-09-21 | 2026-09-26 | A11140 FS-2.4d |  |  | Preservation / Blast & Coat [36 h] |
| A03260 |  | Top coat deck coating 5B — Avionics shop No. 2 | 0d | 2026-09-21 | 2026-09-25 | A03250 |  |  | Preservation / Blast & Coat [107 h] |
| A05090 |  | Cure & inspect overhead coating 6A — Ready Room No. 1 | 0d | 2026-09-21 | 2026-10-02 | A05080 FS-4.8d |  |  | Preservation / Blast & Coat [62 h] |
| A14410 |  | Cure & inspect deck coating 6A — Flammable liquids storeroom No. 3 | 0d | 2026-09-21 | 2026-10-04 | A14400 FS+2.4d |  |  | Preservation / Blast & Coat [74 h] |
| A08530 |  | Cure & inspect deck coating 6C — Aircraft elevator No. 1 machinery room | 0d | 2026-09-21 | 2026-10-04 | A08520 FS+0.8d |  |  | Preservation / Blast & Coat [142 h] |
| A08680 |  | Cure & inspect overhead coating 1A — Life raft stowage No. 3 | 0d | 2026-09-22 | 2026-09-27 | A08670 |  |  | Preservation / Blast & Coat [39 h] |
| A19290 |  | Cure & inspect overhead coating 8A — Hangar bay fire station No. 6 | 0d | 2026-09-22 | 2026-09-29 | A19280 |  |  | Preservation / Blast & Coat [108 h] |
| A06480 |  | Cure & inspect deck coating 4B — Ready Room No. 8 | 0d | 2026-09-24 | 2026-09-30 | A06470 FS+2.4d |  |  | Preservation / Blast & Coat [50 h] |
| A18150 |  | Cure & inspect deck coating 9B — Ordnance staging area No. 5 | 0d | 2026-09-26 | 2026-10-04 | A18140 |  |  | Preservation / Blast & Coat [62 h] |
| A06580 |  | Cure & inspect overhead coating 3B — Ready Room No. 9 | 0d | 2026-09-26 | 2026-10-09 | A06570 FS+0.8d |  |  | Preservation / Blast & Coat [354 h] |
| A19240 |  | Cure & inspect overhead coating 1C — Ordnance staging area No. 6 | 0d | 2026-09-26 | 2026-10-05 | A19230 FS+0.8d |  |  | Preservation / Blast & Coat [123 h] |
| A09740 |  | Cure & inspect bilge preservation 9A — Weapons elevator No. 2 machinery room – port | 0d | 2026-09-27 | 2026-10-09 | A09730 FS+0.8d |  |  | Preservation / Blast & Coat [77 h] |
| A05430 |  | Cure & inspect overhead coating 7B — Ready Room No. 3 | 0d | 2026-09-27 | 2026-10-08 | A05420 |  |  | Preservation / Blast & Coat [150 h] |
| A03270 |  | Cure & inspect deck coating 5B — Avionics shop No. 2 | 0d | 2026-09-28 | 2026-10-06 | A03260 |  |  | Preservation / Blast & Coat [186 h] |
| A19590 |  | Top coat overhead coating 4B — Hangar bay workshop No. 4 | 0d | 2026-09-29 | 2026-10-06 | A19580 |  |  | Preservation / Blast & Coat [159 h] |
| A12970 |  | Cure & inspect deck coating 2A — AIMD Avionics repair shop | 0d | 2026-09-30 | 2026-10-05 | A12960 FS+0.8d |  |  | Preservation / Blast & Coat [41 h] |
| A13380 |  | Cure & inspect deck coating 9A — Squadron storeroom No. 4 | 0d | 2026-10-01 | 2026-10-04 | A13370 |  |  | Preservation / Blast & Coat [70 h] |
| A09270 |  | Cure & inspect deck coating 9C — Weapons elevator No. 1 machinery room – port | 0d | 2026-10-02 | 2026-10-12 | A09260 |  |  | Preservation / Blast & Coat [256 h] |
| A19600 |  | Cure & inspect overhead coating 4B — Hangar bay workshop No. 4 | 0d | 2026-10-08 | 2026-10-19 | A19590 FS+0.8d |  |  | Preservation / Blast & Coat [128 h] |
|  | SVC | **Zone Services & Access** |  | 2026-07-28 | 2026-10-16 |  |  |  |  |
| A55560 |  | Temp ventilation trunk 3 — Hangar & Gallery | 0d | 2026-07-28 A | 2026-08-06 A |  | 100% |  | Sheet Metal / HVAC [300 h] |
| A55700 |  | Stage scaffolding — Hangar & Gallery band 9 | 0d | 2026-07-30 A | 2026-08-08 A |  | 100% |  | Rigging & Weight Handling [151 h] |
| A55580 |  | Temp lighting string 4 — Hangar & Gallery | 0d | 2026-07-30 A | 2026-08-03 A |  | 100% |  | Electrical [80 h] |
| A55610 |  | Recover temp services — Hangar & Gallery feeder 5 | 0d | 2026-08-05 A | 2026-08-10 |  | 91% | 0d | Electrical [141 h] |
| A55720 |  | Temp ventilation trunk 10 — Hangar & Gallery | 0d | 2026-08-05 A | 2026-08-10 A |  | 100% |  | Sheet Metal / HVAC [25 h] |
| A55530 |  | Temp lighting string 2 — Hangar & Gallery | 0d | 2026-08-07 A | 2026-08-14 |  | 34% | 0d | Electrical [98 h] |
| A55630 |  | Rig access platforms — Hangar & Gallery band 6 | 0d | 2026-08-12 | 2026-08-15 |  |  |  | Rigging & Weight Handling [21 h] |
| A55680 |  | Temp lighting string 8 — Hangar & Gallery | 0d | 2026-08-14 | 2026-08-16 |  |  |  | Electrical [42 h] |
| A55510 |  | Stage scaffolding — Hangar & Gallery band 1 | 0d | 2026-08-14 | 2026-08-23 |  |  |  | Rigging & Weight Handling [321 h] |
| A55660 |  | Material staging & lay-down 7 — Hangar & Gallery | 0d | 2026-08-19 | 2026-08-28 |  |  |  | Rigging & Weight Handling [116 h] |
| A55640 |  | Stage scaffolding — Hangar & Gallery band 6 | 0d | 2026-08-24 | 2026-09-03 | A55630 |  |  | Rigging & Weight Handling [116 h] |
| A55690 |  | Run temporary power — Hangar & Gallery feeder 8 | 0d | 2026-08-29 | 2026-09-03 | A55680 |  |  | Electrical [81 h] |
| A55520 |  | Rig access platforms — Hangar & Gallery band 1 | 0d | 2026-08-30 | 2026-09-04 | A55510 |  |  | Rigging & Weight Handling [34 h] |
| A55710 |  | Rig access platforms — Hangar & Gallery band 9 | 0d | 2026-09-02 | 2026-09-04 | A55700 |  |  | Rigging & Weight Handling [41 h] |
| A55730 |  | Reposition temp vent 10 — Hangar & Gallery | 0d | 2026-09-06 | 2026-09-13 | A55720 |  |  | Sheet Metal / HVAC [202 h] |
| A55590 |  | Recover temp services — Hangar & Gallery feeder 4 | 0d | 2026-09-06 | 2026-09-09 | A55580 |  |  | Electrical [25 h] |
| A55570 |  | Reposition temp vent 3 — Hangar & Gallery | 0d | 2026-09-14 | 2026-09-20 | A55560 |  |  | Sheet Metal / HVAC [114 h] |
| A55620 |  | Run temporary power — Hangar & Gallery feeder 5 | 0d | 2026-09-16 | 2026-09-24 | A55610 |  |  | Electrical [70 h] |
| A55540 |  | Recover temp services — Hangar & Gallery feeder 2 | 0d | 2026-09-18 | 2026-09-25 | A55530 |  |  | Electrical [112 h] |
| A55550 |  | Run temporary power — Hangar & Gallery feeder 2 | 0d | 2026-09-30 | 2026-10-06 | A55540 |  |  | Electrical [39 h] |
| A55670 |  | Clear lay-down 7 — Hangar & Gallery | 0d | 2026-10-02 | 2026-10-06 | A55660 |  |  | Rigging & Weight Handling [64 h] |
| A55600 |  | Run temporary power — Hangar & Gallery feeder 4 | 0d | 2026-10-02 | 2026-10-11 | A55590 |  |  | Electrical [106 h] |
| A55650 |  | Strike scaffolding — Hangar & Gallery band 6 | 0d | 2026-10-07 | 2026-10-16 | A55640 |  |  | Rigging & Weight Handling [131 h] |

| ID | WBS | Activity | Duration | Start | Finish | Predecessors | Complete | Remaining | Resources |
| --- | --- | --- | --- | --- | --- | --- | --- | --- | --- |
|  | Z3 | **Zone 3 — Forward Below-Decks** |  | 2026-07-27 | 2026-11-01 |  |  |  |  |
|  | 130 | **130 Hull Structure** |  | 2026-07-27 | 2026-10-08 |  |  |  |  |
| A02210 |  | NDT survey — foundation group 2A — Catapult No. 1 launch valve room | 0d | 2026-07-27 A | 2026-07-31 A |  | 100% |  | Structural Welding [32 h] |
| A02610 |  | NDT survey — foundation group 5B — Catapult No. 1 machinery room | 0d | 2026-07-28 A | 2026-08-03 A |  | 100% |  | Structural Welding [41 h] |
| A44410 |  | NDT survey — deck insert 1A — Forward magazine No. 1 – lower level | 0d | 2026-07-29 A | 2026-08-02 A |  | 100% |  | Structural Welding [71 h] |
| A02220 |  | Crop out foundation group 2A — Catapult No. 1 launch valve room | 0d | 2026-08-01 A | 2026-08-14 | A02210 | 63% | 0d | Structural Welding [87 h] |
| A49500 |  | NDT survey — structural bay 8A — Cofferdam No. 2 | 0d | 2026-08-01 A | 2026-08-08 A |  | 100% |  | Structural Welding [45 h] |
| A49140 |  | NDT survey — deck insert 1B — Cofferdam No. 1 | 0d | 2026-08-02 A | 2026-08-09 A |  | 100% |  | Structural Welding [95 h] |
| A44990 |  | NDT survey — structural bay 8A — Storeroom No. 5 | 0d | 2026-08-02 A | 2026-08-11 |  | 77% | 0d | Structural Welding [176 h]; Rigging & Weight Handling [44 h] |
| A44420 |  | Crop out deck insert 1A — Forward magazine No. 1 – lower level | 0d | 2026-08-03 A | 2026-08-10 | A44410 FS+2.4d | 96% | 0d | Structural Welding [199 h] |
| A43960 |  | NDT survey — foundation group 1A — Storeroom No. 2 | 0d | 2026-08-04 A | 2026-08-15 |  | 35% | 0d | Structural Welding [173 h] |
| A02620 |  | Crop out foundation group 5B — Catapult No. 1 machinery room | 0d | 2026-08-05 A | 2026-08-15 | A02610 FS+0.8d | 48% | 0d | Structural Welding [147 h] |
| A49190 |  | NDT survey — deck insert 9A (6-53-4-V) | 0d | 2026-08-06 A | 2026-08-09 A |  | 100% |  | Structural Welding [67 h] |
| A43850 |  | NDT survey — structural bay 6A — Storeroom No. 1 | 0d | 2026-08-06 A | 2026-08-15 |  | 40% | 0d | Structural Welding [67 h] |
| A35080 |  | NDT survey — deck insert 5C — Electrical distribution room No. 3 | 0d | 2026-08-06 A | 2026-08-15 |  | 37% | 0d | Structural Welding [49 h] |
| A45040 |  | NDT survey — deck insert 5A — Void No. 3 | 0d | 2026-08-08 A | 2026-08-11 |  | 42% | 0d | Structural Welding [19 h] |
| A07960 |  | NDT survey — deck insert 7B — Catapult No. 2 steam accumulator room | 0d | 2026-08-09 A | 2026-08-21 |  | 7% | 0d | Structural Welding [105 h] |
| A02410 |  | NDT survey — foundation group 3B — Catapult No. 2 launch valve room | 0d | 2026-08-09 A | 2026-08-20 |  | 3% | 0d | Structural Welding [194 h] |
| A49290 |  | NDT survey — foundation group 6B — JP-5 service tank No. 1 | 0d | 2026-08-09 A | 2026-08-18 |  | 4% | 0d | Structural Welding [54 h] |
| A07630 |  | NDT survey — foundation group 7D — Forecastle & anchor windlass room | 0d | 2026-08-09 A | 2026-08-18 |  | 2% | 0d | Structural Welding [52 h] |
| A49510 |  | Crop out structural bay 8A — Cofferdam No. 2 | 0d | 2026-08-10 A | 2026-08-17 | A49500 |  | 0d | Structural Welding [112 h] |
| A49200 |  | Crop out deck insert 9A (6-53-4-V) | 0d | 2026-08-10 | 2026-08-23 | A49190 FS+0.8d |  |  | Structural Welding [80 h] |
| A43580 |  | NDT survey — structural bay 1B — Bow thruster & sonar dome access | 0d | 2026-08-10 | 2026-08-21 |  |  |  | Structural Welding [72 h] |
| A49150 |  | Crop out deck insert 1B — Cofferdam No. 1 | 0d | 2026-08-10 | 2026-08-22 | A49140 |  |  | Structural Welding [148 h] |
| A44430 |  | Fit & weld deck insert 1A — Forward magazine No. 1 – lower level | 0d | 2026-08-11 | 2026-08-23 | A44420 FS+2.4d |  |  | Structural Welding [108 h] |
| A49750 |  | NDT survey — foundation group 5A — Potable water pump room No. 4 | 0d | 2026-08-12 | 2026-08-20 |  |  |  | Structural Welding [114 h] |
| A45000 |  | Crop out structural bay 8A — Storeroom No. 5 | 0d | 2026-08-12 | 2026-08-22 | A44990 |  |  | Structural Welding [329 h] |
| A45050 |  | Crop out deck insert 5A — Void No. 3 | 0d | 2026-08-13 | 2026-08-19 | A45040 |  |  | Structural Welding [44 h] |
| A44260 |  | NDT survey — structural bay 8A — Pump room No. 2 | 0d | 2026-08-14 | 2026-08-26 |  |  |  | Structural Welding [69 h] |
| A02230 |  | Fit & weld foundation group 2A — Catapult No. 1 launch valve room | 0d | 2026-08-15 | 2026-08-20 | A02220 |  |  | Structural Welding [49 h] |
| A44310 |  | NDT survey — foundation group 6A — Storeroom No. 3 | 0d | 2026-08-15 | 2026-08-17 |  |  |  | Structural Welding [16 h] |
| A34610 |  | NDT survey — deck insert 9D — Electrical distribution room No. 2 | 0d | 2026-08-16 | 2026-08-19 |  |  |  | Structural Welding [31 h] |
| A43970 |  | Crop out foundation group 1A — Storeroom No. 2 | 0d | 2026-08-16 | 2026-08-24 | A43960 FS+0.8d |  |  | Structural Welding [67 h] |
| A35090 |  | Crop out deck insert 5C — Electrical distribution room No. 3 | 0d | 2026-08-16 | 2026-08-18 | A35080 |  |  | Structural Welding [43 h] |
| A02630 |  | Fit & weld foundation group 5B — Catapult No. 1 machinery room | 0d | 2026-08-17 | 2026-08-20 | A02620 FS+2.4d |  |  | Structural Welding [13 h]; Rigging & Weight Handling [4 h] |
| A44320 |  | Crop out foundation group 6A — Storeroom No. 3 | 0d | 2026-08-17 | 2026-08-30 | A44310 |  |  | Structural Welding [236 h] |
| A48890 |  | NDT survey — foundation group 6A — Potable water pump room No. 2 | 0d | 2026-08-17 | 2026-08-24 |  |  |  | Structural Welding [45 h] |
| A43860 |  | Crop out structural bay 6A — Storeroom No. 1 | 0d | 2026-08-18 | 2026-08-22 | A43850 FS+0.8d |  |  | Structural Welding [79 h] |
| A32700 |  | NDT survey — foundation group 5A — Chain locker | 0d | 2026-08-18 | 2026-08-23 |  |  |  | Structural Welding [71 h] |
| A49520 |  | Fit & weld structural bay 8A — Cofferdam No. 2 | 0d | 2026-08-19 | 2026-08-27 | A49510 FS+0.8d |  |  | Structural Welding [101 h] |
| A34660 |  | NDT survey — deck insert 1A — Forward pump room | 0d | 2026-08-19 | 2026-08-26 |  |  |  | Structural Welding [115 h] |
| A34620 |  | Crop out deck insert 9D — Electrical distribution room No. 2 | 0d | 2026-08-20 | 2026-08-31 | A34610 |  |  | Structural Welding [192 h] |
| A35100 |  | Fit & weld deck insert 5C — Electrical distribution room No. 3 | 0d | 2026-08-20 | 2026-08-24 | A35090 FS+2.4d |  |  | Structural Welding [67 h] |
| A49760 |  | Crop out foundation group 5A — Potable water pump room No. 4 | 0d | 2026-08-21 | 2026-08-27 | A49750 FS+0.8d |  |  | Structural Welding [108 h] |
| A02420 |  | Crop out foundation group 3B — Catapult No. 2 launch valve room | 0d | 2026-08-21 | 2026-08-30 | A02410 FS+2.4d |  |  | Structural Welding [59 h] |
| A49300 |  | Crop out foundation group 6B — JP-5 service tank No. 1 | 0d | 2026-08-21 | 2026-08-24 | A49290 |  |  | Structural Welding [67 h] |
| A45060 |  | Fit & weld deck insert 5A — Void No. 3 | 0d | 2026-08-21 | 2026-08-26 | A45050 |  |  | Structural Welding [118 h] |
| A02640 |  | NDT acceptance — foundation group 5B — Catapult No. 1 machinery room | 0d | 2026-08-21 | 2026-08-27 | A02630 FS+0.8d |  |  | Structural Welding [49 h] |
| A07970 |  | Crop out deck insert 7B — Catapult No. 2 steam accumulator room | 0d | 2026-08-21 | 2026-08-27 | A07960 |  |  | Structural Welding [35 h] |
| A07640 |  | Crop out foundation group 7D — Forecastle & anchor windlass room | 0d | 2026-08-21 | 2026-08-31 | A07630 FS+0.8d |  |  | Structural Welding [64 h]; Rigging & Weight Handling [17 h] |
| A49160 |  | Fit & weld deck insert 1B — Cofferdam No. 1 | 0d | 2026-08-22 | 2026-08-29 | A49150 FS+2.4d |  |  | Structural Welding [84 h] |
| A02240 |  | NDT acceptance — foundation group 2A — Catapult No. 1 launch valve room | 0d | 2026-08-22 | 2026-09-05 | A02230 |  |  | Structural Welding [262 h] |
| A43870 |  | Fit & weld structural bay 6A — Storeroom No. 1 | 0d | 2026-08-23 | 2026-08-27 | A43860 SS+4.8d |  |  | Structural Welding [104 h] |
| A43590 |  | Crop out structural bay 1B — Bow thruster & sonar dome access | 0d | 2026-08-23 | 2026-09-04 | A43580 |  |  | Structural Welding [312 h] |
| A45010 |  | Fit & weld structural bay 8A — Storeroom No. 5 | 0d | 2026-08-24 | 2026-08-28 | A45000 |  |  | Structural Welding [108 h] |
| A32710 |  | Crop out foundation group 5A — Chain locker | 0d | 2026-08-24 | 2026-09-05 | A32700 FS+2.4d |  |  | Structural Welding [285 h] |
| A44440 |  | NDT acceptance — deck insert 1A — Forward magazine No. 1 – lower level | 0d | 2026-08-25 | 2026-08-28 | A44430 FS+2.4d |  |  | Structural Welding [28 h] |
| A49210 |  | Fit & weld deck insert 9A (6-53-4-V) | 0d | 2026-08-25 | 2026-08-29 | A49200 FS+0.8d |  |  | Structural Welding [86 h] |
| A49310 |  | Fit & weld foundation group 6B — JP-5 service tank No. 1 | 0d | 2026-08-25 | 2026-08-30 | A49300 |  |  | Structural Welding [61 h]; Rigging & Weight Handling [16 h] |
| A48900 |  | Crop out foundation group 6A — Potable water pump room No. 2 | 0d | 2026-08-25 | 2026-08-28 | A48890 FS+0.8d |  |  | Structural Welding [35 h] |
| A35110 |  | NDT acceptance — deck insert 5C — Electrical distribution room No. 3 | 0d | 2026-08-26 | 2026-09-09 | A35100 |  |  | Structural Welding [80 h]; Rigging & Weight Handling [20 h] |
| A43980 |  | Fit & weld foundation group 1A — Storeroom No. 2 | 0d | 2026-08-26 | 2026-09-03 | A43970 |  |  | Structural Welding [61 h] |
| A44270 |  | Crop out structural bay 8A — Pump room No. 2 | 0d | 2026-08-26 | 2026-09-01 | A44260 FS+2.4d |  |  | Structural Welding [204 h] |
| A34670 |  | Crop out deck insert 1A — Forward pump room | 0d | 2026-08-27 | 2026-09-09 | A34660 FS+2.4d |  |  | Structural Welding [228 h] |
| A45070 |  | NDT acceptance — deck insert 5A — Void No. 3 | 0d | 2026-08-27 | 2026-09-03 | A45060 FS+2.4d |  |  | Structural Welding [53 h] |
| A07980 |  | Fit & weld deck insert 7B — Catapult No. 2 steam accumulator room | 0d | 2026-08-27 | 2026-09-09 | A07970 FS+2.4d |  |  | Structural Welding [323 h] |
| A49530 |  | NDT acceptance — structural bay 8A — Cofferdam No. 2 | 0d | 2026-08-28 | 2026-09-06 | A49520 FS+2.4d |  |  | Structural Welding [162 h] |
| A43880 |  | NDT acceptance — structural bay 6A — Storeroom No. 1 | 0d | 2026-08-28 | 2026-09-10 | A43870 FS+0.8d |  |  | Structural Welding [255 h] |
| A44450 |  | Grind & dress deck insert 1A — Forward magazine No. 1 – lower level | 0d | 2026-08-29 | 2026-09-11 | A44440 |  |  | Structural Welding [211 h] |
| A49220 |  | NDT acceptance — deck insert 9A (6-53-4-V) | 0d | 2026-08-29 | 2026-09-09 | A49210 FS+2.4d |  |  | Structural Welding [63 h] |

| ID | Activity | Duration | Start | Finish | Predecessors | Resources |
| --- | --- | --- | --- | --- | --- | --- |
| A49770 | Fit & weld foundation group 5A — Potable water pump room No. 4 | 0d | 2026-08-29 | 2026-09-11 | A49760 FS+2.4d | Structural Welding [285 h] |
| A02650 | Grind & dress foundation group 5B — Catapult No. 1 machinery room | 0d | 2026-08-29 | 2026-09-10 | A02640 | Structural Welding [88 h] |
| A45020 | NDT acceptance — structural bay 8A — Storeroom No. 5 | 0d | 2026-08-30 | 2026-09-01 | A45010 FS+0.8d | Structural Welding [40 h] |
| A48910 | Fit & weld foundation group 6A — Potable water pump room No. 2 | 0d | 2026-08-31 | 2026-09-05 | A48900 FS+0.8d | Structural Welding [132 h] |
| A44330 | Fit & weld foundation group 6A — Storeroom No. 3 | 0d | 2026-08-31 | 2026-09-06 | A44320 FS+0.8d | Structural Welding [75 h] |
| A49170 | NDT acceptance — deck insert 1B — Cofferdam No. 1 | 0d | 2026-09-01 | 2026-09-07 | A49160 | Structural Welding [53 h] |
| A02430 | Fit & weld foundation group 3B — Catapult No. 2 launch valve room | 0d | 2026-09-01 | 2026-09-12 | A02420 FS+2.4d | Structural Welding [76 h] |
| A34630 | Fit & weld deck insert 9D — Electrical distribution room No. 2 | 0d | 2026-09-01 | 2026-09-05 | A34620 FS+2.4d | Structural Welding [60 h] |
| A49320 | NDT acceptance — foundation group 6B — JP-5 service tank No. 1 | 0d | 2026-09-01 | 2026-09-10 | A49310 | Structural Welding [107 h] |
| A07650 | Fit & weld foundation group 7D — Forecastle & anchor windlass room | 0d | 2026-09-02 | 2026-09-11 | A07640 FS+0.8d | Structural Welding [73 h] |
| A45030 | Grind & dress structural bay 8A — Storeroom No. 5 | 0d | 2026-09-02 | 2026-09-08 | A45020 | Structural Welding [34 h] |
| A44280 | Fit & weld structural bay 8A — Pump room No. 2 | 0d | 2026-09-04 | 2026-09-12 | A44270 | Structural Welding [140 h] |
| A43600 | Fit & weld structural bay 1B — Bow thruster & sonar dome access | 0d | 2026-09-04 | 2026-09-15 | A43590 FS+0.8d | Structural Welding [55 h]; Rigging & Weight Handling [14 h] |
| A45080 | Grind & dress deck insert 5A — Void No. 3 | 0d | 2026-09-05 | 2026-09-09 | A45070 | Structural Welding [138 h] |
| A34640 | NDT acceptance — deck insert 9D — Electrical distribution room No. 2 | 0d | 2026-09-05 | 2026-09-13 | A34630 | Structural Welding [110 h] |
| A48920 | NDT acceptance — foundation group 6A — Potable water pump room No. 2 | 0d | 2026-09-05 | 2026-09-17 | A48910 FS+2.4d | Structural Welding [139 h] |
| A43990 | NDT acceptance — foundation group 1A — Storeroom No. 2 | 0d | 2026-09-06 | 2026-09-09 | A43980 FS+2.4d | Structural Welding [75 h] |
| A02250 | Grind & dress foundation group 2A — Catapult No. 1 launch valve room | 0d | 2026-09-06 | 2026-09-15 | A02240 | Structural Welding [135 h] |
| A49540 | Grind & dress structural bay 8A — Cofferdam No. 2 | 0d | 2026-09-07 | 2026-09-20 | A49530 | Structural Welding [98 h]; Rigging & Weight Handling [25 h] |
| A32720 | Fit & weld foundation group 5A — Chain locker | 0d | 2026-09-08 | 2026-09-15 | A32710 FS+2.4d | Structural Welding [209 h] |
| A44340 | NDT acceptance — foundation group 6A — Storeroom No. 3 | 0d | 2026-09-09 | 2026-09-13 | A44330 | Structural Welding [28 h]; Rigging & Weight Handling [7 h] |
| A07990 | NDT acceptance — deck insert 7B — Catapult No. 2 steam accumulator room | 0d | 2026-09-09 | 2026-09-21 | A07980 | Structural Welding [57 h]; Rigging & Weight Handling [15 h] |
| A49180 | Grind & dress deck insert 1B — Cofferdam No. 1 | 0d | 2026-09-10 | 2026-09-24 | A49170 | Structural Welding [270 h] |
| A49230 | Grind & dress deck insert 9A (6-53-4-V) | 0d | 2026-09-10 | 2026-09-17 | A49220 FS+2.4d | Structural Welding [257 h] |
| A44000 | Grind & dress foundation group 1A — Storeroom No. 2 | 0d | 2026-09-10 | 2026-09-19 | A43990 FS+0.8d | Structural Welding [121 h] |
| A35120 | Grind & dress deck insert 5C — Electrical distribution room No. 3 | 0d | 2026-09-11 | 2026-09-23 | A35110 FS+0.8d | Structural Welding [221 h] |
| A49330 | Grind & dress foundation group 6B — JP-5 service tank No. 1 | 0d | 2026-09-11 | 2026-09-16 | A49320 | Structural Welding [60 h] |
| A07660 | NDT acceptance — foundation group 7D — Forecastle & anchor windlass room | 0d | 2026-09-11 | 2026-09-25 | A07650 FS+0.8d | Structural Welding [82 h] |
| A49780 | NDT acceptance — foundation group 5A — Potable water pump room No. 4 | 0d | 2026-09-12 | 2026-09-16 | A49770 FS+0.8d | Structural Welding [34 h] |
| A43890 | Grind & dress structural bay 6A — Storeroom No. 1 | 0d | 2026-09-12 | 2026-09-16 | A43880 | Structural Welding [65 h] |
| A44290 | NDT acceptance — structural bay 8A — Pump room No. 2 | 0d | 2026-09-12 | 2026-09-25 | A44280 FS+2.4d | Structural Welding [360 h] |
| A34680 | Fit & weld deck insert 1A — Forward pump room | 0d | 2026-09-12 | 2026-09-16 | A34670 | Structural Welding [52 h]; Rigging & Weight Handling [14 h] |
| A02440 | NDT acceptance — foundation group 3B — Catapult No. 2 launch valve room | 0d | 2026-09-13 | 2026-09-18 | A02430 | Structural Welding [39 h] |
| A34650 | Grind & dress deck insert 9D — Electrical distribution room No. 2 | 0d | 2026-09-14 | 2026-09-20 | A34640 | Structural Welding [114 h] |
| A44350 | Grind & dress foundation group 6A — Storeroom No. 3 | 0d | 2026-09-15 | 2026-09-18 | A44340 FS+0.8d | Structural Welding [102 h] |
| A43610 | NDT acceptance — structural bay 1B — Bow thruster & sonar dome access | 0d | 2026-09-16 | 2026-09-20 | A43600 FS+0.8d | Structural Welding [78 h] |
| A32730 | NDT acceptance — foundation group 5A — Chain locker | 0d | 2026-09-16 | 2026-09-24 | A32720 | Structural Welding [130 h] |
| A48930 | Grind & dress foundation group 6A — Potable water pump room No. 2 | 0d | 2026-09-18 | 2026-09-30 | A48920 | Structural Welding [78 h] |
| A49790 | Grind & dress foundation group 5A — Potable water pump room No. 4 | 0d | 2026-09-18 | 2026-10-02 | A49780 | Structural Welding [332 h] |
| A34690 | NDT acceptance — deck insert 1A — Forward pump room | 0d | 2026-09-19 | 2026-09-25 | A34680 | Structural Welding [97 h] |
| A02450 | Grind & dress foundation group 3B — Catapult No. 2 launch valve room | 0d | 2026-09-19 | 2026-10-03 | A02440 | Structural Welding [92 h] |
| A43620 | Grind & dress structural bay 1B — Bow thruster & sonar dome access | 0d | 2026-09-23 | 2026-10-06 | A43610 | Structural Welding [179 h] |
| A08000 | Grind & dress deck insert 7B — Catapult No. 2 steam accumulator room | 0d | 2026-09-24 | 2026-10-08 | A07990 SS+4.8d | Structural Welding [212 h] |
| A32740 | Grind & dress foundation group 5A — Chain locker | 0d | 2026-09-26 | 2026-09-30 | A32730 | Structural Welding [92 h] |
| A07670 | Grind & dress foundation group 7D — Forecastle & anchor windlass room | 0d | 2026-09-26 | 2026-10-02 | A07660 FS+0.8d | Structural Welding [107 h] |
| A34700 | Grind & dress deck insert 1A — Forward pump room | 0d | 2026-09-27 | 2026-10-02 | A34690 | Structural Welding [69 h] |
| A44300 | Grind & dress structural bay 8A — Pump room No. 2 | 0d | 2026-09-28 | 2026-10-01 | A44290 FS+0.8d | Structural Welding [44 h] |

| ID | WBS | Activity | Duration | Start | Finish | Predecessors | Complete | Remaining | Resources |
| --- | --- | --- | --- | --- | --- | --- | --- | --- | --- |
|  | 300 | **300 Electrical Distribution** |  | 2026-07-29 | 2026-10-07 |  |  |  |  |
| A21780 |  | Circuit survey — lighting circuit 8B — Crew washroom & head No. 4 | 0d | 2026-07-29 A | 2026-08-06 A |  | 100% |  | Electrical [279 h] |
| A20870 |  | Circuit survey — lighting circuit 9B — Damage control repair locker No. 2 | 0d | 2026-07-29 A | 2026-08-07 A |  | 100% |  | Electrical [102 h]; Rigging & Weight Handling [26 h] |
| A20710 |  | Circuit survey — panel group 3D — Ship's laundry | 0d | 2026-07-29 A | 2026-08-12 |  | 80% | 0d | Electrical [393 h] |
| A27840 |  | Circuit survey — lighting circuit 6C — Crew washroom & head No. 6 | 0d | 2026-07-30 A | 2026-08-04 A |  | 100% |  | Electrical [128 h] |
| A25900 |  | Circuit survey — panel group 9A — Division office No. 2 | 0d | 2026-07-31 A | 2026-08-09 A |  | 100% |  | Electrical [74 h] |
| A35350 |  | Circuit survey — panel group 1B — Fan room No. 2 | 0d | 2026-07-31 A | 2026-08-10 |  | 91% | 0d | Electrical [266 h] |
| A34560 |  | Circuit survey — lighting circuit 4C — Electrical distribution room No. 2 | 0d | 2026-08-02 A | 2026-08-05 A |  | 100% |  | Electrical [72 h] |
| A27110 |  | Circuit survey — cable run 5B — Crew washroom & head No. 1 | 0d | 2026-08-02 A | 2026-08-06 A |  | 100% |  | Electrical [100 h] |
| A35810 |  | Circuit survey — panel group 1E — Storeroom No. 2 | 0d | 2026-08-02 A | 2026-08-06 A |  | 100% |  | Electrical [28 h]; Rigging & Weight Handling [8 h] |
| A02930 |  | Circuit survey — lighting circuit 9B — Gallery deck passage No. 1 | 0d | 2026-08-03 A | 2026-08-05 A |  | 100% |  | Electrical [29 h] |
| A20820 |  | Circuit survey — cable run 9A — Damage control repair locker No. 2 | 0d | 2026-08-03 A | 2026-08-15 |  | 53% | 0d | Electrical [209 h] |
| A02660 |  | Circuit survey — panel group 2A — Catapult No. 2 machinery room | 0d | 2026-08-04 A | 2026-08-10 A |  | 100% |  | Electrical [91 h] |
| A22020 |  | Circuit survey — panel group 9C — Crew berthing No. 9 | 0d | 2026-08-04 A | 2026-08-07 A |  | 100% |  | Electrical [16 h] |
| A26010 |  | Circuit survey — lighting circuit 9A — Third deck trunk No. 1 | 0d | 2026-08-05 A | 2026-08-11 |  | 77% | 0d | Electrical [35 h] |
| A34870 |  | Circuit survey — lighting circuit 9E — Forward pump room | 0d | 2026-08-05 A | 2026-08-16 |  | 40% | 0d | Electrical [58 h] |
| A07680 |  | Circuit survey — panel group 7A — Catapult No. 1 steam accumulator room | 0d | 2026-08-06 A | 2026-08-09 A |  | 100% |  | Electrical [69 h] |
| A27850 |  | De-energize & tag out lighting circuit 6C — Crew washroom & head No. 6 | 0d | 2026-08-06 A | 2026-08-19 | A27840 | 26% | 0d | Electrical [435 h] |
| A34570 |  | De-energize & tag out lighting circuit 4C — Electrical distribution room No. 2 | 0d | 2026-08-06 A | 2026-08-09 A | A34560 FS+2.4d | 100% |  | Electrical [45 h] |
| A02940 |  | De-energize & tag out lighting circuit 9B — Gallery deck passage No. 1 | 0d | 2026-08-07 A | 2026-08-19 | A02930 | 16% | 0d | Electrical [79 h]; Rigging & Weight Handling [20 h] |
| A20560 |  | Circuit survey — panel group 7A — Ship's laundry | 0d | 2026-08-07 A | 2026-08-20 |  | 22% | 0d | Electrical [321 h] |
| A27120 |  | De-energize & tag out cable run 5B — Crew washroom & head No. 1 | 0d | 2026-08-07 A | 2026-08-14 | A27110 | 36% | 0d | Electrical [42 h] |
| A22030 |  | De-energize & tag out panel group 9C — Crew berthing No. 9 | 0d | 2026-08-07 A | 2026-08-10 | A22020 | 83% | 0d | Electrical [23 h] |
| A34280 |  | Circuit survey — cable run 2A — Electrical distribution room No. 1 | 0d | 2026-08-08 A | 2026-08-20 |  | 16% | 0d | Electrical [148 h] |
| A33700 |  | Circuit survey — panel group 3B — Forward magazine No. 1 – upper level | 0d | 2026-08-08 A | 2026-08-19 |  | 14% | 0d | Electrical [231 h] |
| A20880 |  | De-energize & tag out lighting circuit 9B — Damage control repair locker No. 2 | 0d | 2026-08-08 A | 2026-08-14 | A20870 FS+0.8d | 17% | 0d | Electrical [41 h] |
| A21790 |  | De-energize & tag out lighting circuit 8B — Crew washroom & head No. 4 | 0d | 2026-08-08 A | 2026-08-19 | A21780 FS+0.8d | 12% | 0d | Electrical [88 h] |
| A27710 |  | Circuit survey — lighting circuit 3C — Division office No. 8 | 0d | 2026-08-09 A | 2026-08-19 |  | 8% | 0d | Electrical [90 h] |
| A35820 |  | De-energize & tag out panel group 1E — Storeroom No. 2 | 0d | 2026-08-09 A | 2026-08-14 | A35810 | 15% | 0d | Electrical [84 h] |
| A25910 |  | De-energize & tag out panel group 9A — Division office No. 2 | 0d | 2026-08-09 A | 2026-08-19 | A25900 SS+7.2d | 5% | 0d | Electrical [81 h] |
| A02820 |  | Circuit survey — lighting circuit 1D — Catapult No. 2 machinery room | 0d | 2026-08-10 | 2026-08-18 |  |  |  | Electrical [127 h] |
| A34580 |  | Pull & land cable — lighting circuit 4C — Electrical distribution room No. 2 | 0d | 2026-08-10 | 2026-08-16 | A34570 FS+0.8d |  |  | Electrical [43 h] |
| A26920 |  | Circuit survey — cable run 6C — Division office No. 6 | 0d | 2026-08-11 | 2026-08-23 |  |  |  | Electrical [64 h]; Rigging & Weight Handling [17 h] |
| A35360 |  | De-energize & tag out panel group 1B — Fan room No. 2 | 0d | 2026-08-11 | 2026-08-15 | A35350 FS+2.4d |  |  | Electrical [117 h] |
| A07690 |  | De-energize & tag out panel group 7A — Catapult No. 1 steam accumulator room | 0d | 2026-08-11 | 2026-08-21 | A07680 |  |  | Electrical [106 h] |
| A12520 |  | Circuit survey — panel group 3A — Forward officers' berthing No. 1 | 0d | 2026-08-12 | 2026-08-18 |  |  |  | Electrical [46 h] |
| A02670 |  | De-energize & tag out panel group 2A — Catapult No. 2 machinery room | 0d | 2026-08-12 | 2026-08-15 | A02660 |  |  | Electrical [52 h] |
| A22040 |  | Pull & land cable — panel group 9C — Crew berthing No. 9 | 0d | 2026-08-12 | 2026-08-26 | A22030 |  |  | Electrical [100 h] |
| A21390 |  | Circuit survey — lighting circuit 3A (2-66-1-L) | 0d | 2026-08-13 | 2026-08-17 |  |  |  | Electrical [121 h] |
| A20890 |  | Pull & land cable — lighting circuit 9B — Damage control repair locker No. 2 | 0d | 2026-08-14 | 2026-08-20 | A20880 |  |  | Electrical [44 h] |
| A26020 |  | De-energize & tag out lighting circuit 9A — Third deck trunk No. 1 | 0d | 2026-08-14 | 2026-08-17 | A26010 FS+0.8d |  |  | Electrical [88 h] |
| A20720 |  | De-energize & tag out panel group 3D — Ship's laundry | 0d | 2026-08-15 | 2026-08-22 | A20710 |  |  | Electrical [108 h] |
| A35830 |  | Pull & land cable — panel group 1E — Storeroom No. 2 | 0d | 2026-08-15 | 2026-08-28 | A35820 FS+0.8d |  |  | Electrical [169 h]; Rigging & Weight Handling [43 h] |
| A20830 |  | De-energize & tag out cable run 9A — Damage control repair locker No. 2 | 0d | 2026-08-15 | 2026-08-22 | A20820 FS+2.4d |  |  | Electrical [106 h] |
| A27130 |  | Pull & land cable — cable run 5B — Crew washroom & head No. 1 | 0d | 2026-08-16 | 2026-08-25 | A27120 |  |  | Electrical [232 h] |
| A35370 |  | Pull & land cable — panel group 1B — Fan room No. 2 | 0d | 2026-08-16 | 2026-08-28 | A35360 |  |  | Electrical [90 h] |
| A34590 |  | Megger & continuity test lighting circuit 4C — Electrical distribution room No. 2 | 0d | 2026-08-17 | 2026-08-26 | A34580 |  |  | Electrical [123 h] |
| A33070 |  | Circuit survey — lighting circuit 4A — Emergency diesel generator room No. 2 | 0d | 2026-08-17 | 2026-08-20 |  |  |  | Electrical [19 h] |
| A02680 |  | Pull & land cable — panel group 2A — Catapult No. 2 machinery room | 0d | 2026-08-17 | 2026-08-30 | A02670 |  |  | Electrical [137 h]; Rigging & Weight Handling [35 h] |
| A44510 |  | Circuit survey — lighting circuit 5B — Forward magazine No. 2 – lower level | 0d | 2026-08-18 | 2026-08-26 |  |  |  | Electrical [116 h]; Rigging & Weight Handling [30 h] |
| A34880 |  | De-energize & tag out lighting circuit 9E — Forward pump room | 0d | 2026-08-18 | 2026-08-28 | A34870 FS+0.8d |  |  | Electrical [249 h] |
| A02560 |  | Circuit survey — cable run 1A — Catapult No. 1 machinery room | 0d | 2026-08-18 | 2026-08-24 |  |  |  | Electrical [147 h] |
| A25920 |  | Pull & land cable — panel group 9A — Division office No. 2 | 0d | 2026-08-19 | 2026-08-26 | A25910 FS+0.8d |  |  | Electrical [103 h] |
| A35600 |  | Circuit survey — cable run 6A — Storeroom No. 2 | 0d | 2026-08-19 | 2026-08-24 |  |  |  | Electrical [117 h]; Rigging & Weight Handling [30 h] |
| A26030 |  | Pull & land cable — lighting circuit 9A — Third deck trunk No. 1 | 0d | 2026-08-19 | 2026-08-31 | A26020 |  |  | Electrical [312 h] |
| A27860 |  | Pull & land cable — lighting circuit 6C — Crew washroom & head No. 6 | 0d | 2026-08-20 | 2026-08-28 | A27850 FS+0.8d |  |  | Electrical [110 h]; Rigging & Weight Handling [28 h] |
| A02830 |  | De-energize & tag out lighting circuit 1D — Catapult No. 2 machinery room | 0d | 2026-08-20 | 2026-08-29 | A02820 FS+2.4d |  |  | Electrical [157 h] |
| A34290 |  | De-energize & tag out cable run 2A — Electrical distribution room No. 1 | 0d | 2026-08-20 | 2026-08-24 | A34280 |  |  | Electrical [84 h] |
| A21400 |  | De-energize & tag out lighting circuit 3A (2-66-1-L) | 0d | 2026-08-20 | 2026-08-31 | A21390 FS+2.4d |  |  | Electrical [86 h] |
| A20900 |  | Megger & continuity test lighting circuit 9B — Damage control repair locker No. 2 | 0d | 2026-08-20 | 2026-08-23 | A20890 SS+7.2d |  |  | Electrical [72 h] |
| A02950 |  | Pull & land cable — lighting circuit 9B — Gallery deck passage No. 1 | 0d | 2026-08-20 | 2026-08-27 | A02940 |  |  | Electrical [219 h] |
| A21800 |  | Pull & land cable — lighting circuit 8B — Crew washroom & head No. 4 | 0d | 2026-08-20 | 2026-08-28 | A21790 |  |  | Electrical [96 h]; Rigging & Weight Handling [25 h] |
| A12530 |  | De-energize & tag out panel group 3A — Forward officers' berthing No. 1 | 0d | 2026-08-20 | 2026-08-29 | A12520 |  |  | Electrical [60 h]; Rigging & Weight Handling [15 h] |
| A26420 |  | Circuit survey — cable run 7A — Forward IC & gyro room | 0d | 2026-08-21 | 2026-08-26 |  |  |  | Electrical [37 h] |
| A20570 |  | De-energize & tag out panel group 7A — Ship's laundry | 0d | 2026-08-21 | 2026-08-28 | A20560 |  |  | Electrical [179 h] |
| A27160 |  | Circuit survey — panel group 9A (3-60-2-L) | 0d | 2026-08-21 | 2026-08-27 |  |  |  | Electrical [119 h] |
| A33710 |  | De-energize & tag out panel group 3B — Forward magazine No. 1 – upper level | 0d | 2026-08-21 | 2026-08-26 | A33700 FS-1.6d |  |  | Electrical [77 h] |
| A33080 |  | De-energize & tag out lighting circuit 4A — Emergency diesel generator room No. 2 | 0d | 2026-08-21 | 2026-08-31 | A33070 |  |  | Electrical [170 h] |
| A07700 |  | Pull & land cable — panel group 7A — Catapult No. 1 steam accumulator room | 0d | 2026-08-21 | 2026-09-02 | A07690 FS+0.8d |  |  | Electrical [56 h]; Rigging & Weight Handling [15 h] |
| A27720 |  | De-energize & tag out lighting circuit 3C — Division office No. 8 | 0d | 2026-08-22 | 2026-08-30 | A27710 FS-2.4d |  |  | Electrical [226 h] |

| ID | Activity | Duration | Start | Finish | Predecessors | Resources |
| --- | --- | --- | --- | --- | --- | --- |
| A26930 | De-energize & tag out cable run 6C — Division office No. 6 | 0d | 2026-08-23 | 2026-09-01 | A26920 FS+2.4d | Electrical [145 h] |
| A20910 | Energize & close-out lighting circuit 9B — Damage control repair locker No. 2 | 0d | 2026-08-24 | 2026-08-30 | A20900 FS+0.8d | Electrical [100 h] |
| A20840 | Pull & land cable — cable run 9A — Damage control repair locker No. 2 | 0d | 2026-08-24 | 2026-08-30 | A20830 FS+0.8d | Electrical [36 h] |
| A20730 | Pull & land cable — panel group 3D — Ship's laundry | 0d | 2026-08-24 | 2026-09-07 | A20720 FS+0.8d | Electrical [228 h] |
| A34300 | Pull & land cable — cable run 2A — Electrical distribution room No. 1 | 0d | 2026-08-25 | 2026-09-04 | A34290 FS+2.4d | Electrical [249 h] |
| A02570 | De-energize & tag out cable run 1A — Catapult No. 1 machinery room | 0d | 2026-08-25 | 2026-08-30 | A02560 SS+7.2d | Electrical [161 h] |
| A35610 | De-energize & tag out cable run 6A — Storeroom No. 2 | 0d | 2026-08-25 | 2026-09-02 | A35600 | Electrical [105 h] |
| A27140 | Megger & continuity test cable run 5B — Crew washroom & head No. 1 | 0d | 2026-08-26 | 2026-08-30 | A27130 FS+2.4d | Electrical [74 h] |
| A44520 | De-energize & tag out lighting circuit 5B — Forward magazine No. 2 – lower level | 0d | 2026-08-26 | 2026-08-30 | A44510 SS+2.4d | Electrical [23 h] |
| A26430 | De-energize & tag out cable run 7A — Forward IC & gyro room | 0d | 2026-08-26 | 2026-08-30 | A26420 FS+0.8d | Electrical [99 h] |
| A22050 | Megger & continuity test panel group 9C — Crew berthing No. 9 | 0d | 2026-08-27 | 2026-09-06 | A22040 | Electrical [229 h] |
| A34600 | Energize & close-out lighting circuit 4C — Electrical distribution room No. 2 | 0d | 2026-08-27 | 2026-09-02 | A34590 FS+0.8d | Electrical [93 h] |
| A25930 | Megger & continuity test panel group 9A — Division office No. 2 | 0d | 2026-08-28 | 2026-09-07 | A25920 FS+2.4d | Electrical [173 h] |
| A02960 | Megger & continuity test lighting circuit 9B — Gallery deck passage No. 1 | 0d | 2026-08-28 | 2026-09-01 | A02950 FS+2.4d | Electrical [112 h] |
| A33720 | Pull & land cable — panel group 3B — Forward magazine No. 1 – upper level | 0d | 2026-08-28 | 2026-09-03 | A33710 | Electrical [128 h] |
| A27870 | Megger & continuity test lighting circuit 6C — Crew washroom & head No. 6 | 0d | 2026-08-28 | 2026-09-06 | A27860 | Electrical [88 h]; Rigging & Weight Handling [22 h] |
| A27170 | De-energize & tag out panel group 9A (3-60-2-L) | 0d | 2026-08-28 | 2026-09-07 | A27160 | Electrical [224 h] |
| A20580 | Pull & land cable — panel group 7A — Ship's laundry | 0d | 2026-08-29 | 2026-09-03 | A20570 | Electrical [110 h] |
| A21810 | Megger & continuity test lighting circuit 8B — Crew washroom & head No. 4 | 0d | 2026-08-29 | 2026-09-03 | A21800 | Electrical [96 h] |
| A35380 | Megger & continuity test panel group 1B — Fan room No. 2 | 0d | 2026-08-29 | 2026-09-11 | A35370 | Electrical [362 h] |
| A02840 | Pull & land cable — lighting circuit 1D — Catapult No. 2 machinery room | 0d | 2026-08-29 | 2026-09-01 | A02830 | Electrical [26 h] |
| A35840 | Megger & continuity test panel group 1E — Storeroom No. 2 | 0d | 2026-08-30 | 2026-09-07 | A35830 | Electrical [140 h] |
| A12540 | Pull & land cable — panel group 3A — Forward officers' berthing No. 1 | 0d | 2026-08-30 | 2026-09-11 | A12530 | Electrical [81 h] |
| A34890 | Pull & land cable — lighting circuit 9E — Forward pump room | 0d | 2026-08-30 | 2026-09-09 | A34880 FS+0.8d | Electrical [254 h] |
| A02580 | Pull & land cable — cable run 1A — Catapult No. 1 machinery room | 0d | 2026-08-30 | 2026-09-09 | A02570 FS+0.8d | Electrical [76 h] |
| A27150 | Energize & close-out cable run 5B — Crew washroom & head No. 1 | 0d | 2026-08-31 | 2026-09-04 | A27140 | Electrical [70 h] |
| A02690 | Megger & continuity test panel group 2A — Catapult No. 2 machinery room | 0d | 2026-08-31 | 2026-09-08 | A02680 | Electrical [142 h] |
| A44530 | Pull & land cable — lighting circuit 5B — Forward magazine No. 2 – lower level | 0d | 2026-09-01 | 2026-09-08 | A44520 | Electrical [57 h] |
| A20850 | Megger & continuity test cable run 9A — Damage control repair locker No. 2 | 0d | 2026-09-01 | 2026-09-12 | A20840 FS+0.8d | Electrical [161 h] |
| A27730 | Pull & land cable — lighting circuit 3C — Division office No. 8 | 0d | 2026-09-01 | 2026-09-09 | A27720 | Electrical [186 h] |
| A26040 | Megger & continuity test lighting circuit 9A — Third deck trunk No. 1 | 0d | 2026-09-01 | 2026-09-05 | A26030 | Electrical [66 h] |
| A21410 | Pull & land cable — lighting circuit 3A (2-66-1-L) | 0d | 2026-09-01 | 2026-09-11 | A21400 FS+2.4d | Electrical [79 h] |
| A26940 | Pull & land cable — cable run 6C — Division office No. 6 | 0d | 2026-09-01 | 2026-09-07 | A26930 | Electrical [36 h] |
| A26440 | Pull & land cable — cable run 7A — Forward IC & gyro room | 0d | 2026-09-01 | 2026-09-06 | A26430 | Electrical [66 h] |
| A02970 | Energize & close-out lighting circuit 9B — Gallery deck passage No. 1 | 0d | 2026-09-03 | 2026-09-13 | A02960 | Electrical [264 h] |
| A35620 | Pull & land cable — cable run 6A — Storeroom No. 2 | 0d | 2026-09-03 | 2026-09-06 | A35610 | Electrical [49 h] |
| A33090 | Pull & land cable — lighting circuit 4A — Emergency diesel generator room No. 2 | 0d | 2026-09-03 | 2026-09-07 | A33080 | Electrical [71 h] |
| A07710 | Megger & continuity test panel group 7A — Catapult No. 1 steam accumulator room | 0d | 2026-09-04 | 2026-09-11 | A07700 FS+2.4d | Electrical [47 h] |
| A02850 | Megger & continuity test lighting circuit 1D — Catapult No. 2 machinery room | 0d | 2026-09-04 | 2026-09-16 | A02840 | Electrical [174 h]; Rigging & Weight Handling [44 h] |
| A33730 | Megger & continuity test panel group 3B — Forward magazine No. 1 – upper level | 0d | 2026-09-04 | 2026-09-09 | A33720 | Electrical [27 h] |
| A20590 | Megger & continuity test panel group 7A — Ship's laundry | 0d | 2026-09-05 | 2026-09-14 | A20580 FS+0.8d | Electrical [146 h] |
| A34310 | Megger & continuity test cable run 2A — Electrical distribution room No. 1 | 0d | 2026-09-06 | 2026-09-10 | A34300 FS-1.6d | Electrical [65 h] |
| A21820 | Energize & close-out lighting circuit 8B — Crew washroom & head No. 4 | 0d | 2026-09-06 | 2026-09-18 | A21810 FS+2.4d | Electrical [297 h] |
| A26050 | Energize & close-out lighting circuit 9A — Third deck trunk No. 1 | 0d | 2026-09-07 | 2026-09-21 | A26040 FS+0.8d | Electrical [159 h] |
| A33100 | Megger & continuity test lighting circuit 4A — Emergency diesel generator room No. 2 | 0d | 2026-09-07 | 2026-09-15 | A33090 | Electrical [65 h] |
| A27880 | Energize & close-out lighting circuit 6C — Crew washroom & head No. 6 | 0d | 2026-09-07 | 2026-09-14 | A27870 | Electrical [59 h] |
| A27180 | Pull & land cable — panel group 9A (3-60-2-L) | 0d | 2026-09-07 | 2026-09-14 | A27170 | Electrical [36 h]; Rigging & Weight Handling [9 h] |
| A25940 | Energize & close-out panel group 9A — Division office No. 2 | 0d | 2026-09-08 | 2026-09-20 | A25930 SS+7.2d | Electrical [319 h] |
| A22060 | Energize & close-out panel group 9C — Crew berthing No. 9 | 0d | 2026-09-08 | 2026-09-20 | A22050 | Electrical [398 h] |
| A35850 | Energize & close-out panel group 1E — Storeroom No. 2 | 0d | 2026-09-08 | 2026-09-19 | A35840 | Electrical [262 h] |
| A20740 | Megger & continuity test panel group 3D — Ship's laundry | 0d | 2026-09-09 | 2026-09-16 | A20730 | Electrical [66 h] |
| A35630 | Megger & continuity test cable run 6A — Storeroom No. 2 | 0d | 2026-09-09 | 2026-09-14 | A35620 FS+2.4d | Electrical [95 h] |
| A26450 | Megger & continuity test cable run 7A — Forward IC & gyro room | 0d | 2026-09-09 | 2026-09-19 | A26440 | Electrical [225 h] |
| A27740 | Megger & continuity test lighting circuit 3C — Division office No. 8 | 0d | 2026-09-09 | 2026-09-22 | A27730 | Electrical [81 h] |
| A02590 | Megger & continuity test cable run 1A — Catapult No. 1 machinery room | 0d | 2026-09-09 | 2026-09-15 | A02580 | Electrical [32 h] |
| A26950 | Megger & continuity test cable run 6C — Division office No. 6 | 0d | 2026-09-09 | 2026-09-23 | A26940 | Electrical [335 h]; Rigging & Weight Handling [84 h] |
| A44540 | Megger & continuity test lighting circuit 5B — Forward magazine No. 2 – lower level | 0d | 2026-09-10 | 2026-09-16 | A44530 FS+2.4d | Electrical [121 h] |
| A33740 | Energize & close-out panel group 3B — Forward magazine No. 1 – upper level | 0d | 2026-09-10 | 2026-09-13 | A33730 FS+0.8d | Electrical [24 h] |
| A34900 | Megger & continuity test lighting circuit 9E — Forward pump room | 0d | 2026-09-11 | 2026-09-23 | A34890 | Electrical [241 h] |
| A21420 | Megger & continuity test lighting circuit 3A (2-66-1-L) | 0d | 2026-09-11 | 2026-09-13 | A21410 FS+2.4d | Electrical [43 h] |
| A02700 | Energize & close-out panel group 2A — Catapult No. 2 machinery room | 0d | 2026-09-11 | 2026-09-14 | A02690 | Electrical [26 h] |
| A34320 | Energize & close-out cable run 2A — Electrical distribution room No. 1 | 0d | 2026-09-12 | 2026-09-24 | A34310 | Electrical [219 h] |
| A12550 | Megger & continuity test panel group 3A — Forward officers' berthing No. 1 | 0d | 2026-09-12 | 2026-09-25 | A12540 | Electrical [223 h] |
| A35390 | Energize & close-out panel group 1B — Fan room No. 2 | 0d | 2026-09-13 | 2026-09-16 | A35380 | Electrical [25 h] |
| A07720 | Energize & close-out panel group 7A — Catapult No. 1 steam accumulator room | 0d | 2026-09-13 | 2026-09-26 | A07710 | Electrical [173 h] |
| A20860 | Energize & close-out cable run 9A — Damage control repair locker No. 2 | 0d | 2026-09-15 | 2026-09-20 | A20850 SS+4.8d | Electrical [176 h] |
| A21430 | Energize & close-out lighting circuit 3A (2-66-1-L) | 0d | 2026-09-15 | 2026-09-29 | A21420 | Electrical [103 h] |
| A27190 | Megger & continuity test panel group 9A (3-60-2-L) | 0d | 2026-09-15 | 2026-09-17 | A27180 | Electrical [19 h] |
| A33110 | Energize & close-out lighting circuit 4A — Emergency diesel generator room No. 2 | 0d | 2026-09-15 | 2026-09-22 | A33100 | Electrical [116 h] |
| A35640 | Energize & close-out cable run 6A — Storeroom No. 2 | 0d | 2026-09-16 | 2026-09-22 | A35630 | Electrical [39 h] |

| ID | WBS | Activity | Duration | Start | Finish | Predecessors | Complete | Remaining | Resources |
| --- | --- | --- | --- | --- | --- | --- | --- | --- | --- |
| A20600 |  | Energize & close-out panel group 7A — Ship's laundry | 0d | 2026-09-17 | 2026-09-28 | A20590 |  |  | Electrical [254 h] |
| A02600 |  | Energize & close-out cable run 1A — Catapult No. 1 machinery room | 0d | 2026-09-17 | 2026-09-20 | A02590 FS+0.8d |  |  | Electrical [43 h] |
| A27200 |  | Energize & close-out panel group 9A (3-60-2-L) | 0d | 2026-09-18 | 2026-09-26 | A27190 FS+2.4d |  |  | Electrical [208 h] |
| A02860 |  | Energize & close-out lighting circuit 1D — Catapult No. 2 machinery room | 0d | 2026-09-18 | 2026-09-23 | A02850 FS+0.8d |  |  | Electrical [90 h] |
| A44550 |  | Energize & close-out lighting circuit 5B — Forward magazine No. 2 – lower level | 0d | 2026-09-18 | 2026-09-30 | A44540 FS+0.8d |  |  | Electrical [84 h] |
| A20750 |  | Energize & close-out panel group 3D — Ship's laundry | 0d | 2026-09-19 | 2026-09-28 | A20740 |  |  | Electrical [52 h] |
| A26460 |  | Energize & close-out cable run 7A — Forward IC & gyro room | 0d | 2026-09-21 | 2026-09-29 | A26450 FS+2.4d |  |  | Electrical [154 h] |
| A26960 |  | Energize & close-out cable run 6C — Division office No. 6 | 0d | 2026-09-25 | 2026-09-30 | A26950 |  |  | Electrical [114 h] |
| A27750 |  | Energize & close-out lighting circuit 3C — Division office No. 8 | 0d | 2026-09-25 | 2026-10-03 | A27740 FS+2.4d |  |  | Electrical [86 h] |
| A34910 |  | Energize & close-out lighting circuit 9E — Forward pump room | 0d | 2026-09-26 | 2026-09-30 | A34900 FS+0.8d |  |  | Electrical [56 h] |
| A12560 |  | Energize & close-out panel group 3A — Forward officers' berthing No. 1 | 0d | 2026-09-27 | 2026-10-07 | A12550 FS+2.4d |  |  | Electrical [139 h] |
|  | 430 | **430 Interior Communications** |  | 2026-07-28 | 2026-09-29 |  |  |  |  |
| A21440 |  | Circuit trace — IC circuit 7B — Crew berthing No. 6 | 0d | 2026-07-28 A | 2026-08-07 A |  | 100% |  | Interior Communications [170 h] |
| A21350 |  | Circuit trace — announcing group 5C — Forward mess deck | 0d | 2026-08-04 A | 2026-08-09 A |  | 100% |  | Interior Communications [50 h] |
| A26590 |  | Circuit trace — announcing group 6B — Division office No. 5 | 0d | 2026-08-05 A | 2026-08-16 |  | 49% | 0d | Interior Communications [92 h] |
| A25860 |  | Circuit trace — announcing group 3B — Division office No. 1 | 0d | 2026-08-08 A | 2026-08-15 |  | 28% | 0d | Interior Communications [125 h] |
| A21980 |  | Circuit trace — IC circuit 6B — Crew berthing No. 9 | 0d | 2026-08-08 A | 2026-08-14 |  | 19% | 0d | Interior Communications [124 h] |
| A12570 |  | Circuit trace — announcing group 5A — Forward officers' berthing No. 2 | 0d | 2026-08-09 A | 2026-08-13 |  | 19% | 0d | Interior Communications [43 h] |
| A20980 |  | Circuit trace — announcing group 8A — Crew berthing No. 3 | 0d | 2026-08-10 A | 2026-08-21 |  | 1% | 0d | Interior Communications [240 h] |
| A21450 |  | Rip out IC circuit 7B — Crew berthing No. 6 | 0d | 2026-08-10 | 2026-08-20 | A21440 |  |  | Interior Communications [114 h]; Rigging & Weight Handling [29 h] |
| A21360 |  | Rip out announcing group 5C — Forward mess deck | 0d | 2026-08-10 | 2026-08-17 | A21350 |  |  | Interior Communications [60 h] |
| A26320 |  | Circuit trace — announcing group 8B — Division office No. 3 | 0d | 2026-08-11 | 2026-08-25 |  |  |  | Interior Communications [317 h] |
| A21260 |  | Circuit trace — IC circuit 8A — Forward mess deck | 0d | 2026-08-14 | 2026-08-17 |  |  |  | Interior Communications [22 h] |
| A21990 |  | Rip out IC circuit 6B — Crew berthing No. 9 | 0d | 2026-08-14 | 2026-08-24 | A21980 FS+0.8d |  |  | Interior Communications [121 h] |
| A27630 |  | Circuit trace — IC circuit 6A (3-82-2-L) | 0d | 2026-08-15 | 2026-08-17 |  |  |  | Interior Communications [16 h] |
| A12580 |  | Rip out announcing group 5A — Forward officers' berthing No. 2 | 0d | 2026-08-15 | 2026-08-26 | A12570 |  |  | Interior Communications [70 h] |
| A25870 |  | Rip out announcing group 3B — Division office No. 1 | 0d | 2026-08-16 | 2026-08-22 | A25860 FS+0.8d |  |  | Interior Communications [46 h] |
| A26600 |  | Rip out announcing group 6B — Division office No. 5 | 0d | 2026-08-17 | 2026-08-30 | A26590 FS+0.8d |  |  | Interior Communications [403 h] |
| A21370 |  | Install & terminate announcing group 5C — Forward mess deck | 0d | 2026-08-17 | 2026-08-19 | A21360 FS-4.8d |  |  | Interior Communications [61 h] |
| A27640 |  | Rip out IC circuit 6A (3-82-2-L) | 0d | 2026-08-18 | 2026-08-27 | A27630 SS+4.8d |  |  | Interior Communications [112 h]; Rigging & Weight Handling [29 h] |
| A21270 |  | Rip out IC circuit 8A — Forward mess deck | 0d | 2026-08-18 | 2026-08-22 | A21260 FS+2.4d |  |  | Interior Communications [75 h] |
| A27800 |  | Circuit trace — announcing group 7B — Crew washroom & head No. 6 | 0d | 2026-08-20 | 2026-08-23 |  |  |  | Interior Communications [20 h] |
| A21380 |  | Ring-out & test announcing group 5C — Forward mess deck | 0d | 2026-08-20 | 2026-08-27 | A21370 FS+0.8d |  |  | Interior Communications [43 h] |
| A21460 |  | Install & terminate IC circuit 7B — Crew berthing No. 6 | 0d | 2026-08-21 | 2026-08-27 | A21450 FS+0.8d |  |  | Interior Communications [140 h] |
| A21280 |  | Install & terminate IC circuit 8A — Forward mess deck | 0d | 2026-08-23 | 2026-08-26 | A21270 FS+0.8d |  |  | Interior Communications [52 h] |
| A20990 |  | Rip out announcing group 8A — Crew berthing No. 3 | 0d | 2026-08-23 | 2026-09-06 | A20980 FS-1.6d |  |  | Interior Communications [177 h] |
| A25880 |  | Install & terminate announcing group 3B — Division office No. 1 | 0d | 2026-08-23 | 2026-08-31 | A25870 |  |  | Interior Communications [56 h] |
| A22000 |  | Install & terminate IC circuit 6B — Crew berthing No. 9 | 0d | 2026-08-24 | 2026-08-27 | A21990 |  |  | Interior Communications [82 h] |
| A27810 |  | Rip out announcing group 7B — Crew washroom & head No. 6 | 0d | 2026-08-26 | 2026-09-03 | A27800 |  |  | Interior Communications [108 h]; Rigging & Weight Handling [27 h] |
| A26330 |  | Rip out announcing group 8B — Division office No. 3 | 0d | 2026-08-27 | 2026-08-30 | A26320 |  |  | Interior Communications [47 h] |
| A21290 |  | Ring-out & test IC circuit 8A — Forward mess deck | 0d | 2026-08-27 | 2026-08-30 | A21280 FS+2.4d |  |  | Interior Communications [39 h] |
| A21470 |  | Ring-out & test IC circuit 7B — Crew berthing No. 6 | 0d | 2026-08-28 | 2026-09-03 | A21460 FS-2.4d |  |  | Interior Communications [86 h]; Rigging & Weight Handling [22 h] |
| A12590 |  | Install & terminate announcing group 5A — Forward officers' berthing No. 2 | 0d | 2026-08-29 | 2026-09-03 | A12580 |  |  | Interior Communications [39 h] |
| A27650 |  | Install & terminate IC circuit 6A (3-82-2-L) | 0d | 2026-08-29 | 2026-09-04 | A27640 FS+2.4d |  |  | Interior Communications [92 h] |
| A22010 |  | Ring-out & test IC circuit 6B — Crew berthing No. 9 | 0d | 2026-08-29 | 2026-09-07 | A22000 |  |  | Interior Communications [221 h] |
| A26340 |  | Install & terminate announcing group 8B — Division office No. 3 | 0d | 2026-09-01 | 2026-09-14 | A26330 |  |  | Interior Communications [242 h] |
| A26610 |  | Install & terminate announcing group 6B — Division office No. 5 | 0d | 2026-09-02 | 2026-09-11 | A26600 FS+2.4d |  |  | Interior Communications [107 h] |
| A25890 |  | Ring-out & test announcing group 3B — Division office No. 1 | 0d | 2026-09-02 | 2026-09-07 | A25880 FS+0.8d |  |  | Interior Communications [81 h] |
| A27820 |  | Install & terminate announcing group 7B — Crew washroom & head No. 6 | 0d | 2026-09-03 | 2026-09-06 | A27810 |  |  | Interior Communications [26 h] |
| A27660 |  | Ring-out & test IC circuit 6A (3-82-2-L) | 0d | 2026-09-04 | 2026-09-10 | A27650 FS+2.4d |  |  | Interior Communications [145 h] |
| A12600 |  | Ring-out & test announcing group 5A — Forward officers' berthing No. 2 | 0d | 2026-09-05 | 2026-09-10 | A12590 |  |  | Interior Communications [32 h] |
| A27830 |  | Ring-out & test announcing group 7B — Crew washroom & head No. 6 | 0d | 2026-09-08 | 2026-09-15 | A27820 FS+2.4d |  |  | Interior Communications [56 h] |
| A21000 |  | Install & terminate announcing group 8A — Crew berthing No. 3 | 0d | 2026-09-09 | 2026-09-17 | A20990 FS+2.4d |  |  | Interior Communications [67 h] |
| A26620 |  | Ring-out & test announcing group 6B — Division office No. 5 | 0d | 2026-09-14 | 2026-09-27 | A26610 |  |  | Interior Communications [176 h] |
| A26350 |  | Ring-out & test announcing group 8B — Division office No. 3 | 0d | 2026-09-14 | 2026-09-27 | A26340 FS+0.8d |  |  | Interior Communications [79 h] |
| A21010 |  | Ring-out & test announcing group 8A — Crew berthing No. 3 | 0d | 2026-09-18 | 2026-09-29 | A21000 |  |  | Interior Communications [136 h] |

| ID | WBS | Activity | Duration | Start | Finish | Predecessors | Complete | Remaining | Resources |
| --- | --- | --- | --- | --- | --- | --- | --- | --- | --- |
|  | 505 | **505 Piping Systems** |  | 2026-07-27 | 2026-10-24 |  |  |  |  |
| A32910 |  | Lay-up & drain drain riser 5A — Emergency diesel generator room No. 1 | 0d | 2026-07-27 A | 2026-07-29 A |  | 100% |  | Pipefitting [53 h] |
| A32850 |  | Lay-up & drain valve bank 4B — Forward JP-5 pump room – port | 0d | 2026-07-28 A | 2026-08-03 A |  | 100% |  | Pipefitting [75 h] |
| A33520 |  | Lay-up & drain valve bank 8C — High-pressure air compressor room – forward | 0d | 2026-07-28 A | 2026-08-01 A |  | 100% |  | Pipefitting [28 h] |
| A34500 |  | Lay-up & drain valve bank 9B — Electrical distribution room No. 2 | 0d | 2026-07-29 A | 2026-08-03 A |  | 100% |  | Pipefitting [43 h] |
| A44660 |  | Lay-up & drain pipe spool group 5B — Void No. 2 | 0d | 2026-07-29 A | 2026-08-01 A |  | 100% |  | Pipefitting [72 h] |
| A43690 |  | Lay-up & drain pipe spool group 6D — Bow thruster & sonar dome access | 0d | 2026-07-29 A | 2026-08-11 |  | 60% | 0d | Pipefitting [205 h] |
| A32920 |  | Cut out drain riser 5A — Emergency diesel generator room No. 1 | 0d | 2026-07-30 A | 2026-08-10 | A32910 | 99% | 0d | Pipefitting [209 h] |
| A07730 |  | Lay-up & drain drain riser 9B — Catapult No. 1 steam accumulator room | 0d | 2026-07-30 A | 2026-08-07 A |  | 100% |  | Pipefitting [123 h] |
| A33530 |  | Cut out valve bank 8C — High-pressure air compressor room – forward | 0d | 2026-08-01 A | 2026-08-07 A | A33520 | 100% |  | Pipefitting [94 h] |
| A44670 |  | Cut out pipe spool group 5B — Void No. 2 | 0d | 2026-08-02 A | 2026-08-09 A | A44660 FS-4.8d | 100% |  | Pipefitting [48 h] |
| A34510 |  | Cut out valve bank 9B — Electrical distribution room No. 2 | 0d | 2026-08-03 A | 2026-08-06 A | A34500 | 100% |  | Pipefitting [17 h]; Rigging & Weight Handling [5 h] |
| A32860 |  | Cut out valve bank 4B — Forward JP-5 pump room – port | 0d | 2026-08-05 A | 2026-08-13 | A32850 FS+0.8d | 61% | 0d | Pipefitting [206 h] |
| A02760 |  | Lay-up & drain pipe spool group 5C — Catapult No. 2 machinery room | 0d | 2026-08-05 A | 2026-08-09 A |  | 100% |  | Pipefitting [59 h] |
| A34060 |  | Lay-up & drain valve bank 5F — Storeroom No. 1 | 0d | 2026-08-06 A | 2026-08-10 |  | 76% | 0d | Pipefitting [36 h]; Rigging & Weight Handling [9 h] |
| A35650 |  | Lay-up & drain valve bank 1B — Storeroom No. 2 | 0d | 2026-08-06 A | 2026-08-15 |  | 36% | 0d | Pipefitting [58 h] |
| A34520 |  | Fab & fit valve bank 9B — Electrical distribution room No. 2 | 0d | 2026-08-07 A | 2026-08-20 | A34510 | 20% | 0d | Pipefitting [227 h] |
| A33540 |  | Fab & fit valve bank 8C — High-pressure air compressor room – forward | 0d | 2026-08-08 A | 2026-08-11 | A33530 FS+2.4d | 38% | 0d | Pipefitting [60 h] |
| A33950 |  | Lay-up & drain drain riser 2D (4-63-3-Q) | 0d | 2026-08-08 A | 2026-08-17 |  | 9% | 0d | Pipefitting [225 h]; Rigging & Weight Handling [57 h] |
| A07740 |  | Cut out drain riser 9B — Catapult No. 1 steam accumulator room | 0d | 2026-08-09 A | 2026-08-18 | A07730 | 8% | 0d | Pipefitting [157 h] |
| A02770 |  | Cut out pipe spool group 5C — Catapult No. 2 machinery room | 0d | 2026-08-11 | 2026-08-22 | A02760 |  |  | Pipefitting [292 h] |
| A20760 |  | Lay-up & drain drain riser 1E — Ship's laundry | 0d | 2026-08-11 | 2026-08-23 |  |  |  | Pipefitting [170 h] |
| A44680 |  | Fab & fit pipe spool group 5B — Void No. 2 | 0d | 2026-08-11 | 2026-08-25 | A44670 FS+2.4d |  |  | Pipefitting [180 h] |
| A32930 |  | Fab & fit drain riser 5A — Emergency diesel generator room No. 1 | 0d | 2026-08-11 | 2026-08-13 | A32920 |  |  | Pipefitting [38 h]; Rigging & Weight Handling [10 h] |
| A35450 |  | Lay-up & drain pipe spool group 1D — Fan room No. 2 | 0d | 2026-08-11 | 2026-08-23 |  |  |  | Pipefitting [162 h] |
| A49340 |  | Lay-up & drain valve bank 8A — JP-5 service tank No. 2 | 0d | 2026-08-11 | 2026-08-19 |  |  |  | Pipefitting [210 h] |
| A07790 |  | Lay-up & drain valve bank 2C (02-40-1-Q) | 0d | 2026-08-12 | 2026-08-22 |  |  |  | Pipefitting [73 h] |
| A33550 |  | Weld out valve bank 8C — High-pressure air compressor room – forward | 0d | 2026-08-13 | 2026-08-24 | A33540 |  |  | Pipefitting [201 h] |
| A34920 |  | Lay-up & drain valve bank 7F — Forward pump room | 0d | 2026-08-13 | 2026-08-25 |  |  |  | Pipefitting [100 h] |
| A34070 |  | Cut out valve bank 5F — Storeroom No. 1 | 0d | 2026-08-13 | 2026-08-26 | A34060 FS-1.6d |  |  | Pipefitting [229 h] |
| A33460 |  | Lay-up & drain drain riser 4B — High-pressure air compressor room – forward | 0d | 2026-08-14 | 2026-08-21 |  |  |  | Pipefitting [51 h] |
| A43700 |  | Cut out pipe spool group 6D — Bow thruster & sonar dome access | 0d | 2026-08-14 | 2026-08-21 | A43690 |  |  | Pipefitting [48 h] |
| A43900 |  | Lay-up & drain drain riser 9A — Void No. 1 | 0d | 2026-08-14 | 2026-08-19 |  |  |  | Pipefitting [58 h] |
| A32870 |  | Fab & fit valve bank 4B — Forward JP-5 pump room – port | 0d | 2026-08-15 | 2026-08-17 | A32860 FS-0.8d |  |  | Pipefitting [66 h] |
| A35660 |  | Cut out valve bank 1B — Storeroom No. 2 | 0d | 2026-08-16 | 2026-08-26 | A35650 FS+0.8d |  |  | Pipefitting [205 h] |
| A35130 |  | Lay-up & drain valve bank 8D (4-83-3-Q) | 0d | 2026-08-16 | 2026-08-24 |  |  |  | Pipefitting [67 h] |
| A34440 |  | Lay-up & drain pipe spool group 6A — Electrical distribution room No. 2 | 0d | 2026-08-16 | 2026-08-22 |  |  |  | Pipefitting [39 h] |
| A32940 |  | Weld out drain riser 5A — Emergency diesel generator room No. 1 | 0d | 2026-08-16 | 2026-08-20 | A32930 |  |  | Pipefitting [35 h] |
| A33400 |  | Lay-up & drain drain riser 4A — High-pressure air compressor room – forward | 0d | 2026-08-17 | 2026-08-24 |  |  |  | Pipefitting [56 h] |
| A32880 |  | Weld out valve bank 4B — Forward JP-5 pump room – port | 0d | 2026-08-18 | 2026-08-21 | A32870 |  |  | Pipefitting [83 h] |
| A34220 |  | Lay-up & drain drain riser 6C — Fan room No. 1 | 0d | 2026-08-20 | 2026-08-31 |  |  |  | Pipefitting [359 h] |
| A44880 |  | Lay-up & drain valve bank 3A — Storeroom No. 4 | 0d | 2026-08-20 | 2026-08-30 |  |  |  | Pipefitting [175 h] |
| A33960 |  | Cut out drain riser 2D (4-63-3-Q) | 0d | 2026-08-20 | 2026-08-29 | A33950 FS+0.8d |  |  | Pipefitting [294 h] |
| A43910 |  | Cut out drain riser 9A — Void No. 1 | 0d | 2026-08-21 | 2026-08-28 | A43900 |  |  | Pipefitting [81 h] |
| A34530 |  | Weld out valve bank 9B — Electrical distribution room No. 2 | 0d | 2026-08-21 | 2026-08-25 | A34520 |  |  | Pipefitting [61 h]; Rigging & Weight Handling [16 h] |
| A07750 |  | Fab & fit drain riser 9B — Catapult No. 1 steam accumulator room | 0d | 2026-08-21 | 2026-09-01 | A07740 |  |  | Pipefitting [68 h] |
| A33470 |  | Cut out drain riser 4B — High-pressure air compressor room – forward | 0d | 2026-08-22 | 2026-08-28 | A33460 FS+2.4d |  |  | Pipefitting [39 h] |
| A49350 |  | Cut out valve bank 8A — JP-5 service tank No. 2 | 0d | 2026-08-22 | 2026-08-24 | A49340 FS+0.8d |  |  | Pipefitting [11 h] |
| A34450 |  | Cut out pipe spool group 6A — Electrical distribution room No. 2 | 0d | 2026-08-22 | 2026-09-03 | A34440 FS-4.8d |  |  | Pipefitting [137 h] |
| A32890 |  | Hydro test valve bank 4B — Forward JP-5 pump room – port | 0d | 2026-08-22 | 2026-08-30 | A32880 |  |  | Pipefitting [49 h] |
| A32950 |  | Hydro test drain riser 5A — Emergency diesel generator room No. 1 | 0d | 2026-08-22 | 2026-09-04 | A32940 |  |  | Pipefitting [104 h] |
| A43710 |  | Fab & fit pipe spool group 6D — Bow thruster & sonar dome access | 0d | 2026-08-23 | 2026-08-31 | A43700 SS+7.2d |  |  | Pipefitting [43 h] |
| A02780 |  | Fab & fit pipe spool group 5C — Catapult No. 2 machinery room | 0d | 2026-08-23 | 2026-08-30 | A02770 FS+2.4d |  |  | Pipefitting [55 h] |
| A35460 |  | Cut out pipe spool group 1D — Fan room No. 2 | 0d | 2026-08-24 | 2026-08-28 | A35450 |  |  | Pipefitting [28 h] |
| A20770 |  | Cut out drain riser 1E — Ship's laundry | 0d | 2026-08-24 | 2026-09-03 | A20760 |  |  | Pipefitting [60 h] |
| A35140 |  | Cut out valve bank 8D (4-83-3-Q) | 0d | 2026-08-24 | 2026-09-06 | A35130 |  |  | Pipefitting [192 h] |
| A49360 |  | Fab & fit valve bank 8A — JP-5 service tank No. 2 | 0d | 2026-08-25 | 2026-09-06 | A49350 FS+2.4d |  |  | Pipefitting [203 h] |
| A07800 |  | Cut out valve bank 2C (02-40-1-Q) | 0d | 2026-08-25 | 2026-09-03 | A07790 |  |  | Pipefitting [60 h] |
| A34930 |  | Cut out valve bank 7F — Forward pump room | 0d | 2026-08-25 | 2026-09-03 | A34920 FS+2.4d |  |  | Pipefitting [207 h] |
| A44690 |  | Weld out pipe spool group 5B — Void No. 2 | 0d | 2026-08-26 | 2026-09-06 | A44680 FS+0.8d |  |  | Pipefitting [177 h] |
| A33410 |  | Cut out drain riser 4A — High-pressure air compressor room – forward | 0d | 2026-08-26 | 2026-09-01 | A33400 FS+2.4d |  |  | Pipefitting [180 h] |
| A33560 |  | Hydro test valve bank 8C — High-pressure air compressor room – forward | 0d | 2026-08-26 | 2026-09-02 | A33550 |  |  | Pipefitting [96 h] |
| A35670 |  | Fab & fit valve bank 1B — Storeroom No. 2 | 0d | 2026-08-27 | 2026-08-30 | A35660 |  |  | Pipefitting [29 h] |
| A34080 |  | Fab & fit valve bank 5F — Storeroom No. 1 | 0d | 2026-08-28 | 2026-08-31 | A34070 FS+2.4d |  |  | Pipefitting [111 h] |
| A34540 |  | Hydro test valve bank 9B — Electrical distribution room No. 2 | 0d | 2026-08-28 | 2026-08-31 | A34530 |  |  | Pipefitting [17 h] |
| A43920 |  | Fab & fit drain riser 9A — Void No. 1 | 0d | 2026-08-29 | 2026-09-03 | A43910 |  |  | Pipefitting [47 h] |
| A33480 |  | Fab & fit drain riser 4B — High-pressure air compressor room – forward | 0d | 2026-08-29 | 2026-09-02 | A33470 |  |  | Pipefitting [59 h] |
| A35470 |  | Fab & fit pipe spool group 1D — Fan room No. 2 | 0d | 2026-08-30 | 2026-09-07 | A35460 FS+0.8d |  |  | Pipefitting [225 h] |
| A33970 |  | Fab & fit drain riser 2D (4-63-3-Q) | 0d | 2026-08-31 | 2026-09-12 | A33960 |  |  | Pipefitting [106 h] |
| A32900 |  | Flush & restore valve bank 4B — Forward JP-5 pump room – port | 0d | 2026-08-31 | 2026-09-13 | A32890 |  |  | Pipefitting [96 h] |

| ID | Activity | Duration | Start | Finish | Predecessors | Resources |
| --- | --- | --- | --- | --- | --- | --- |
| A43720 | Weld out pipe spool group 6D — Bow thruster & sonar dome access | 0d | 2026-08-31 | 2026-09-09 | A43710 | Pipefitting [202 h] |
| A44890 | Cut out valve bank 3A — Storeroom No. 4 | 0d | 2026-08-31 | 2026-09-12 | A44880 | Pipefitting [255 h] |
| A34550 | Flush & restore valve bank 9B — Electrical distribution room No. 2 | 0d | 2026-09-01 | 2026-09-08 | A34540 SS+7.2d | Pipefitting [131 h]; Rigging & Weight Handling [33 h] |
| A34230 | Cut out drain riser 6C — Fan room No. 1 | 0d | 2026-09-01 | 2026-09-15 | A34220 FS+0.8d | Pipefitting [170 h] |
| A35680 | Weld out valve bank 1B — Storeroom No. 2 | 0d | 2026-09-01 | 2026-09-08 | A35670 | Pipefitting [171 h] |
| A02790 | Weld out pipe spool group 5C — Catapult No. 2 machinery room | 0d | 2026-09-01 | 2026-09-06 | A02780 SS+2.4d | Pipefitting [137 h] |
| A07760 | Weld out drain riser 9B — Catapult No. 1 steam accumulator room | 0d | 2026-09-01 | 2026-09-10 | A07750 FS+2.4d | Pipefitting [135 h] |
| A33420 | Fab & fit drain riser 4A — High-pressure air compressor room – forward | 0d | 2026-09-02 | 2026-09-12 | A33410 | Pipefitting [263 h] |
| A34090 | Weld out valve bank 5F — Storeroom No. 1 | 0d | 2026-09-03 | 2026-09-16 | A34080 | Pipefitting [107 h] |
| A33490 | Weld out drain riser 4B — High-pressure air compressor room – forward | 0d | 2026-09-03 | 2026-09-12 | A33480 | Pipefitting [204 h]; Rigging & Weight Handling [52 h] |
| A34940 | Fab & fit valve bank 7F — Forward pump room | 0d | 2026-09-03 | 2026-09-07 | A34930 | Pipefitting [62 h] |
| A33570 | Flush & restore valve bank 8C — High-pressure air compressor room – forward | 0d | 2026-09-04 | 2026-09-12 | A33560 | Pipefitting [64 h] |
| A07810 | Fab & fit valve bank 2C (02-40-1-Q) | 0d | 2026-09-04 | 2026-09-13 | A07800 | Pipefitting [59 h] |
| A34460 | Fab & fit pipe spool group 6A — Electrical distribution room No. 2 | 0d | 2026-09-04 | 2026-09-16 | A34450 | Pipefitting [249 h] |
| A20780 | Fab & fit drain riser 1E — Ship's laundry | 0d | 2026-09-05 | 2026-09-12 | A20770 | Pipefitting [140 h] |
| A32960 | Flush & restore drain riser 5A — Emergency diesel generator room No. 1 | 0d | 2026-09-06 | 2026-09-09 | A32950 FS+2.4d | Pipefitting [84 h] |
| A43930 | Weld out drain riser 9A — Void No. 1 | 0d | 2026-09-06 | 2026-09-15 | A43920 SS+4.8d | Pipefitting [158 h] |
| A02800 | Hydro test pipe spool group 5C — Catapult No. 2 machinery room | 0d | 2026-09-06 | 2026-09-09 | A02790 FS+2.4d | Pipefitting [48 h] |
| A34950 | Weld out valve bank 7F — Forward pump room | 0d | 2026-09-07 | 2026-09-10 | A34940 FS+2.4d | Pipefitting [78 h] |
| A35480 | Weld out pipe spool group 1D — Fan room No. 2 | 0d | 2026-09-08 | 2026-09-17 | A35470 FS-4.8d | Pipefitting [232 h] |
| A35150 | Fab & fit valve bank 8D (4-83-3-Q) | 0d | 2026-09-08 | 2026-09-12 | A35140 | Pipefitting [62 h] |
| A49370 | Weld out valve bank 8A — JP-5 service tank No. 2 | 0d | 2026-09-08 | 2026-09-17 | A49360 | Pipefitting [77 h] |
| A44700 | Hydro test pipe spool group 5B — Void No. 2 | 0d | 2026-09-08 | 2026-09-20 | A44690 FS+0.8d | Pipefitting [135 h] |
| A02810 | Flush & restore pipe spool group 5C — Catapult No. 2 machinery room | 0d | 2026-09-09 | 2026-09-16 | A02800 FS+2.4d | Pipefitting [33 h]; Rigging & Weight Handling [9 h] |
| A35690 | Hydro test valve bank 1B — Storeroom No. 2 | 0d | 2026-09-10 | 2026-09-14 | A35680 | Pipefitting [82 h] |
| A43730 | Hydro test pipe spool group 6D — Bow thruster & sonar dome access | 0d | 2026-09-10 | 2026-09-16 | A43720 SS+7.2d | Pipefitting [32 h]; Rigging & Weight Handling [8 h] |
| A33500 | Hydro test drain riser 4B — High-pressure air compressor room – forward | 0d | 2026-09-12 | 2026-09-18 | A33490 | Pipefitting [52 h] |
| A44900 | Fab & fit valve bank 3A — Storeroom No. 4 | 0d | 2026-09-12 | 2026-09-20 | A44890 | Pipefitting [172 h] |
| A34960 | Hydro test valve bank 7F — Forward pump room | 0d | 2026-09-12 | 2026-09-18 | A34950 | Pipefitting [68 h] |
| A20790 | Weld out drain riser 1E — Ship's laundry | 0d | 2026-09-13 | 2026-09-23 | A20780 | Pipefitting [365 h] |
| A07770 | Hydro test drain riser 9B — Catapult No. 1 steam accumulator room | 0d | 2026-09-13 | 2026-09-21 | A07760 FS+2.4d | Pipefitting [63 h] |
| A33430 | Weld out drain riser 4A — High-pressure air compressor room – forward | 0d | 2026-09-13 | 2026-09-17 | A33420 FS+0.8d | Pipefitting [32 h] |
| A33980 | Weld out drain riser 2D (4-63-3-Q) | 0d | 2026-09-13 | 2026-09-17 | A33970 | Pipefitting [82 h]; Rigging & Weight Handling [21 h] |
| A35700 | Flush & restore valve bank 1B — Storeroom No. 2 | 0d | 2026-09-14 | 2026-09-24 | A35690 FS+2.4d | Pipefitting [55 h] |
| A07820 | Weld out valve bank 2C (02-40-1-Q) | 0d | 2026-09-14 | 2026-09-27 | A07810 | Pipefitting [217 h] |
| A35160 | Weld out valve bank 8D (4-83-3-Q) | 0d | 2026-09-14 | 2026-09-21 | A35150 | Pipefitting [40 h] |
| A34100 | Hydro test valve bank 5F — Storeroom No. 1 | 0d | 2026-09-16 | 2026-09-30 | A34090 | Pipefitting [76 h]; Rigging & Weight Handling [20 h] |
| A34240 | Fab & fit drain riser 6C — Fan room No. 1 | 0d | 2026-09-17 | 2026-09-29 | A34230 | Pipefitting [177 h] |
| A43940 | Hydro test drain riser 9A — Void No. 1 | 0d | 2026-09-17 | 2026-09-27 | A43930 | Pipefitting [161 h] |
| A43740 | Flush & restore pipe spool group 6D — Bow thruster & sonar dome access | 0d | 2026-09-17 | 2026-09-29 | A43730 FS+0.8d | Pipefitting [87 h] |
| A34970 | Flush & restore valve bank 7F — Forward pump room | 0d | 2026-09-18 | 2026-09-20 | A34960 | Pipefitting [57 h] |
| A34470 | Weld out pipe spool group 6A — Electrical distribution room No. 2 | 0d | 2026-09-18 | 2026-09-28 | A34460 | Pipefitting [74 h] |
| A35490 | Hydro test pipe spool group 1D — Fan room No. 2 | 0d | 2026-09-18 | 2026-09-22 | A35480 FS+0.8d | Pipefitting [46 h]; Rigging & Weight Handling [12 h] |
| A33440 | Hydro test drain riser 4A — High-pressure air compressor room – forward | 0d | 2026-09-19 | 2026-09-25 | A33430 | Pipefitting [178 h] |
| A33990 | Hydro test drain riser 2D (4-63-3-Q) | 0d | 2026-09-19 | 2026-09-27 | A33980 | Pipefitting [76 h] |
| A33510 | Flush & restore drain riser 4B — High-pressure air compressor room – forward | 0d | 2026-09-19 | 2026-09-24 | A33500 FS+2.4d | Pipefitting [62 h] |
| A49380 | Hydro test valve bank 8A — JP-5 service tank No. 2 | 0d | 2026-09-20 | 2026-09-23 | A49370 | Pipefitting [39 h] |
| A07780 | Flush & restore drain riser 9B — Catapult No. 1 steam accumulator room | 0d | 2026-09-21 | 2026-09-30 | A07770 FS+2.4d | Pipefitting [63 h] |
| A35170 | Hydro test valve bank 8D (4-83-3-Q) | 0d | 2026-09-22 | 2026-09-29 | A35160 FS+0.8d | Pipefitting [180 h] |
| A44710 | Flush & restore pipe spool group 5B — Void No. 2 | 0d | 2026-09-22 | 2026-10-03 | A44700 SS+4.8d | Pipefitting [132 h] |
| A44910 | Weld out valve bank 3A — Storeroom No. 4 | 0d | 2026-09-23 | 2026-10-02 | A44900 FS+0.8d | Pipefitting [243 h] |
| A35500 | Flush & restore pipe spool group 1D — Fan room No. 2 | 0d | 2026-09-23 | 2026-10-01 | A35490 | Pipefitting [120 h]; Rigging & Weight Handling [31 h] |
| A20800 | Hydro test drain riser 1E — Ship's laundry | 0d | 2026-09-24 | 2026-10-03 | A20790 | Pipefitting [231 h] |
| A33450 | Flush & restore drain riser 4A — High-pressure air compressor room – forward | 0d | 2026-09-25 | 2026-09-28 | A33440 | Pipefitting [20 h] |
| A49390 | Flush & restore valve bank 8A — JP-5 service tank No. 2 | 0d | 2026-09-26 | 2026-10-05 | A49380 FS+0.8d | Pipefitting [63 h] |
| A07830 | Hydro test valve bank 2C (02-40-1-Q) | 0d | 2026-09-29 | 2026-10-10 | A07820 FS-4.8d | Pipefitting [162 h] |
| A34480 | Hydro test pipe spool group 6A — Electrical distribution room No. 2 | 0d | 2026-09-30 | 2026-10-11 | A34470 | Pipefitting [161 h] |
| A43950 | Flush & restore drain riser 9A — Void No. 1 | 0d | 2026-09-30 | 2026-10-10 | A43940 | Pipefitting [176 h] |
| A35180 | Flush & restore valve bank 8D (4-83-3-Q) | 0d | 2026-09-30 | 2026-10-12 | A35170 | Pipefitting [207 h] |
| A34250 | Weld out drain riser 6C — Fan room No. 1 | 0d | 2026-09-30 | 2026-10-03 | A34240 FS-0.8d | Pipefitting [32 h]; Rigging & Weight Handling [9 h] |
| A34000 | Flush & restore drain riser 2D (4-63-3-Q) | 0d | 2026-09-30 | 2026-10-06 | A33990 | Pipefitting [98 h] |
| A34110 | Flush & restore valve bank 5F — Storeroom No. 1 | 0d | 2026-10-02 | 2026-10-12 | A34100 SS+4.8d | Pipefitting [83 h] |
| A44920 | Hydro test valve bank 3A — Storeroom No. 4 | 0d | 2026-10-04 | 2026-10-15 | A44910 | Pipefitting [74 h] |
| A34260 | Hydro test drain riser 6C — Fan room No. 1 | 0d | 2026-10-04 | 2026-10-14 | A34250 | Pipefitting [120 h]; Rigging & Weight Handling [30 h] |
| A20810 | Flush & restore drain riser 1E — Ship's laundry | 0d | 2026-10-05 | 2026-10-12 | A20800 FS+0.8d | Pipefitting [235 h] |
| A07840 | Flush & restore valve bank 2C (02-40-1-Q) | 0d | 2026-10-11 | 2026-10-21 | A07830 FS+0.8d | Pipefitting [173 h] |
| A34490 | Flush & restore pipe spool group 6A — Electrical distribution room No. 2 | 0d | 2026-10-12 | 2026-10-16 | A34480 FS+2.4d | Pipefitting [33 h] |
| A34270 | Flush & restore drain riser 6C — Fan room No. 1 | 0d | 2026-10-14 | 2026-10-24 | A34260 FS+0.8d | Pipefitting [233 h] |
| A44930 | Flush & restore valve bank 3A — Storeroom No. 4 | 0d | 2026-10-16 | 2026-10-21 | A44920 | Pipefitting [141 h] |

| ID | WBS | Activity | Duration | Start | Finish | Predecessors | Complete | Remaining | Resources |
| --- | --- | --- | --- | --- | --- | --- | --- | --- | --- |
|  | 508 | **508 Insulation & Lagging** |  | 2026-07-31 | 2026-09-24 |  |  |  |  |
| A27070 |  | Strip lagging — hull board field 7A — Crew washroom & head No. 1 | 0d | 2026-07-31 A | 2026-08-10 |  | 88% | 0d | Insulation & Lagging [162 h] |
| A21020 |  | Strip lagging — lagging section 4B — Crew berthing No. 3 | 0d | 2026-07-31 A | 2026-08-08 A |  | 100% |  | Insulation & Lagging [206 h] |
| A20470 |  | Strip lagging — lagging section 2B — Crew washroom & head No. 2 | 0d | 2026-07-31 A | 2026-08-13 |  | 67% | 0d | Insulation & Lagging [222 h] |
| A21480 |  | Strip lagging — hull board field 6A — Crew berthing No. 7 | 0d | 2026-08-01 A | 2026-08-04 A |  | 100% |  | Insulation & Lagging [111 h] |
| A21680 |  | Strip lagging — lagging section 2A — Crew berthing No. 8 | 0d | 2026-08-02 A | 2026-08-14 |  | 49% | 0d | Insulation & Lagging [161 h] |
| A27760 |  | Strip lagging — hull board field 5A — Crew washroom & head No. 6 | 0d | 2026-08-03 A | 2026-08-12 |  | 69% | 0d | Insulation & Lagging [113 h] |
| A26060 |  | Strip lagging — lagging section 7B — Third deck trunk No. 1 | 0d | 2026-08-04 A | 2026-08-16 |  | 45% | 0d | Insulation & Lagging [294 h] |
| A21490 |  | Asbestos survey — hull board field 6A — Crew berthing No. 7 | 0d | 2026-08-05 A | 2026-08-14 | A21480 | 49% | 0d | Insulation & Lagging [244 h] |
| A27670 |  | Strip lagging — hull board field 4B — Division office No. 8 | 0d | 2026-08-05 A | 2026-08-18 |  | 37% | 0d | Insulation & Lagging [481 h] |
| A36010 |  | Strip lagging — lagging section 7C — Fan room No. 3 | 0d | 2026-08-07 A | 2026-08-16 |  | 24% | 0d | Insulation & Lagging [49 h] |
| A33810 |  | Strip lagging — lagging section 3A — Storeroom No. 1 | 0d | 2026-08-08 A | 2026-08-14 |  | 30% | 0d | Insulation & Lagging [71 h] |
| A21030 |  | Asbestos survey — lagging section 4B — Crew berthing No. 3 | 0d | 2026-08-09 A | 2026-08-21 | A21020 SS+4.8d | 7% | 0d | Insulation & Lagging [459 h] |
| A25820 |  | Strip lagging — hull board field 6A — Division office No. 1 | 0d | 2026-08-09 A | 2026-08-19 |  | 4% | 0d | Insulation & Lagging [83 h] |
| A15090 |  | Strip lagging — hull board field 2B — Main deck passage – forward | 0d | 2026-08-10 A | 2026-08-17 |  |  | 0d | Insulation & Lagging [80 h] |
| A15050 |  | Strip lagging — lagging section 9A — Main deck passage – forward | 0d | 2026-08-12 | 2026-08-25 |  |  |  | Insulation & Lagging [111 h] |
| A27080 |  | Asbestos survey — hull board field 7A — Crew washroom & head No. 1 | 0d | 2026-08-12 | 2026-08-22 | A27070 FS+0.8d |  |  | Insulation & Lagging [88 h] |
| A34180 |  | Strip lagging — hull board field 7B — Fan room No. 1 | 0d | 2026-08-12 | 2026-08-17 |  |  |  | Insulation & Lagging [29 h] |
| A35910 |  | Strip lagging — hull board field 3A — Fan room No. 3 | 0d | 2026-08-12 | 2026-08-19 |  |  |  | Insulation & Lagging [35 h] |
| A20480 |  | Asbestos survey — lagging section 2B — Crew washroom & head No. 2 | 0d | 2026-08-13 | 2026-08-25 | A20470 |  |  | Insulation & Lagging [80 h]; Rigging & Weight Handling [20 h] |
| A27770 |  | Asbestos survey — hull board field 5A — Crew washroom & head No. 6 | 0d | 2026-08-14 | 2026-08-17 | A27760 FS+0.8d |  |  | Insulation & Lagging [26 h] |
| A33820 |  | Asbestos survey — lagging section 3A — Storeroom No. 1 | 0d | 2026-08-14 | 2026-08-18 | A33810 |  |  | Insulation & Lagging [99 h] |
| A21690 |  | Asbestos survey — lagging section 2A — Crew berthing No. 8 | 0d | 2026-08-15 | 2026-08-26 | A21680 SS+2.4d |  |  | Insulation & Lagging [148 h] |
| A21500 |  | Re-insulate hull board field 6A — Crew berthing No. 7 | 0d | 2026-08-15 | 2026-08-27 | A21490 |  |  | Insulation & Lagging [295 h] |
| A27950 |  | Strip lagging — hull board field 9B — Crew washroom & head No. 5 | 0d | 2026-08-16 | 2026-08-29 |  |  |  | Insulation & Lagging [78 h] |
| A36020 |  | Asbestos survey — lagging section 7C — Fan room No. 3 | 0d | 2026-08-17 | 2026-08-31 | A36010 |  |  | Insulation & Lagging [163 h] |
| A34190 |  | Asbestos survey — hull board field 7B — Fan room No. 1 | 0d | 2026-08-17 | 2026-08-30 | A34180 |  |  | Insulation & Lagging [86 h] |
| A27780 |  | Re-insulate hull board field 5A — Crew washroom & head No. 6 | 0d | 2026-08-18 | 2026-08-29 | A27770 FS+2.4d |  |  | Insulation & Lagging [235 h] |
| A26070 |  | Asbestos survey — lagging section 7B — Third deck trunk No. 1 | 0d | 2026-08-19 | 2026-08-28 | A26060 FS-4.8d |  |  | Insulation & Lagging [166 h] |
| A21170 |  | Strip lagging — hull board field 1B — Crew berthing No. 4 | 0d | 2026-08-19 | 2026-08-26 |  |  |  | Insulation & Lagging [55 h] |
| A27680 |  | Asbestos survey — hull board field 4B — Division office No. 8 | 0d | 2026-08-19 | 2026-08-29 | A27670 |  |  | Insulation & Lagging [138 h] |
| A15100 |  | Asbestos survey — hull board field 2B — Main deck passage – forward | 0d | 2026-08-19 | 2026-09-02 | A15090 FS+2.4d |  |  | Insulation & Lagging [236 h] |
| A33830 |  | Re-insulate lagging section 3A — Storeroom No. 1 | 0d | 2026-08-19 | 2026-08-25 | A33820 FS+2.4d |  |  | Insulation & Lagging [93 h] |
| A35560 |  | Strip lagging — lagging section 3B — Fourth deck passage – forward | 0d | 2026-08-20 | 2026-09-01 |  |  |  | Insulation & Lagging [152 h] |
| A35920 |  | Asbestos survey — hull board field 3A — Fan room No. 3 | 0d | 2026-08-21 | 2026-08-27 | A35910 |  |  | Insulation & Lagging [104 h] |
| A25830 |  | Asbestos survey — hull board field 6A — Division office No. 1 | 0d | 2026-08-21 | 2026-08-25 | A25820 FS+2.4d |  |  | Insulation & Lagging [44 h] |
| A27090 |  | Re-insulate hull board field 7A — Crew washroom & head No. 1 | 0d | 2026-08-23 | 2026-08-26 | A27080 |  |  | Insulation & Lagging [24 h] |
| A21040 |  | Re-insulate lagging section 4B — Crew berthing No. 3 | 0d | 2026-08-24 | 2026-09-01 | A21030 |  |  | Insulation & Lagging [95 h] |
| A25840 |  | Re-insulate hull board field 6A — Division office No. 1 | 0d | 2026-08-25 | 2026-08-30 | A25830 FS+0.8d |  |  | Insulation & Lagging [144 h] |
| A21180 |  | Asbestos survey — hull board field 1B — Crew berthing No. 4 | 0d | 2026-08-26 | 2026-09-01 | A21170 |  |  | Insulation & Lagging [90 h] |
| A35930 |  | Re-insulate hull board field 3A — Fan room No. 3 | 0d | 2026-08-27 | 2026-09-06 | A35920 |  |  | Insulation & Lagging [88 h] |
| A15060 |  | Asbestos survey — lagging section 9A — Main deck passage – forward | 0d | 2026-08-27 | 2026-09-04 | A15050 |  |  | Insulation & Lagging [123 h] |
| A27100 |  | Sheathing & finish hull board field 7A — Crew washroom & head No. 1 | 0d | 2026-08-27 | 2026-09-02 | A27090 |  |  | Insulation & Lagging [54 h] |
| A20490 |  | Re-insulate lagging section 2B — Crew washroom & head No. 2 | 0d | 2026-08-27 | 2026-09-07 | A20480 FS+0.8d |  |  | Insulation & Lagging [122 h] |
| A33840 |  | Sheathing & finish lagging section 3A — Storeroom No. 1 | 0d | 2026-08-27 | 2026-09-01 | A33830 |  |  | Insulation & Lagging [43 h] |
| A26080 |  | Re-insulate lagging section 7B — Third deck trunk No. 1 | 0d | 2026-08-28 | 2026-09-08 | A26070 |  |  | Insulation & Lagging [76 h]; Rigging & Weight Handling [19 h] |
| A21700 |  | Re-insulate lagging section 2A — Crew berthing No. 8 | 0d | 2026-08-28 | 2026-09-02 | A21690 FS+0.8d |  |  | Insulation & Lagging [29 h] |
| A21510 |  | Sheathing & finish hull board field 6A — Crew berthing No. 7 | 0d | 2026-08-29 | 2026-09-02 | A21500 |  |  | Insulation & Lagging [22 h] |
| A27960 |  | Asbestos survey — hull board field 9B — Crew washroom & head No. 5 | 0d | 2026-08-31 | 2026-09-06 | A27950 |  |  | Insulation & Lagging [80 h] |
| A27690 |  | Re-insulate hull board field 4B — Division office No. 8 | 0d | 2026-08-31 | 2026-09-10 | A27680 FS-0.8d |  |  | Insulation & Lagging [170 h] |
| A27790 |  | Sheathing & finish hull board field 5A — Crew washroom & head No. 6 | 0d | 2026-08-31 | 2026-09-13 | A27780 |  |  | Insulation & Lagging [107 h] |
| A21190 |  | Re-insulate hull board field 1B — Crew berthing No. 4 | 0d | 2026-09-01 | 2026-09-04 | A21180 |  |  | Insulation & Lagging [74 h] |
| A34200 |  | Re-insulate hull board field 7B — Fan room No. 1 | 0d | 2026-09-01 | 2026-09-07 | A34190 SS+2.4d |  |  | Insulation & Lagging [84 h]; Rigging & Weight Handling [22 h] |
| A36030 |  | Re-insulate lagging section 7C — Fan room No. 3 | 0d | 2026-09-01 | 2026-09-06 | A36020 FS+2.4d |  |  | Insulation & Lagging [58 h] |
| A25850 |  | Sheathing & finish hull board field 6A — Division office No. 1 | 0d | 2026-09-01 | 2026-09-10 | A25840 |  |  | Insulation & Lagging [50 h] |
| A35570 |  | Asbestos survey — lagging section 3B — Fourth deck passage – forward | 0d | 2026-09-03 | 2026-09-06 | A35560 |  |  | Insulation & Lagging [22 h] |
| A21050 |  | Sheathing & finish lagging section 4B — Crew berthing No. 3 | 0d | 2026-09-03 | 2026-09-16 | A21040 FS+0.8d |  |  | Insulation & Lagging [346 h] |
| A15110 |  | Re-insulate hull board field 2B — Main deck passage – forward | 0d | 2026-09-04 | 2026-09-17 | A15100 FS+0.8d |  |  | Insulation & Lagging [125 h] |
| A21200 |  | Sheathing & finish hull board field 1B — Crew berthing No. 4 | 0d | 2026-09-04 | 2026-09-16 | A21190 |  |  | Insulation & Lagging [181 h] |
| A21710 |  | Sheathing & finish lagging section 2A — Crew berthing No. 8 | 0d | 2026-09-04 | 2026-09-08 | A21700 FS+2.4d |  |  | Insulation & Lagging [23 h] |
| A35940 |  | Sheathing & finish hull board field 3A — Fan room No. 3 | 0d | 2026-09-06 | 2026-09-18 | A35930 |  |  | Insulation & Lagging [108 h] |
| A15070 |  | Re-insulate lagging section 9A — Main deck passage – forward | 0d | 2026-09-07 | 2026-09-13 | A15060 |  |  | Insulation & Lagging [141 h] |
| A36040 |  | Sheathing & finish lagging section 7C — Fan room No. 3 | 0d | 2026-09-07 | 2026-09-20 | A36030 FS+2.4d |  |  | Insulation & Lagging [297 h] |
| A35580 |  | Re-insulate lagging section 3B — Fourth deck passage – forward | 0d | 2026-09-08 | 2026-09-14 | A35570 FS+0.8d |  |  | Insulation & Lagging [97 h] |
| A27970 |  | Re-insulate hull board field 9B — Crew washroom & head No. 5 | 0d | 2026-09-08 | 2026-09-12 | A27960 FS+2.4d |  |  | Insulation & Lagging [82 h] |
| A34210 |  | Sheathing & finish hull board field 7B — Fan room No. 1 | 0d | 2026-09-08 | 2026-09-18 | A34200 FS+2.4d |  |  | Insulation & Lagging [318 h] |
| A20500 |  | Sheathing & finish lagging section 2B — Crew washroom & head No. 2 | 0d | 2026-09-09 | 2026-09-18 | A20490 FS+0.8d |  |  | Insulation & Lagging [54 h] |
| A27700 |  | Sheathing & finish hull board field 4B — Division office No. 8 | 0d | 2026-09-10 | 2026-09-14 | A27690 |  |  | Insulation & Lagging [20 h] |
| A26090 |  | Sheathing & finish lagging section 7B — Third deck trunk No. 1 | 0d | 2026-09-10 | 2026-09-20 | A26080 |  |  | Insulation & Lagging [337 h] |
| A15080 |  | Sheathing & finish lagging section 9A — Main deck passage – forward | 0d | 2026-09-13 | 2026-09-17 | A15070 |  |  | Insulation & Lagging [142 h] |

| ID | WBS | Activity | Duration | Start | Finish | Predecessors | Complete | Remaining | Resources |
| --- | --- | --- | --- | --- | --- | --- | --- | --- | --- |
| A27980 |  | Sheathing & finish hull board field 9B — Crew washroom & head No. 5 | 0d | 2026-09-13 | 2026-09-17 | A27970 |  |  | Insulation & Lagging [23 h] |
| A35590 |  | Sheathing & finish lagging section 3B — Fourth deck passage – forward | 0d | 2026-09-15 | 2026-09-22 | A35580 |  |  | Insulation & Lagging [183 h] |
| A15120 |  | Sheathing & finish hull board field 2B — Main deck passage – forward | 0d | 2026-09-20 | 2026-09-24 | A15110 FS+0.8d |  |  | Insulation & Lagging [28 h] |
|  | 512 | **512 Ventilation & Uptakes** |  | 2026-07-28 | 2026-10-29 |  |  |  |  |
| A20130 |  | Survey & mark supply trunk 4A — Crew washroom & head No. 1 | 0d | 2026-07-28 A | 2026-08-11 |  | 58% | 0d | Sheet Metal / HVAC [222 h] |
| A33640 |  | Survey & mark vent branch 7A — Forward magazine No. 1 – upper level | 0d | 2026-07-28 A | 2026-08-07 A |  | 100% |  | Sheet Metal / HVAC [121 h] |
| A07850 |  | Survey & mark exhaust riser 1D (02-40-1-Q) | 0d | 2026-07-29 A | 2026-08-10 A |  | 100% |  | Sheet Metal / HVAC [102 h] |
| A26690 |  | Survey & mark exhaust riser 7B — Crew berthing No. 1 | 0d | 2026-07-30 A | 2026-08-02 A |  | 100% |  | Sheet Metal / HVAC [50 h] |
| A26630 |  | Survey & mark vent branch 5A (3-42-2-L) | 0d | 2026-08-01 A | 2026-08-09 A |  | 100% |  | Sheet Metal / HVAC [131 h] |
| A20250 |  | Survey & mark supply trunk 6A — Crew berthing No. 1 | 0d | 2026-08-01 A | 2026-08-04 A |  | 100% |  | Sheet Metal / HVAC [18 h] |
| A34380 |  | Survey & mark vent branch 4C — Electrical distribution room No. 1 | 0d | 2026-08-02 A | 2026-08-13 |  | 43% | 0d | Sheet Metal / HVAC [286 h] |
| A27520 |  | Survey & mark exhaust riser 6A — Crew berthing No. 2 | 0d | 2026-08-02 A | 2026-08-14 |  | 68% | 0d | Sheet Metal / HVAC [90 h] |
| A33580 |  | Survey & mark exhaust riser 3D — High-pressure air compressor room – forward | 0d | 2026-08-02 A | 2026-08-05 A |  | 100% |  | Sheet Metal / HVAC [61 h] |
| A20190 |  | Survey & mark supply trunk 7B (2-18-1-L) | 0d | 2026-08-03 A | 2026-08-15 |  | 52% | 0d | Sheet Metal / HVAC [66 h] |
| A26700 |  | Remove & tag exhaust riser 7B — Crew berthing No. 1 | 0d | 2026-08-04 A | 2026-08-07 A | A26690 | 100% |  | Sheet Metal / HVAC [107 h] |
| A34120 |  | Survey & mark exhaust riser 9A — Fan room No. 1 | 0d | 2026-08-04 A | 2026-08-16 |  | 44% | 0d | Sheet Metal / HVAC [144 h] |
| A33340 |  | Survey & mark exhaust riser 6F — Emergency diesel generator room No. 2 | 0d | 2026-08-04 A | 2026-08-10 |  | 89% | 0d | Sheet Metal / HVAC [46 h] |
| A44720 |  | Survey & mark exhaust riser 2A — Forward missile magazine | 0d | 2026-08-05 A | 2026-08-09 A |  | 100% |  | Sheet Metal / HVAC [26 h] |
| A27210 |  | Survey & mark supply trunk 3B — Crew washroom & head No. 2 | 0d | 2026-08-05 A | 2026-08-18 |  | 37% | 0d | Sheet Metal / HVAC [188 h] |
| A33590 |  | Remove & tag exhaust riser 3D — High-pressure air compressor room – forward | 0d | 2026-08-06 A | 2026-08-19 | A33580 FS+0.8d | 29% | 0d | Sheet Metal / HVAC [89 h] |
| A20260 |  | Remove & tag supply trunk 6A — Crew berthing No. 1 | 0d | 2026-08-06 A | 2026-08-18 | A20250 FS+2.4d | 28% | 0d | Sheet Metal / HVAC [97 h] |
| A26530 |  | Survey & mark supply trunk 9A — Division office No. 5 | 0d | 2026-08-06 A | 2026-08-12 |  | 58% | 0d | Sheet Metal / HVAC [80 h]; Rigging & Weight Handling [20 h] |
| A20360 |  | Survey & mark vent branch 6A — Second deck passage No. 1 | 0d | 2026-08-07 A | 2026-08-10 A |  | 100% |  | Sheet Metal / HVAC [23 h] |
| A26710 |  | Fab replacement duct — exhaust riser 7B — Crew berthing No. 1 | 0d | 2026-08-07 A | 2026-08-21 | A26700 FS+0.8d | 12% | 0d | Sheet Metal / HVAC [215 h] |
| A33650 |  | Remove & tag vent branch 7A — Forward magazine No. 1 – upper level | 0d | 2026-08-08 A | 2026-08-10 | A33640 | 79% | 0d | Sheet Metal / HVAC [70 h] |
| A25950 |  | Survey & mark vent branch 6B — Division office No. 2 | 0d | 2026-08-09 A | 2026-08-14 |  | 13% | 0d | Sheet Metal / HVAC [75 h] |
| A26810 |  | Survey & mark vent branch 1A (3-50-1-L) | 0d | 2026-08-09 A | 2026-08-13 |  | 9% | 0d | Sheet Metal / HVAC [33 h] |
| A27890 |  | Survey & mark supply trunk 6A — Crew washroom & head No. 5 | 0d | 2026-08-10 | 2026-08-20 |  |  |  | Sheet Metal / HVAC [170 h] |
| A44730 |  | Remove & tag exhaust riser 2A — Forward missile magazine | 0d | 2026-08-10 | 2026-08-23 | A44720 |  |  | Sheet Metal / HVAC [172 h] |
| A33350 |  | Remove & tag exhaust riser 6F — Emergency diesel generator room No. 2 | 0d | 2026-08-11 | 2026-08-13 | A33340 |  |  | Sheet Metal / HVAC [29 h] |
| A07860 |  | Remove & tag exhaust riser 1D (02-40-1-Q) | 0d | 2026-08-11 | 2026-08-24 | A07850 |  |  | Sheet Metal / HVAC [269 h] |
| A34810 |  | Survey & mark supply trunk 3D (4-74-0-Q) | 0d | 2026-08-11 | 2026-08-15 |  |  |  | Sheet Metal / HVAC [24 h] |
| A26640 |  | Remove & tag vent branch 5A (3-42-2-L) | 0d | 2026-08-12 | 2026-08-21 | A26630 |  |  | Sheet Metal / HVAC [262 h] |
| A02870 |  | Survey & mark vent branch 1A — Gallery deck passage No. 1 | 0d | 2026-08-12 | 2026-08-16 |  |  |  | Sheet Metal / HVAC [96 h] |
| A20370 |  | Remove & tag vent branch 6A — Second deck passage No. 1 | 0d | 2026-08-12 | 2026-08-16 | A20360 |  |  | Sheet Metal / HVAC [90 h] |
| A20140 |  | Remove & tag supply trunk 4A — Crew washroom & head No. 1 | 0d | 2026-08-12 | 2026-08-26 | A20130 SS+7.2d |  |  | Sheet Metal / HVAC [188 h] |
| A33750 |  | Survey & mark vent branch 1A — Forward magazine No. 2 – upper level | 0d | 2026-08-12 | 2026-08-24 |  |  |  | Sheet Metal / HVAC [106 h] |
| A21720 |  | Survey & mark exhaust riser 9A — Crew washroom & head No. 4 | 0d | 2026-08-12 | 2026-08-25 |  |  |  | Sheet Metal / HVAC [78 h] |
| A35240 |  | Survey & mark supply trunk 4F — Electrical distribution room No. 3 | 0d | 2026-08-13 | 2026-08-24 |  |  |  | Sheet Metal / HVAC [142 h] |
| A33660 |  | Fab replacement duct — vent branch 7A — Forward magazine No. 1 – upper level | 0d | 2026-08-13 | 2026-08-20 | A33650 FS+0.8d |  |  | Sheet Metal / HVAC [94 h] |
| A26540 |  | Remove & tag supply trunk 9A — Division office No. 5 | 0d | 2026-08-14 | 2026-08-23 | A26530 |  |  | Sheet Metal / HVAC [243 h] |
| A34390 |  | Remove & tag vent branch 4C — Electrical distribution room No. 1 | 0d | 2026-08-14 | 2026-08-22 | A34380 FS+0.8d |  |  | Sheet Metal / HVAC [213 h] |
| A26820 |  | Remove & tag vent branch 1A (3-50-1-L) | 0d | 2026-08-14 | 2026-08-19 | A26810 FS+0.8d |  |  | Sheet Metal / HVAC [44 h] |
| A33360 |  | Fab replacement duct — exhaust riser 6F — Emergency diesel generator room No. 2 | 0d | 2026-08-14 | 2026-08-20 | A33350 |  |  | Sheet Metal / HVAC [53 h] |
| A27530 |  | Remove & tag exhaust riser 6A — Crew berthing No. 2 | 0d | 2026-08-15 | 2026-08-24 | A27520 |  |  | Sheet Metal / HVAC [312 h] |
| A21060 |  | Survey & mark supply trunk 8A (2-48-0-T) | 0d | 2026-08-16 | 2026-08-28 |  |  |  | Sheet Metal / HVAC [406 h] |
| A20200 |  | Remove & tag supply trunk 7B (2-18-1-L) | 0d | 2026-08-16 | 2026-08-26 | A20190 |  |  | Sheet Metal / HVAC [266 h] |
| A25960 |  | Remove & tag vent branch 6B — Division office No. 2 | 0d | 2026-08-16 | 2026-08-19 | A25950 FS+2.4d |  |  | Sheet Metal / HVAC [66 h]; Rigging & Weight Handling [17 h] |
| A33170 |  | Survey & mark vent branch 2C — Emergency diesel generator room No. 2 | 0d | 2026-08-16 | 2026-08-25 |  |  |  | Sheet Metal / HVAC [74 h] |
| A02880 |  | Remove & tag vent branch 1A — Gallery deck passage No. 1 | 0d | 2026-08-16 | 2026-08-19 | A02870 SS+7.2d |  |  | Sheet Metal / HVAC [93 h] |
| A20920 |  | Survey & mark exhaust riser 3A — Crew berthing No. 2 | 0d | 2026-08-16 | 2026-08-21 |  |  |  | Sheet Metal / HVAC [47 h] |
| A35950 |  | Survey & mark supply trunk 7B — Fan room No. 3 | 0d | 2026-08-17 | 2026-08-19 |  |  |  | Sheet Metal / HVAC [33 h] |
| A33230 |  | Survey & mark supply trunk 9D — Emergency diesel generator room No. 2 | 0d | 2026-08-17 | 2026-08-27 |  |  |  | Sheet Metal / HVAC [85 h] |
| A34820 |  | Remove & tag supply trunk 3D (4-74-0-Q) | 0d | 2026-08-17 | 2026-08-19 | A34810 |  |  | Sheet Metal / HVAC [33 h] |
| A20380 |  | Fab replacement duct — vent branch 6A — Second deck passage No. 1 | 0d | 2026-08-17 | 2026-08-25 | A20370 |  |  | Sheet Metal / HVAC [43 h] |
| A21620 |  | Survey & mark exhaust riser 1A — Second deck passage No. 3 | 0d | 2026-08-18 | 2026-08-30 |  |  |  | Sheet Metal / HVAC [198 h] |
| A26260 |  | Survey & mark vent branch 8A — Division office No. 3 | 0d | 2026-08-18 | 2026-08-28 |  |  |  | Sheet Metal / HVAC [55 h] |
| A34130 |  | Remove & tag exhaust riser 9A — Fan room No. 1 | 0d | 2026-08-18 | 2026-08-28 | A34120 |  |  | Sheet Metal / HVAC [249 h] |
| A20270 |  | Fab replacement duct — supply trunk 6A — Crew berthing No. 1 | 0d | 2026-08-19 | 2026-08-27 | A20260 SS+4.8d |  |  | Sheet Metal / HVAC [124 h] |
| A26470 |  | Survey & mark vent branch 9B — Forward IC & gyro room | 0d | 2026-08-19 | 2026-08-25 |  |  |  | Sheet Metal / HVAC [40 h] |
| A35960 |  | Remove & tag supply trunk 7B — Fan room No. 3 | 0d | 2026-08-19 | 2026-08-31 | A35950 |  |  | Sheet Metal / HVAC [278 h] |
| A26360 |  | Survey & mark vent branch 1C — Division office No. 3 | 0d | 2026-08-20 | 2026-08-24 |  |  |  | Sheet Metal / HVAC [53 h] |
| A26100 |  | Survey & mark vent branch 6A (3-31-2-L) | 0d | 2026-08-20 | 2026-08-27 |  |  |  | Sheet Metal / HVAC [38 h]; Rigging & Weight Handling [10 h] |
| A33600 |  | Fab replacement duct — exhaust riser 3D — High-pressure air compressor room – forward | 0d | 2026-08-20 | 2026-09-03 | A33590 |  |  | Sheet Metal / HVAC [283 h] |
| A26750 |  | Survey & mark supply trunk 4C — Crew berthing No. 1 | 0d | 2026-08-21 | 2026-08-28 |  |  |  | Sheet Metal / HVAC [69 h] |
| A27220 |  | Remove & tag supply trunk 3B — Crew washroom & head No. 2 | 0d | 2026-08-21 | 2026-08-31 | A27210 FS+2.4d |  |  | Sheet Metal / HVAC [187 h] |
| A43630 |  | Survey & mark vent branch 4C — Bow thruster & sonar dome access | 0d | 2026-08-21 | 2026-08-31 |  |  |  | Sheet Metal / HVAC [132 h] |
| A33370 |  | Install exhaust riser 6F — Emergency diesel generator room No. 2 | 0d | 2026-08-21 | 2026-08-26 | A33360 |  |  | Sheet Metal / HVAC [69 h] |
| A02890 |  | Fab replacement duct — vent branch 1A — Gallery deck passage No. 1 | 0d | 2026-08-21 | 2026-09-04 | A02880 |  |  | Sheet Metal / HVAC [125 h] |
| A26650 |  | Fab replacement duct — vent branch 5A (3-42-2-L) | 0d | 2026-08-22 | 2026-09-04 | A26640 FS+2.4d |  |  | Sheet Metal / HVAC [174 h] |

| ID | Activity | Duration | Start | Finish | Predecessors | Resources |
| --- | --- | --- | --- | --- | --- | --- |
| A26830 | Fab replacement duct — vent branch 1A (3-50-1-L) | 0d | 2026-08-22 | 2026-09-01 | A26820 | Sheet Metal / HVAC [133 h] |
| A27900 | Remove & tag supply trunk 6A — Crew washroom & head No. 5 | 0d | 2026-08-22 | 2026-08-25 | A27890 | Sheet Metal / HVAC [102 h] |
| A20930 | Remove & tag exhaust riser 3A — Crew berthing No. 2 | 0d | 2026-08-22 | 2026-09-03 | A20920 | Sheet Metal / HVAC [97 h] |
| A34830 | Fab replacement duct — supply trunk 3D (4-74-0-Q) | 0d | 2026-08-22 | 2026-09-03 | A34820 FS+0.8d | Sheet Metal / HVAC [290 h] |
| A25970 | Fab replacement duct — vent branch 6B — Division office No. 2 | 0d | 2026-08-22 | 2026-08-25 | A25960 | Sheet Metal / HVAC [47 h] |
| A26720 | Install exhaust riser 7B — Crew berthing No. 1 | 0d | 2026-08-22 | 2026-08-26 | A26710 | Sheet Metal / HVAC [58 h] |
| A33670 | Install vent branch 7A — Forward magazine No. 1 – upper level | 0d | 2026-08-23 | 2026-08-29 | A33660 FS+0.8d | Sheet Metal / HVAC [199 h] |
| A34400 | Fab replacement duct — vent branch 4C — Electrical distribution room No. 1 | 0d | 2026-08-23 | 2026-09-01 | A34390 FS+0.8d | Sheet Metal / HVAC [70 h] |
| A44740 | Fab replacement duct — exhaust riser 2A — Forward missile magazine | 0d | 2026-08-24 | 2026-09-07 | A44730 | Sheet Metal / HVAC [234 h] |
| A07870 | Fab replacement duct — exhaust riser 1D (02-40-1-Q) | 0d | 2026-08-25 | 2026-08-27 | A07860 | Sheet Metal / HVAC [31 h] |
| A26550 | Fab replacement duct — supply trunk 9A — Division office No. 5 | 0d | 2026-08-25 | 2026-09-02 | A26540 | Sheet Metal / HVAC [185 h] |
| A20390 | Install vent branch 6A — Second deck passage No. 1 | 0d | 2026-08-25 | 2026-08-29 | A20380 FS+2.4d | Sheet Metal / HVAC [40 h]; Rigging & Weight Handling [11 h] |
| A35250 | Remove & tag supply trunk 4F — Electrical distribution room No. 3 | 0d | 2026-08-26 | 2026-09-04 | A35240 | Sheet Metal / HVAC [220 h] |
| A27910 | Fab replacement duct — supply trunk 6A — Crew washroom & head No. 5 | 0d | 2026-08-26 | 2026-09-05 | A27900 FS+2.4d | Sheet Metal / HVAC [319 h] |
| A26370 | Remove & tag vent branch 1C — Division office No. 3 | 0d | 2026-08-26 | 2026-09-08 | A26360 FS+2.4d | Sheet Metal / HVAC [323 h]; Rigging & Weight Handling [81 h] |
| A26480 | Remove & tag vent branch 9B — Forward IC & gyro room | 0d | 2026-08-26 | 2026-09-06 | A26470 FS+0.8d | Sheet Metal / HVAC [70 h] |
| A21730 | Remove & tag exhaust riser 9A — Crew washroom & head No. 4 | 0d | 2026-08-26 | 2026-09-06 | A21720 FS+0.8d | Sheet Metal / HVAC [65 h] |
| A25980 | Install vent branch 6B — Division office No. 2 | 0d | 2026-08-26 | 2026-09-09 | A25970 FS+2.4d | Sheet Metal / HVAC [113 h] |
| A33180 | Remove & tag vent branch 2C — Emergency diesel generator room No. 2 | 0d | 2026-08-26 | 2026-08-31 | A33170 | Sheet Metal / HVAC [97 h] |
| A33760 | Remove & tag vent branch 1A — Forward magazine No. 2 – upper level | 0d | 2026-08-27 | 2026-09-09 | A33750 FS+2.4d | Sheet Metal / HVAC [98 h] |
| A27540 | Fab replacement duct — exhaust riser 6A — Crew berthing No. 2 | 0d | 2026-08-27 | 2026-09-03 | A27530 | Sheet Metal / HVAC [50 h] |
| A20210 | Fab replacement duct — supply trunk 7B (2-18-1-L) | 0d | 2026-08-28 | 2026-09-04 | A20200 | Sheet Metal / HVAC [58 h] |
| A33240 | Remove & tag supply trunk 9D — Emergency diesel generator room No. 2 | 0d | 2026-08-28 | 2026-09-09 | A33230 FS+2.4d | Sheet Metal / HVAC [181 h] |
| A33380 | Duct leak test exhaust riser 6F — Emergency diesel generator room No. 2 | 0d | 2026-08-28 | 2026-09-02 | A33370 FS+0.8d | Sheet Metal / HVAC [183 h] |
| A26730 | Duct leak test exhaust riser 7B — Crew berthing No. 1 | 0d | 2026-08-28 | 2026-09-07 | A26720 | Sheet Metal / HVAC [205 h] |
| A20150 | Fab replacement duct — supply trunk 4A — Crew washroom & head No. 1 | 0d | 2026-08-28 | 2026-08-31 | A20140 | Sheet Metal / HVAC [73 h] |
| A20280 | Install supply trunk 6A — Crew berthing No. 1 | 0d | 2026-08-29 | 2026-09-02 | A20270 SS+7.2d | Sheet Metal / HVAC [72 h] |
| A26270 | Remove & tag vent branch 8A — Division office No. 3 | 0d | 2026-08-29 | 2026-09-09 | A26260 FS+0.8d | Sheet Metal / HVAC [334 h] |
| A26110 | Remove & tag vent branch 6A (3-31-2-L) | 0d | 2026-08-30 | 2026-09-01 | A26100 FS+0.8d | Sheet Metal / HVAC [65 h] |
| A20400 | Duct leak test vent branch 6A — Second deck passage No. 1 | 0d | 2026-08-30 | 2026-09-03 | A20390 FS+2.4d | Sheet Metal / HVAC [106 h] |
| A21070 | Remove & tag supply trunk 8A (2-48-0-T) | 0d | 2026-08-30 | 2026-09-07 | A21060 FS+0.8d | Sheet Metal / HVAC [70 h] |
| A33680 | Duct leak test vent branch 7A — Forward magazine No. 1 – upper level | 0d | 2026-08-30 | 2026-09-05 | A33670 | Sheet Metal / HVAC [37 h]; Rigging & Weight Handling [10 h] |
| A07880 | Install exhaust riser 1D (02-40-1-Q) | 0d | 2026-08-30 | 2026-09-12 | A07870 FS+2.4d | Sheet Metal / HVAC [175 h]; Rigging & Weight Handling [44 h] |
| A26760 | Remove & tag supply trunk 4C — Crew berthing No. 1 | 0d | 2026-08-31 | 2026-09-07 | A26750 FS+2.4d | Sheet Metal / HVAC [172 h] |
| A34140 | Fab replacement duct — exhaust riser 9A — Fan room No. 1 | 0d | 2026-08-31 | 2026-09-04 | A34130 FS+2.4d | Sheet Metal / HVAC [90 h] |
| A21630 | Remove & tag exhaust riser 1A — Second deck passage No. 3 | 0d | 2026-08-31 | 2026-09-14 | A21620 | Sheet Metal / HVAC [123 h] |
| A20160 | Install supply trunk 4A — Crew washroom & head No. 1 | 0d | 2026-09-01 | 2026-09-07 | A20150 SS+7.2d | Sheet Metal / HVAC [163 h] |
| A27230 | Fab replacement duct — supply trunk 3B — Crew washroom & head No. 2 | 0d | 2026-09-01 | 2026-09-15 | A27220 | Sheet Metal / HVAC [382 h] |
| A33190 | Fab replacement duct — vent branch 2C — Emergency diesel generator room No. 2 | 0d | 2026-09-02 | 2026-09-15 | A33180 SS+7.2d | Sheet Metal / HVAC [122 h] |
| A26840 | Install vent branch 1A (3-50-1-L) | 0d | 2026-09-02 | 2026-09-12 | A26830 SS+7.2d | Sheet Metal / HVAC [120 h] |
| A43640 | Remove & tag vent branch 4C — Bow thruster & sonar dome access | 0d | 2026-09-03 | 2026-09-11 | A43630 FS+2.4d | Sheet Metal / HVAC [142 h] |
| A33390 | Close-out & QA exhaust riser 6F — Emergency diesel generator room No. 2 | 0d | 2026-09-03 | 2026-09-11 | A33380 | Sheet Metal / HVAC [120 h] |
| A27550 | Install exhaust riser 6A — Crew berthing No. 2 | 0d | 2026-09-03 | 2026-09-13 | A27540 | Sheet Metal / HVAC [85 h] |
| A35970 | Fab replacement duct — supply trunk 7B — Fan room No. 3 | 0d | 2026-09-03 | 2026-09-17 | A35960 | Sheet Metal / HVAC [328 h] |
| A34410 | Install vent branch 4C — Electrical distribution room No. 1 | 0d | 2026-09-03 | 2026-09-17 | A34400 | Sheet Metal / HVAC [202 h] |
| A20290 | Duct leak test supply trunk 6A — Crew berthing No. 1 | 0d | 2026-09-04 | 2026-09-09 | A20280 | Sheet Metal / HVAC [42 h] |
| A34840 | Install supply trunk 3D (4-74-0-Q) | 0d | 2026-09-04 | 2026-09-17 | A34830 | Sheet Metal / HVAC [239 h] |
| A26660 | Install vent branch 5A (3-42-2-L) | 0d | 2026-09-04 | 2026-09-12 | A26650 FS+0.8d | Sheet Metal / HVAC [143 h] |
| A26120 | Fab replacement duct — vent branch 6A (3-31-2-L) | 0d | 2026-09-04 | 2026-09-11 | A26110 FS+2.4d | Sheet Metal / HVAC [131 h] |
| A34150 | Install exhaust riser 9A — Fan room No. 1 | 0d | 2026-09-04 | 2026-09-15 | A34140 | Sheet Metal / HVAC [69 h] |
| A20410 | Close-out & QA vent branch 6A — Second deck passage No. 1 | 0d | 2026-09-04 | 2026-09-17 | A20400 FS+2.4d | Sheet Metal / HVAC [176 h] |
| A26560 | Install supply trunk 9A — Division office No. 5 | 0d | 2026-09-04 | 2026-09-14 | A26550 | Sheet Metal / HVAC [282 h] |
| A33610 | Install exhaust riser 3D — High-pressure air compressor room – forward | 0d | 2026-09-04 | 2026-09-14 | A33600 FS+0.8d | Sheet Metal / HVAC [326 h] |
| A20220 | Install supply trunk 7B (2-18-1-L) | 0d | 2026-09-05 | 2026-09-08 | A20210 FS+0.8d | Sheet Metal / HVAC [81 h] |
| A20940 | Fab replacement duct — exhaust riser 3A — Crew berthing No. 2 | 0d | 2026-09-05 | 2026-09-16 | A20930 FS+2.4d | Sheet Metal / HVAC [227 h] |
| A33690 | Close-out & QA vent branch 7A — Forward magazine No. 1 – upper level | 0d | 2026-09-06 | 2026-09-18 | A33680 | Sheet Metal / HVAC [179 h] |
| A35260 | Fab replacement duct — supply trunk 4F — Electrical distribution room No. 3 | 0d | 2026-09-06 | 2026-09-16 | A35250 | Sheet Metal / HVAC [152 h] |
| A21740 | Fab replacement duct — exhaust riser 9A — Crew washroom & head No. 4 | 0d | 2026-09-06 | 2026-09-12 | A21730 | Sheet Metal / HVAC [104 h] |
| A27920 | Install supply trunk 6A — Crew washroom & head No. 5 | 0d | 2026-09-06 | 2026-09-18 | A27910 | Sheet Metal / HVAC [253 h] |
| A02900 | Install vent branch 1A — Gallery deck passage No. 1 | 0d | 2026-09-06 | 2026-09-12 | A02890 | Sheet Metal / HVAC [35 h] |
| A26770 | Fab replacement duct — supply trunk 4C — Crew berthing No. 1 | 0d | 2026-09-07 | 2026-09-17 | A26760 | Sheet Metal / HVAC [184 h] |
| A26490 | Fab replacement duct — vent branch 9B — Forward IC & gyro room | 0d | 2026-09-07 | 2026-09-11 | A26480 FS+0.8d | Sheet Metal / HVAC [38 h] |
| A20170 | Duct leak test supply trunk 4A — Crew washroom & head No. 1 | 0d | 2026-09-07 | 2026-09-21 | A20160 | Sheet Metal / HVAC [388 h] |
| A21080 | Fab replacement duct — supply trunk 8A (2-48-0-T) | 0d | 2026-09-08 | 2026-09-11 | A21070 FS+2.4d | Sheet Metal / HVAC [24 h] |
| A26380 | Fab replacement duct — vent branch 1C — Division office No. 3 | 0d | 2026-09-08 | 2026-09-13 | A26370 FS+0.8d | Sheet Metal / HVAC [100 h] |
| A26740 | Close-out & QA exhaust riser 7B — Crew berthing No. 1 | 0d | 2026-09-09 | 2026-09-17 | A26730 | Sheet Metal / HVAC [137 h] |
| A44750 | Install exhaust riser 2A — Forward missile magazine | 0d | 2026-09-10 | 2026-09-20 | A44740 | Sheet Metal / HVAC [48 h]; Rigging & Weight Handling [12 h] |
| A20230 | Duct leak test supply trunk 7B (2-18-1-L) | 0d | 2026-09-10 | 2026-09-21 | A20220 FS+0.8d | Sheet Metal / HVAC [231 h] |
| A20300 | Close-out & QA supply trunk 6A — Crew berthing No. 1 | 0d | 2026-09-10 | 2026-09-17 | A20290 FS+0.8d | Sheet Metal / HVAC [41 h] |
| A33770 | Fab replacement duct — vent branch 1A — Forward magazine No. 2 – upper level | 0d | 2026-09-10 | 2026-09-24 | A33760 | Sheet Metal / HVAC [403 h] |

| ID | Activity | Duration | Start | Finish | Predecessors | Resources |
| --- | --- | --- | --- | --- | --- | --- |
| A33250 | Fab replacement duct — supply trunk 9D — Emergency diesel generator room No. 2 | 0d | 2026-09-10 | 2026-09-19 | A33240 SS+7.2d | Sheet Metal / HVAC [87 h]; Rigging & Weight Handling [22 h] |
| A26280 | Fab replacement duct — vent branch 8A — Division office No. 3 | 0d | 2026-09-11 | 2026-09-23 | A26270 FS+2.4d | Sheet Metal / HVAC [143 h] |
| A25990 | Duct leak test vent branch 6B — Division office No. 2 | 0d | 2026-09-11 | 2026-09-24 | A25980 FS+0.8d | Sheet Metal / HVAC [217 h]; Rigging & Weight Handling [55 h] |
| A21090 | Install supply trunk 8A (2-48-0-T) | 0d | 2026-09-12 | 2026-09-15 | A21080 SS+7.2d | Sheet Metal / HVAC [44 h] |
| A02910 | Duct leak test vent branch 1A — Gallery deck passage No. 1 | 0d | 2026-09-13 | 2026-09-19 | A02900 | Sheet Metal / HVAC [127 h] |
| A26850 | Duct leak test vent branch 1A (3-50-1-L) | 0d | 2026-09-13 | 2026-09-23 | A26840 | Sheet Metal / HVAC [91 h] |
| A26130 | Install vent branch 6A (3-31-2-L) | 0d | 2026-09-13 | 2026-09-23 | A26120 FS+0.8d | Sheet Metal / HVAC [77 h] |
| A26670 | Duct leak test vent branch 5A (3-42-2-L) | 0d | 2026-09-13 | 2026-09-23 | A26660 FS+2.4d | Sheet Metal / HVAC [63 h] |
| A07890 | Duct leak test exhaust riser 1D (02-40-1-Q) | 0d | 2026-09-14 | 2026-09-22 | A07880 FS-1.6d | Sheet Metal / HVAC [148 h] |
| A21750 | Install exhaust riser 9A — Crew washroom & head No. 4 | 0d | 2026-09-14 | 2026-09-20 | A21740 | Sheet Metal / HVAC [119 h] |
| A43650 | Fab replacement duct — vent branch 4C — Bow thruster & sonar dome access | 0d | 2026-09-14 | 2026-09-26 | A43640 FS+0.8d | Sheet Metal / HVAC [275 h] |
| A27560 | Duct leak test exhaust riser 6A — Crew berthing No. 2 | 0d | 2026-09-14 | 2026-09-25 | A27550 | Sheet Metal / HVAC [283 h] |
| A26500 | Install vent branch 9B — Forward IC & gyro room | 0d | 2026-09-14 | 2026-09-18 | A26490 | Sheet Metal / HVAC [106 h] |
| A33620 | Duct leak test exhaust riser 3D — High-pressure air compressor room – forward | 0d | 2026-09-14 | 2026-09-22 | A33610 | Sheet Metal / HVAC [141 h] |
| A26390 | Install vent branch 1C — Division office No. 3 | 0d | 2026-09-15 | 2026-09-28 | A26380 | Sheet Metal / HVAC [209 h] |
| A33200 | Install vent branch 2C — Emergency diesel generator room No. 2 | 0d | 2026-09-16 | 2026-09-26 | A33190 FS+0.8d | Sheet Metal / HVAC [259 h] |
| A21100 | Duct leak test supply trunk 8A (2-48-0-T) | 0d | 2026-09-16 | 2026-09-24 | A21090 | Sheet Metal / HVAC [75 h] |
| A21640 | Fab replacement duct — exhaust riser 1A — Second deck passage No. 3 | 0d | 2026-09-16 | 2026-09-19 | A21630 | Sheet Metal / HVAC [39 h] |
| A27240 | Install supply trunk 3B — Crew washroom & head No. 2 | 0d | 2026-09-16 | 2026-09-21 | A27230 FS+0.8d | Sheet Metal / HVAC [29 h] |
| A35270 | Install supply trunk 4F — Electrical distribution room No. 3 | 0d | 2026-09-16 | 2026-09-30 | A35260 | Sheet Metal / HVAC [389 h] |
| A20950 | Install exhaust riser 3A — Crew berthing No. 2 | 0d | 2026-09-17 | 2026-09-24 | A20940 | Sheet Metal / HVAC [193 h] |
| A35980 | Install supply trunk 7B — Fan room No. 3 | 0d | 2026-09-17 | 2026-09-25 | A35970 FS+2.4d | Sheet Metal / HVAC [60 h] |
| A34420 | Duct leak test vent branch 4C — Electrical distribution room No. 1 | 0d | 2026-09-17 | 2026-09-30 | A34410 | Sheet Metal / HVAC [102 h] |
| A26570 | Duct leak test supply trunk 9A — Division office No. 5 | 0d | 2026-09-17 | 2026-09-26 | A26560 | Sheet Metal / HVAC [158 h] |
| A34160 | Duct leak test exhaust riser 9A — Fan room No. 1 | 0d | 2026-09-18 | 2026-09-20 | A34150 | Sheet Metal / HVAC [14 h] |
| A26510 | Duct leak test vent branch 9B — Forward IC & gyro room | 0d | 2026-09-19 | 2026-09-21 | A26500 | Sheet Metal / HVAC [39 h]; Rigging & Weight Handling [10 h] |
| A21650 | Install exhaust riser 1A — Second deck passage No. 3 | 0d | 2026-09-19 | 2026-09-30 | A21640 | Sheet Metal / HVAC [156 h] |
| A34850 | Duct leak test supply trunk 3D (4-74-0-Q) | 0d | 2026-09-19 | 2026-10-03 | A34840 | Sheet Metal / HVAC [121 h] |
| A27930 | Duct leak test supply trunk 6A — Crew washroom & head No. 5 | 0d | 2026-09-19 | 2026-09-28 | A27920 | Sheet Metal / HVAC [303 h] |
| A26780 | Install supply trunk 4C — Crew berthing No. 1 | 0d | 2026-09-20 | 2026-09-27 | A26770 | Sheet Metal / HVAC [63 h] |
| A34170 | Close-out & QA exhaust riser 9A — Fan room No. 1 | 0d | 2026-09-20 | 2026-09-28 | A34160 SS+2.4d | Sheet Metal / HVAC [189 h] |
| A21760 | Duct leak test exhaust riser 9A — Crew washroom & head No. 4 | 0d | 2026-09-20 | 2026-09-30 | A21750 FS+0.8d | Sheet Metal / HVAC [224 h] |
| A33260 | Install supply trunk 9D — Emergency diesel generator room No. 2 | 0d | 2026-09-21 | 2026-10-04 | A33250 | Sheet Metal / HVAC [95 h] |
| A02920 | Close-out & QA vent branch 1A — Gallery deck passage No. 1 | 0d | 2026-09-22 | 2026-09-24 | A02910 | Sheet Metal / HVAC [14 h] |
| A20180 | Close-out & QA supply trunk 4A — Crew washroom & head No. 1 | 0d | 2026-09-22 | 2026-09-27 | A20170 FS+0.8d | Sheet Metal / HVAC [49 h] |
| A44760 | Duct leak test exhaust riser 2A — Forward missile magazine | 0d | 2026-09-22 | 2026-10-03 | A44750 SS+7.2d | Sheet Metal / HVAC [163 h] |
| A07900 | Close-out & QA exhaust riser 1D (02-40-1-Q) | 0d | 2026-09-23 | 2026-09-27 | A07890 FS-4.8d | Sheet Metal / HVAC [33 h] |
| A26520 | Close-out & QA vent branch 9B — Forward IC & gyro room | 0d | 2026-09-23 | 2026-10-05 | A26510 FS+2.4d | Sheet Metal / HVAC [99 h] |
| A20240 | Close-out & QA supply trunk 7B (2-18-1-L) | 0d | 2026-09-23 | 2026-10-07 | A20230 FS+0.8d | Sheet Metal / HVAC [196 h] |
| A33630 | Close-out & QA exhaust riser 3D — High-pressure air compressor room – forward | 0d | 2026-09-24 | 2026-10-01 | A33620 | Sheet Metal / HVAC [225 h] |
| A27250 | Duct leak test supply trunk 3B — Crew washroom & head No. 2 | 0d | 2026-09-24 | 2026-09-29 | A27240 | Sheet Metal / HVAC [138 h] |
| A26140 | Duct leak test vent branch 6A (3-31-2-L) | 0d | 2026-09-25 | 2026-10-01 | A26130 FS+0.8d | Sheet Metal / HVAC [84 h] |
| A33780 | Install vent branch 1A — Forward magazine No. 2 – upper level | 0d | 2026-09-25 | 2026-09-27 | A33770 | Sheet Metal / HVAC [36 h] |
| A26290 | Install vent branch 8A — Division office No. 3 | 0d | 2026-09-25 | 2026-10-07 | A26280 | Sheet Metal / HVAC [293 h] |
| A26680 | Close-out & QA vent branch 5A (3-42-2-L) | 0d | 2026-09-25 | 2026-10-09 | A26670 | Sheet Metal / HVAC [198 h] |
| A21110 | Close-out & QA supply trunk 8A (2-48-0-T) | 0d | 2026-09-25 | 2026-10-07 | A21100 | Sheet Metal / HVAC [174 h] |
| A26000 | Close-out & QA vent branch 6B — Division office No. 2 | 0d | 2026-09-26 | 2026-10-07 | A25990 | Sheet Metal / HVAC [109 h]; Rigging & Weight Handling [28 h] |
| A26860 | Close-out & QA vent branch 1A (3-50-1-L) | 0d | 2026-09-26 | 2026-10-03 | A26850 | Sheet Metal / HVAC [44 h] |
| A20960 | Duct leak test exhaust riser 3A — Crew berthing No. 2 | 0d | 2026-09-26 | 2026-10-08 | A20950 | Sheet Metal / HVAC [271 h] |
| A27570 | Close-out & QA exhaust riser 6A — Crew berthing No. 2 | 0d | 2026-09-27 | 2026-10-06 | A27560 | Sheet Metal / HVAC [223 h] |
| A35990 | Duct leak test supply trunk 7B — Fan room No. 3 | 0d | 2026-09-27 | 2026-10-05 | A35980 FS+2.4d | Sheet Metal / HVAC [46 h] |
| A33210 | Duct leak test vent branch 2C — Emergency diesel generator room No. 2 | 0d | 2026-09-27 | 2026-10-07 | A33200 | Sheet Metal / HVAC [70 h] |
| A27940 | Close-out & QA supply trunk 6A — Crew washroom & head No. 5 | 0d | 2026-09-28 | 2026-10-08 | A27930 | Sheet Metal / HVAC [65 h] |
| A26790 | Duct leak test supply trunk 4C — Crew berthing No. 1 | 0d | 2026-09-29 | 2026-10-12 | A26780 | Sheet Metal / HVAC [337 h] |
| A43660 | Install vent branch 4C — Bow thruster & sonar dome access | 0d | 2026-09-29 | 2026-10-04 | A43650 | Sheet Metal / HVAC [68 h] |
| A26580 | Close-out & QA supply trunk 9A — Division office No. 5 | 0d | 2026-09-29 | 2026-10-09 | A26570 | Sheet Metal / HVAC [83 h] |
| A33790 | Duct leak test vent branch 1A — Forward magazine No. 2 – upper level | 0d | 2026-09-29 | 2026-10-08 | A33780 FS+0.8d | Sheet Metal / HVAC [60 h] |
| A35280 | Duct leak test supply trunk 4F — Electrical distribution room No. 3 | 0d | 2026-09-30 | 2026-10-10 | A35270 | Sheet Metal / HVAC [120 h] |
| A26400 | Duct leak test vent branch 1C — Division office No. 3 | 0d | 2026-09-30 | 2026-10-03 | A26390 FS+0.8d | Sheet Metal / HVAC [37 h] |
| A21770 | Close-out & QA exhaust riser 9A — Crew washroom & head No. 4 | 0d | 2026-10-01 | 2026-10-10 | A21760 | Sheet Metal / HVAC [254 h] |
| A27260 | Close-out & QA supply trunk 3B — Crew washroom & head No. 2 | 0d | 2026-10-02 | 2026-10-07 | A27250 | Sheet Metal / HVAC [197 h] |
| A21660 | Duct leak test exhaust riser 1A — Second deck passage No. 3 | 0d | 2026-10-02 | 2026-10-09 | A21650 FS+2.4d | Sheet Metal / HVAC [156 h] |
| A34430 | Close-out & QA vent branch 4C — Electrical distribution room No. 1 | 0d | 2026-10-02 | 2026-10-14 | A34420 FS+2.4d | Sheet Metal / HVAC [320 h] |
| A26150 | Close-out & QA vent branch 6A (3-31-2-L) | 0d | 2026-10-03 | 2026-10-06 | A26140 | Sheet Metal / HVAC [42 h] |
| A26410 | Close-out & QA vent branch 1C — Division office No. 3 | 0d | 2026-10-03 | 2026-10-10 | A26400 FS+0.8d | Sheet Metal / HVAC [87 h] |
| A34860 | Close-out & QA supply trunk 3D (4-74-0-Q) | 0d | 2026-10-04 | 2026-10-09 | A34850 | Sheet Metal / HVAC [162 h] |
| A43670 | Duct leak test vent branch 4C — Bow thruster & sonar dome access | 0d | 2026-10-05 | 2026-10-13 | A43660 | Sheet Metal / HVAC [132 h] |
| A44770 | Close-out & QA exhaust riser 2A — Forward missile magazine | 0d | 2026-10-05 | 2026-10-15 | A44760 | Sheet Metal / HVAC [336 h] |
| A36000 | Close-out & QA supply trunk 7B — Fan room No. 3 | 0d | 2026-10-07 | 2026-10-19 | A35990 | Sheet Metal / HVAC [71 h] |
| A33270 | Duct leak test supply trunk 9D — Emergency diesel generator room No. 2 | 0d | 2026-10-07 | 2026-10-15 | A33260 | Sheet Metal / HVAC [103 h] |

| ID | WBS | Activity | Duration | Start | Finish | Predecessors | Complete | Remaining | Resources |
| --- | --- | --- | --- | --- | --- | --- | --- | --- | --- |
| A33800 |  | Close-out & QA vent branch 1A — Forward magazine No. 2 – upper level | 0d | 2026-10-08 | 2026-10-19 | A33790 |  |  | Sheet Metal / HVAC [121 h] |
| A20970 |  | Close-out & QA exhaust riser 3A — Crew berthing No. 2 | 0d | 2026-10-09 | 2026-10-20 | A20960 |  |  | Sheet Metal / HVAC [148 h] |
| A26300 |  | Duct leak test vent branch 8A — Division office No. 3 | 0d | 2026-10-09 | 2026-10-14 | A26290 |  |  | Sheet Metal / HVAC [29 h] |
| A33220 |  | Close-out & QA vent branch 2C — Emergency diesel generator room No. 2 | 0d | 2026-10-09 | 2026-10-17 | A33210 |  |  | Sheet Metal / HVAC [52 h] |
| A21670 |  | Close-out & QA exhaust riser 1A — Second deck passage No. 3 | 0d | 2026-10-11 | 2026-10-15 | A21660 FS+0.8d |  |  | Sheet Metal / HVAC [59 h] |
| A35290 |  | Close-out & QA supply trunk 4F — Electrical distribution room No. 3 | 0d | 2026-10-12 | 2026-10-22 | A35280 FS+0.8d |  |  | Sheet Metal / HVAC [148 h] |
| A26800 |  | Close-out & QA supply trunk 4C — Crew berthing No. 1 | 0d | 2026-10-13 | 2026-10-17 | A26790 FS+2.4d |  |  | Sheet Metal / HVAC [35 h] |
| A43680 |  | Close-out & QA vent branch 4C — Bow thruster & sonar dome access | 0d | 2026-10-15 | 2026-10-27 | A43670 |  |  | Sheet Metal / HVAC [175 h] |
| A26310 |  | Close-out & QA vent branch 8A — Division office No. 3 | 0d | 2026-10-16 | 2026-10-22 | A26300 FS+2.4d |  |  | Sheet Metal / HVAC [101 h] |
| A33280 |  | Close-out & QA supply trunk 9D — Emergency diesel generator room No. 2 | 0d | 2026-10-18 | 2026-10-29 | A33270 FS+0.8d |  |  | Sheet Metal / HVAC [187 h] |
|  | 560 | **560 Aux Machinery** |  | 2026-07-27 | 2026-10-10 |  |  |  |  |
| A44060 |  | Open & inspect motor group 4B — Forward fire pump room | 0d | 2026-07-27 A | 2026-08-09 A |  | 100% |  | Mechanical [326 h] |
| A49400 |  | Open & inspect compressor 8B — JP-5 service tank No. 2 | 0d | 2026-07-29 A | 2026-08-06 A |  | 100% |  | Mechanical [114 h] |
| A20610 |  | Open & inspect motor group 2B — Ship's laundry | 0d | 2026-07-30 A | 2026-08-13 |  | 80% | 0d | Mechanical [95 h] |
| A32750 |  | Open & inspect compressor 1A — Forward JP-5 pump room – starboard | 0d | 2026-07-30 A | 2026-08-02 A |  | 100% |  | Mechanical [62 h] |
| A43750 |  | Open & inspect motor group 6E — Bow thruster & sonar dome access | 0d | 2026-08-01 A | 2026-08-12 |  | 71% | 0d | Mechanical [207 h] |
| A34980 |  | Open & inspect motor group 6A — Electrical distribution room No. 3 | 0d | 2026-08-02 A | 2026-08-13 |  | 64% | 0d | Mechanical [157 h] |
| A32760 |  | Remove compressor 1A for shop — Forward JP-5 pump room – starboard | 0d | 2026-08-02 A | 2026-08-12 | A32750 | 68% | 0d | Mechanical [235 h] |
| A33850 |  | Open & inspect motor group 1B — Storeroom No. 1 | 0d | 2026-08-05 A | 2026-08-15 |  | 43% | 0d | Mechanical [301 h] |
| A35400 |  | Open & inspect motor group 7C — Fan room No. 2 | 0d | 2026-08-05 A | 2026-08-13 |  | 59% | 0d | Mechanical [61 h] |
| A02710 |  | Open & inspect motor group 3B — Catapult No. 2 machinery room | 0d | 2026-08-06 A | 2026-08-13 |  | 54% | 0d | Mechanical [54 h]; Rigging & Weight Handling [14 h] |
| A33020 |  | Open & inspect compressor 4C — Emergency diesel generator room No. 1 | 0d | 2026-08-06 A | 2026-08-10 A |  | 100% |  | Mechanical [26 h] |
| A07580 |  | Open & inspect pump set 9C — Forecastle & anchor windlass room | 0d | 2026-08-06 A | 2026-08-11 |  | 74% | 0d | Mechanical [35 h] |
| A32970 |  | Open & inspect pump set 4B — Emergency diesel generator room No. 1 | 0d | 2026-08-06 A | 2026-08-19 |  | 25% | 0d | Mechanical [175 h] |
| A49410 |  | Remove compressor 8B for shop — JP-5 service tank No. 2 | 0d | 2026-08-07 A | 2026-08-20 | A49400 FS+0.8d | 12% | 0d | Mechanical [100 h] |
| A33120 |  | Open & inspect compressor 8B — Emergency diesel generator room No. 2 | 0d | 2026-08-09 A | 2026-08-20 |  | 6% | 0d | Mechanical [67 h] |
| A35860 |  | Open & inspect pump set 9F — Storeroom No. 2 | 0d | 2026-08-09 A | 2026-08-14 |  | 12% | 0d | Mechanical [32 h] |
| A44210 |  | Open & inspect compressor 4E — Forward fire pump room | 0d | 2026-08-09 A | 2026-08-15 |  | 5% | 0d | Mechanical [77 h] |
| A44070 |  | Remove motor group 4B for shop — Forward fire pump room | 0d | 2026-08-11 | 2026-08-14 | A44060 |  |  | Mechanical [26 h] |
| A07590 |  | Remove pump set 9C for shop — Forecastle & anchor windlass room | 0d | 2026-08-12 | 2026-08-24 | A07580 |  |  | Mechanical [196 h] |
| A33030 |  | Remove compressor 4C for shop — Emergency diesel generator room No. 1 | 0d | 2026-08-12 | 2026-08-25 | A33020 FS+2.4d |  |  | Mechanical [101 h] |
| A32770 |  | Shop overhaul — compressor 1A — Forward JP-5 pump room – starboard | 0d | 2026-08-13 | 2026-08-20 | A32760 |  |  | Mechanical [37 h]; Rigging & Weight Handling [10 h] |
| A35410 |  | Remove motor group 7C for shop — Fan room No. 2 | 0d | 2026-08-13 | 2026-08-22 | A35400 FS-0.8d |  |  | Mechanical [153 h] |
| A07480 |  | Open & inspect motor group 8A — Forecastle & anchor windlass room | 0d | 2026-08-14 | 2026-08-28 |  |  |  | Mechanical [99 h] |
| A20620 |  | Remove motor group 2B for shop — Ship's laundry | 0d | 2026-08-14 | 2026-08-22 | A20610 FS+0.8d |  |  | Mechanical [74 h] |
| A35030 |  | Open & inspect motor group 5B — Electrical distribution room No. 3 | 0d | 2026-08-14 | 2026-08-24 |  |  |  | Mechanical [216 h] |
| A44080 |  | Shop overhaul — motor group 4B — Forward fire pump room | 0d | 2026-08-14 | 2026-08-18 | A44070 FS+0.8d |  |  | Mechanical [68 h]; Rigging & Weight Handling [17 h] |
| A43530 |  | Open & inspect compressor 3A — Bow thruster & sonar dome access | 0d | 2026-08-14 | 2026-08-17 |  |  |  | Mechanical [44 h] |
| A34710 |  | Open & inspect compressor 1B — Forward pump room | 0d | 2026-08-15 | 2026-08-27 |  |  |  | Mechanical [113 h] |
| A43760 |  | Remove motor group 6E for shop — Bow thruster & sonar dome access | 0d | 2026-08-15 | 2026-08-28 | A43750 |  |  | Mechanical [198 h] |
| A34990 |  | Remove motor group 6A for shop — Electrical distribution room No. 3 | 0d | 2026-08-16 | 2026-08-20 | A34980 FS+2.4d |  |  | Mechanical [102 h] |
| A44010 |  | Open & inspect compressor 3A — Forward fire pump room | 0d | 2026-08-16 | 2026-08-22 |  |  |  | Mechanical [141 h] |
| A02720 |  | Remove motor group 3B for shop — Catapult No. 2 machinery room | 0d | 2026-08-16 | 2026-08-18 | A02710 |  |  | Mechanical [19 h] |
| A44160 |  | Open & inspect motor group 2D — Forward fire pump room | 0d | 2026-08-17 | 2026-08-26 |  |  |  | Mechanical [118 h] |
| A44220 |  | Remove compressor 4E for shop — Forward fire pump room | 0d | 2026-08-17 | 2026-08-19 | A44210 FS+0.8d |  |  | Mechanical [39 h] |
| A35870 |  | Remove pump set 9F for shop — Storeroom No. 2 | 0d | 2026-08-17 | 2026-08-30 | A35860 FS+2.4d |  |  | Mechanical [273 h] |
| A33860 |  | Remove motor group 1B for shop — Storeroom No. 1 | 0d | 2026-08-18 | 2026-08-21 | A33850 |  |  | Mechanical [20 h] |
| A43540 |  | Remove compressor 3A for shop — Bow thruster & sonar dome access | 0d | 2026-08-18 | 2026-08-20 | A43530 FS+2.4d |  |  | Mechanical [38 h] |
| A36050 |  | Open & inspect motor group 7D — Fan room No. 3 | 0d | 2026-08-18 | 2026-08-24 |  |  |  | Mechanical [29 h]; Rigging & Weight Handling [8 h] |
| A44090 |  | Reinstall & align motor group 4B — Forward fire pump room | 0d | 2026-08-18 | 2026-08-21 | A44080 |  |  | Mechanical [32 h] |
| A08010 |  | Open & inspect pump set 1C — Catapult No. 2 steam accumulator room | 0d | 2026-08-18 | 2026-08-24 |  |  |  | Mechanical [32 h] |
| A35710 |  | Open & inspect pump set 8C — Storeroom No. 2 | 0d | 2026-08-20 | 2026-08-31 |  |  |  | Mechanical [190 h] |
| A33900 |  | Open & inspect pump set 5C — Storeroom No. 1 | 0d | 2026-08-20 | 2026-08-28 |  |  |  | Mechanical [211 h] |
| A44230 |  | Shop overhaul — compressor 4E — Forward fire pump room | 0d | 2026-08-20 | 2026-08-26 | A44220 |  |  | Mechanical [149 h] |
| A20660 |  | Open & inspect pump set 5C (2-40-0-Q) | 0d | 2026-08-20 | 2026-08-25 |  |  |  | Mechanical [82 h] |
| A49420 |  | Shop overhaul — compressor 8B — JP-5 service tank No. 2 | 0d | 2026-08-20 | 2026-09-01 | A49410 |  |  | Mechanical [192 h] |
| A02730 |  | Shop overhaul — motor group 3B — Catapult No. 2 machinery room | 0d | 2026-08-20 | 2026-09-02 | A02720 |  |  | Mechanical [100 h] |
| A43550 |  | Shop overhaul — compressor 3A — Bow thruster & sonar dome access | 0d | 2026-08-20 | 2026-08-23 | A43540 |  |  | Mechanical [18 h] |
| A34330 |  | Open & inspect pump set 3B (4-72-3-Q) | 0d | 2026-08-20 | 2026-09-03 |  |  |  | Mechanical [387 h] |
| A35000 |  | Shop overhaul — motor group 6A — Electrical distribution room No. 3 | 0d | 2026-08-20 | 2026-09-02 | A34990 |  |  | Mechanical [209 h] |
| A32980 |  | Remove pump set 4B for shop — Emergency diesel generator room No. 1 | 0d | 2026-08-21 | 2026-08-25 | A32970 SS+7.2d |  |  | Mechanical [52 h] |
| A32780 |  | Reinstall & align compressor 1A — Forward JP-5 pump room – starboard | 0d | 2026-08-22 | 2026-08-27 | A32770 |  |  | Mechanical [82 h] |
| A44020 |  | Remove compressor 3A for shop — Forward fire pump room | 0d | 2026-08-22 | 2026-08-28 | A44010 |  |  | Mechanical [129 h] |
| A33130 |  | Remove compressor 8B for shop — Emergency diesel generator room No. 2 | 0d | 2026-08-23 | 2026-08-27 | A33120 FS+0.8d |  |  | Mechanical [74 h] |
| A35420 |  | Shop overhaul — motor group 7C — Fan room No. 2 | 0d | 2026-08-23 | 2026-09-02 | A35410 SS+4.8d |  |  | Mechanical [131 h] |
| A20630 |  | Shop overhaul — motor group 2B — Ship's laundry | 0d | 2026-08-23 | 2026-08-31 | A20620 FS+2.4d |  |  | Mechanical [144 h] |
| A44100 |  | Operational test motor group 4B — Forward fire pump room | 0d | 2026-08-23 | 2026-09-01 | A44090 |  |  | Mechanical [72 h] |
| A33870 |  | Shop overhaul — motor group 1B — Storeroom No. 1 | 0d | 2026-08-24 | 2026-08-31 | A33860 FS+0.8d |  |  | Mechanical [141 h] |
| A43560 |  | Reinstall & align compressor 3A — Bow thruster & sonar dome access | 0d | 2026-08-24 | 2026-08-29 | A43550 FS+0.8d |  |  | Mechanical [96 h]; Rigging & Weight Handling [24 h] |
| A07600 |  | Shop overhaul — pump set 9C — Forecastle & anchor windlass room | 0d | 2026-08-25 | 2026-08-30 | A07590 FS+0.8d |  |  | Mechanical [87 h] |

| ID | Activity | Duration | Start | Finish | Predecessors | Resources |
| --- | --- | --- | --- | --- | --- | --- |
| A20670 | Remove pump set 5C for shop (2-40-0-Q) | 0d | 2026-08-25 | 2026-08-29 | A20660 | Mechanical [26 h]; Rigging & Weight Handling [7 h] |
| A36060 | Remove motor group 7D for shop — Fan room No. 3 | 0d | 2026-08-25 | 2026-08-29 | A36050 | Mechanical [30 h] |
| A08020 | Remove pump set 1C for shop — Catapult No. 2 steam accumulator room | 0d | 2026-08-26 | 2026-09-06 | A08010 FS+2.4d | Mechanical [227 h] |
| A35040 | Remove motor group 5B for shop — Electrical distribution room No. 3 | 0d | 2026-08-26 | 2026-08-30 | A35030 | Mechanical [48 h] |
| A44170 | Remove motor group 2D for shop — Forward fire pump room | 0d | 2026-08-26 | 2026-09-08 | A44160 | Mechanical [94 h] |
| A33040 | Shop overhaul — compressor 4C — Emergency diesel generator room No. 1 | 0d | 2026-08-27 | 2026-09-02 | A33030 | Mechanical [128 h] |
| A33140 | Shop overhaul — compressor 8B — Emergency diesel generator room No. 2 | 0d | 2026-08-27 | 2026-09-06 | A33130 FS+0.8d | Mechanical [113 h] |
| A34720 | Remove compressor 1B for shop — Forward pump room | 0d | 2026-08-27 | 2026-09-02 | A34710 FS+0.8d | Mechanical [35 h] |
| A32990 | Shop overhaul — pump set 4B — Emergency diesel generator room No. 1 | 0d | 2026-08-28 | 2026-09-05 | A32980 | Mechanical [218 h] |
| A44240 | Reinstall & align compressor 4E — Forward fire pump room | 0d | 2026-08-28 | 2026-09-04 | A44230 | Mechanical [114 h] |
| A43770 | Shop overhaul — motor group 6E — Bow thruster & sonar dome access | 0d | 2026-08-29 | 2026-09-04 | A43760 FS+0.8d | Mechanical [90 h] |
| A32790 | Operational test compressor 1A — Forward JP-5 pump room – starboard | 0d | 2026-08-29 | 2026-09-01 | A32780 FS+0.8d | Mechanical [100 h] |
| A43570 | Operational test compressor 3A — Bow thruster & sonar dome access | 0d | 2026-08-29 | 2026-09-04 | A43560 FS+0.8d | Mechanical [75 h] |
| A36070 | Shop overhaul — motor group 7D — Fan room No. 3 | 0d | 2026-08-30 | 2026-09-08 | A36060 FS+0.8d | Mechanical [150 h] |
| A44030 | Shop overhaul — compressor 3A — Forward fire pump room | 0d | 2026-08-30 | 2026-09-07 | A44020 | Mechanical [48 h] |
| A20680 | Shop overhaul — pump set 5C (2-40-0-Q) | 0d | 2026-08-30 | 2026-09-11 | A20670 FS+0.8d | Mechanical [345 h] |
| A35050 | Shop overhaul — motor group 5B — Electrical distribution room No. 3 | 0d | 2026-08-30 | 2026-09-06 | A35040 | Mechanical [85 h] |
| A33910 | Remove pump set 5C for shop — Storeroom No. 1 | 0d | 2026-08-31 | 2026-09-04 | A33900 FS+2.4d | Mechanical [34 h] |
| A07490 | Remove motor group 8A for shop — Forecastle & anchor windlass room | 0d | 2026-08-31 | 2026-09-04 | A07480 FS+2.4d | Mechanical [145 h] |
| A33880 | Reinstall & align motor group 1B — Storeroom No. 1 | 0d | 2026-08-31 | 2026-09-08 | A33870 | Mechanical [180 h] |
| A35720 | Remove pump set 8C for shop — Storeroom No. 2 | 0d | 2026-08-31 | 2026-09-08 | A35710 FS+0.8d | Mechanical [181 h] |
| A20640 | Reinstall & align motor group 2B — Ship's laundry | 0d | 2026-09-01 | 2026-09-05 | A20630 SS+4.8d | Mechanical [85 h] |
| A35880 | Shop overhaul — pump set 9F — Storeroom No. 2 | 0d | 2026-09-01 | 2026-09-10 | A35870 FS+2.4d | Mechanical [175 h] |
| A07610 | Reinstall & align pump set 9C — Forecastle & anchor windlass room | 0d | 2026-09-02 | 2026-09-07 | A07600 | Mechanical [142 h] |
| A35010 | Reinstall & align motor group 6A — Electrical distribution room No. 3 | 0d | 2026-09-02 | 2026-09-09 | A35000 | Mechanical [119 h] |
| A34730 | Shop overhaul — compressor 1B — Forward pump room | 0d | 2026-09-02 | 2026-09-06 | A34720 FS+2.4d | Mechanical [55 h] |
| A02740 | Reinstall & align motor group 3B — Catapult No. 2 machinery room | 0d | 2026-09-03 | 2026-09-12 | A02730 FS+2.4d | Mechanical [270 h] |
| A35430 | Reinstall & align motor group 7C — Fan room No. 2 | 0d | 2026-09-03 | 2026-09-07 | A35420 | Mechanical [48 h] |
| A49430 | Reinstall & align compressor 8B — JP-5 service tank No. 2 | 0d | 2026-09-04 | 2026-09-10 | A49420 | Mechanical [56 h] |
| A34340 | Remove pump set 3B for shop (4-72-3-Q) | 0d | 2026-09-04 | 2026-09-12 | A34330 FS+0.8d | Mechanical [268 h] |
| A44250 | Operational test compressor 4E — Forward fire pump room | 0d | 2026-09-04 | 2026-09-15 | A44240 | Mechanical [161 h] |
| A07500 | Shop overhaul — motor group 8A — Forecastle & anchor windlass room | 0d | 2026-09-05 | 2026-09-17 | A07490 FS+0.8d | Mechanical [323 h] |
| A33050 | Reinstall & align compressor 4C — Emergency diesel generator room No. 1 | 0d | 2026-09-05 | 2026-09-16 | A33040 | Mechanical [100 h] |
| A43780 | Reinstall & align motor group 6E — Bow thruster & sonar dome access | 0d | 2026-09-05 | 2026-09-18 | A43770 FS+2.4d | Mechanical [218 h] |
| A20650 | Operational test motor group 2B — Ship's laundry | 0d | 2026-09-06 | 2026-09-15 | A20640 FS+2.4d | Mechanical [111 h] |
| A33920 | Shop overhaul — pump set 5C — Storeroom No. 1 | 0d | 2026-09-06 | 2026-09-09 | A33910 FS+2.4d | Mechanical [23 h] |
| A08030 | Shop overhaul — pump set 1C — Catapult No. 2 steam accumulator room | 0d | 2026-09-06 | 2026-09-17 | A08020 | Mechanical [203 h] |
| A34740 | Reinstall & align compressor 1B — Forward pump room | 0d | 2026-09-07 | 2026-09-10 | A34730 | Mechanical [32 h] |
| A33000 | Reinstall & align pump set 4B — Emergency diesel generator room No. 1 | 0d | 2026-09-08 | 2026-09-12 | A32990 FS+2.4d | Mechanical [140 h] |
| A33890 | Operational test motor group 1B — Storeroom No. 1 | 0d | 2026-09-08 | 2026-09-18 | A33880 FS+2.4d | Mechanical [77 h] |
| A35060 | Reinstall & align motor group 5B — Electrical distribution room No. 3 | 0d | 2026-09-08 | 2026-09-15 | A35050 | Mechanical [92 h]; Rigging & Weight Handling [24 h] |
| A33150 | Reinstall & align compressor 8B — Emergency diesel generator room No. 2 | 0d | 2026-09-08 | 2026-09-14 | A33140 FS+2.4d | Mechanical [80 h] |
| A35730 | Shop overhaul — pump set 8C — Storeroom No. 2 | 0d | 2026-09-08 | 2026-09-12 | A35720 FS+0.8d | Mechanical [32 h] |
| A44040 | Reinstall & align compressor 3A — Forward fire pump room | 0d | 2026-09-08 | 2026-09-14 | A44030 FS+2.4d | Mechanical [164 h]; Rigging & Weight Handling [42 h] |
| A07620 | Operational test pump set 9C — Forecastle & anchor windlass room | 0d | 2026-09-09 | 2026-09-14 | A07610 | Mechanical [102 h] |
| A35440 | Operational test motor group 7C — Fan room No. 2 | 0d | 2026-09-09 | 2026-09-19 | A35430 FS+2.4d | Mechanical [133 h] |
| A36080 | Reinstall & align motor group 7D — Fan room No. 3 | 0d | 2026-09-10 | 2026-09-14 | A36070 FS+2.4d | Mechanical [51 h] |
| A44180 | Shop overhaul — motor group 2D — Forward fire pump room | 0d | 2026-09-10 | 2026-09-20 | A44170 | Mechanical [126 h] |
| A35020 | Operational test motor group 6A — Electrical distribution room No. 3 | 0d | 2026-09-11 | 2026-09-21 | A35010 | Mechanical [145 h]; Rigging & Weight Handling [37 h] |
| A33930 | Reinstall & align pump set 5C — Storeroom No. 1 | 0d | 2026-09-11 | 2026-09-24 | A33920 | Mechanical [150 h] |
| A49440 | Operational test compressor 8B — JP-5 service tank No. 2 | 0d | 2026-09-11 | 2026-09-22 | A49430 | Mechanical [94 h] |
| A02750 | Operational test motor group 3B — Catapult No. 2 machinery room | 0d | 2026-09-12 | 2026-09-25 | A02740 FS+2.4d | Mechanical [97 h] |
| A35890 | Reinstall & align pump set 9F — Storeroom No. 2 | 0d | 2026-09-12 | 2026-09-19 | A35880 | Mechanical [177 h] |
| A34350 | Shop overhaul — pump set 3B (4-72-3-Q) | 0d | 2026-09-12 | 2026-09-20 | A34340 | Mechanical [113 h] |
| A20690 | Reinstall & align pump set 5C (2-40-0-Q) | 0d | 2026-09-13 | 2026-09-26 | A20680 | Mechanical [341 h] |
| A34750 | Operational test compressor 1B — Forward pump room | 0d | 2026-09-13 | 2026-09-26 | A34740 | Mechanical [339 h] |
| A33010 | Operational test pump set 4B — Emergency diesel generator room No. 1 | 0d | 2026-09-15 | 2026-09-22 | A33000 | Mechanical [257 h] |
| A35740 | Reinstall & align pump set 8C — Storeroom No. 2 | 0d | 2026-09-15 | 2026-09-19 | A35730 FS+2.4d | Mechanical [30 h] |
| A44050 | Operational test compressor 3A — Forward fire pump room | 0d | 2026-09-15 | 2026-09-19 | A44040 FS+2.4d | Mechanical [24 h] |
| A36090 | Operational test motor group 7D — Fan room No. 3 | 0d | 2026-09-16 | 2026-09-23 | A36080 | Mechanical [50 h] |
| A33160 | Operational test compressor 8B — Emergency diesel generator room No. 2 | 0d | 2026-09-17 | 2026-09-27 | A33150 | Mechanical [163 h] |
| A35070 | Operational test motor group 5B — Electrical distribution room No. 3 | 0d | 2026-09-17 | 2026-09-24 | A35060 FS+2.4d | Mechanical [46 h] |
| A33060 | Operational test compressor 4C — Emergency diesel generator room No. 1 | 0d | 2026-09-18 | 2026-09-29 | A33050 | Mechanical [152 h] |
| A07510 | Reinstall & align motor group 8A — Forecastle & anchor windlass room | 0d | 2026-09-19 | 2026-10-02 | A07500 | Mechanical [120 h] |
| A43790 | Operational test motor group 6E — Bow thruster & sonar dome access | 0d | 2026-09-19 | 2026-09-25 | A43780 FS+2.4d | Mechanical [158 h] |
| A35750 | Operational test pump set 8C — Storeroom No. 2 | 0d | 2026-09-19 | 2026-09-28 | A35740 | Mechanical [57 h] |
| A35900 | Operational test pump set 9F — Storeroom No. 2 | 0d | 2026-09-19 | 2026-09-25 | A35890 | Mechanical [44 h] |
| A08040 | Reinstall & align pump set 1C — Catapult No. 2 steam accumulator room | 0d | 2026-09-20 | 2026-09-29 | A08030 FS+2.4d | Mechanical [75 h] |
| A44190 | Reinstall & align motor group 2D — Forward fire pump room | 0d | 2026-09-23 | 2026-10-01 | A44180 | Mechanical [62 h] |
| A34360 | Reinstall & align pump set 3B (4-72-3-Q) | 0d | 2026-09-23 | 2026-10-03 | A34350 FS+0.8d | Mechanical [258 h] |

| ID | WBS | Activity | Duration | Start | Finish | Predecessors | Complete | Remaining | Resources |
| --- | --- | --- | --- | --- | --- | --- | --- | --- | --- |
| A33940 |  | Operational test pump set 5C — Storeroom No. 1 | 0d | 2026-09-27 | 2026-10-09 | A33930 |  |  | Mechanical [93 h] |
| A20700 |  | Operational test pump set 5C (2-40-0-Q) | 0d | 2026-09-28 | 2026-10-06 | A20690 |  |  | Mechanical [158 h] |
| A08050 |  | Operational test pump set 1C — Catapult No. 2 steam accumulator room | 0d | 2026-09-29 | 2026-10-08 | A08040 FS+2.4d |  |  | Mechanical [156 h] |
| A07520 |  | Operational test motor group 8A — Forecastle & anchor windlass room | 0d | 2026-10-04 | 2026-10-10 | A07510 |  |  | Mechanical [55 h] |
| A34370 |  | Operational test pump set 3B (4-72-3-Q) | 0d | 2026-10-04 | 2026-10-07 | A34360 FS+2.4d |  |  | Mechanical [40 h] |
| A44200 |  | Operational test motor group 2D — Forward fire pump room | 0d | 2026-10-04 | 2026-10-08 | A44190 |  |  | Mechanical [27 h] |
|  | 631 | **631 Preservation** |  | 2026-07-27 | 2026-10-13 |  |  |  |  |
| A12420 |  | Surface survey — overhead coating 1A — Chief petty officer mess – forward | 0d | 2026-07-27 A | 2026-07-29 A |  | 100% |  | Preservation / Blast & Coat [18 h] |
| A35300 |  | Surface survey — deck coating 4A — Fan room No. 2 | 0d | 2026-07-27 A | 2026-08-06 A |  | 100% |  | Preservation / Blast & Coat [156 h] |
| A35760 |  | Surface survey — bilge preservation 9D — Storeroom No. 2 | 0d | 2026-07-27 A | 2026-08-02 A |  | 100% |  | Preservation / Blast & Coat [68 h] |
| A21570 |  | Surface survey — bilge preservation 9C — Crew berthing No. 7 | 0d | 2026-07-29 A | 2026-08-06 A |  | 100% |  | Preservation / Blast & Coat [132 h] |
| A48790 |  | Surface survey — bilge preservation 4A — Potable water pump room No. 1 | 0d | 2026-07-29 A | 2026-08-07 A |  | 100% |  | Preservation / Blast & Coat [71 h] |
| A44560 |  | Surface survey — deck coating 8A (5-66-3-V) | 0d | 2026-07-29 A | 2026-08-10 |  | 72% | 0d | Preservation / Blast & Coat [204 h] |
| A12430 |  | Blast / mechanical prep overhead coating 1A — Chief petty officer mess – forward | 0d | 2026-07-30 A | 2026-08-13 | A12420 FS+0.8d | 71% | 0d | Preservation / Blast & Coat [130 h]; Rigging & Weight Handling [33 h] |
| A27420 |  | Surface survey — overhead coating 3C — Crew washroom & head No. 3 | 0d | 2026-07-30 A | 2026-08-06 A |  | 100% |  | Preservation / Blast & Coat [79 h] |
| A49040 |  | Surface survey — bilge preservation 4A — Forward magazine No. 3 | 0d | 2026-07-31 A | 2026-08-13 |  | 70% | 0d | Preservation / Blast & Coat [404 h] |
| A48940 |  | Surface survey — overhead coating 4B — Potable water pump room No. 2 | 0d | 2026-07-31 A | 2026-08-13 |  | 68% | 0d | Preservation / Blast & Coat [72 h] |
| A49550 |  | Surface survey — overhead coating 5B — Cofferdam No. 2 | 0d | 2026-07-31 A | 2026-08-05 A |  | 100% |  | Preservation / Blast & Coat [176 h] |
| A45090 |  | Surface survey — deck coating 3B — Void No. 3 | 0d | 2026-07-31 A | 2026-08-07 A |  | 100% |  | Preservation / Blast & Coat [45 h] |
| A44360 |  | Surface survey — bilge preservation 8B — Storeroom No. 3 | 0d | 2026-08-01 A | 2026-08-13 |  | 52% | 0d | Preservation / Blast & Coat [311 h] |
| A20310 |  | Surface survey — overhead coating 2B — Crew berthing No. 1 | 0d | 2026-08-01 A | 2026-08-11 |  | 79% | 0d | Preservation / Blast & Coat [57 h] |
| A44110 |  | Surface survey — bilge preservation 6C — Forward fire pump room | 0d | 2026-08-02 A | 2026-08-08 A |  | 100% |  | Preservation / Blast & Coat [55 h] |
| A26970 |  | Surface survey — overhead coating 1A — Division office No. 7 | 0d | 2026-08-02 A | 2026-08-15 |  | 53% | 0d | Preservation / Blast & Coat [438 h] |
| A32800 |  | Surface survey — deck coating 8A — Forward JP-5 pump room – port | 0d | 2026-08-03 A | 2026-08-14 |  | 56% | 0d | Preservation / Blast & Coat [168 h] |
| A07530 |  | Surface survey — bilge preservation 7B — Forecastle & anchor windlass room | 0d | 2026-08-03 A | 2026-08-07 A |  | 100% |  | Preservation / Blast & Coat [45 h]; Rigging & Weight Handling [12 h] |
| A35770 |  | Blast / mechanical prep bilge preservation 9D — Storeroom No. 2 | 0d | 2026-08-04 A | 2026-08-11 | A35760 FS+2.4d | 88% | 0d | Preservation / Blast & Coat [48 h] |
| A20510 |  | Surface survey — bilge preservation 3A — Crew washroom & head No. 3 | 0d | 2026-08-05 A | 2026-08-19 |  | 33% | 0d | Preservation / Blast & Coat [89 h] |
| A21930 |  | Surface survey — deck coating 5A — Crew berthing No. 9 | 0d | 2026-08-05 A | 2026-08-12 |  | 57% | 0d | Preservation / Blast & Coat [237 h] |
| A21830 |  | Surface survey — bilge preservation 6A — Crew washroom & head No. 5 | 0d | 2026-08-06 A | 2026-08-20 |  | 26% | 0d | Preservation / Blast & Coat [101 h] |
| A48840 |  | Surface survey — deck coating 8A — Void No. 1 | 0d | 2026-08-06 A | 2026-08-14 |  | 44% | 0d | Preservation / Blast & Coat [45 h] |
| A21580 |  | Blast / mechanical prep bilge preservation 9C — Crew berthing No. 7 | 0d | 2026-08-06 A | 2026-08-12 | A21570 FS+0.8d | 58% | 0d | Preservation / Blast & Coat [88 h] |
| A27470 |  | Surface survey — deck coating 6A — Dry provisions storeroom No. 1 | 0d | 2026-08-06 A | 2026-08-12 |  | 59% | 0d | Preservation / Blast & Coat [69 h] |
| A12470 |  | Surface survey — deck coating 7B — Chief petty officer mess – forward | 0d | 2026-08-06 A | 2026-08-16 |  | 23% | 0d | Preservation / Blast & Coat [92 h] |
| A49090 |  | Surface survey — bilge preservation 5A — Cofferdam No. 1 | 0d | 2026-08-07 A | 2026-08-18 |  | 24% | 0d | Preservation / Blast & Coat [340 h] |
| A27020 |  | Surface survey — deck coating 7B — Division office No. 7 | 0d | 2026-08-07 A | 2026-08-11 |  | 51% | 0d | Preservation / Blast & Coat [35 h] |
| A34010 |  | Surface survey — bilge preservation 5E — Storeroom No. 1 | 0d | 2026-08-08 A | 2026-08-11 |  | 65% | 0d | Preservation / Blast & Coat [71 h] |
| A15000 |  | Surface survey — deck coating 6A — Chain locker access & bosun storeroom | 0d | 2026-08-08 A | 2026-08-19 |  | 18% | 0d | Preservation / Blast & Coat [100 h] |
| A27430 |  | Blast / mechanical prep overhead coating 3C — Crew washroom & head No. 3 | 0d | 2026-08-08 A | 2026-08-12 | A27420 | 41% | 0d | Preservation / Blast & Coat [92 h] |
| A49560 |  | Blast / mechanical prep overhead coating 5B — Cofferdam No. 2 | 0d | 2026-08-08 A | 2026-08-21 | A49550 FS+0.8d | 7% | 0d | Preservation / Blast & Coat [98 h] |
| A49450 |  | Surface survey — bilge preservation 3A (6-67-3-V) | 0d | 2026-08-09 A | 2026-08-14 |  | 23% | 0d | Preservation / Blast & Coat [176 h] |
| A44610 |  | Surface survey — bilge preservation 6A — Void No. 2 | 0d | 2026-08-09 A | 2026-08-14 |  | 22% | 0d | Preservation / Blast & Coat [85 h] |
| A49600 |  | Surface survey — bilge preservation 8A — Forward JP-5 transfer pump room | 0d | 2026-08-09 A | 2026-08-14 |  | 11% | 0d | Preservation / Blast & Coat [28 h] |
| A44120 |  | Blast / mechanical prep bilge preservation 6C — Forward fire pump room | 0d | 2026-08-09 A | 2026-08-12 | A44110 | 22% | 0d | Preservation / Blast & Coat [65 h] |
| A07540 |  | Blast / mechanical prep bilge preservation 7B — Forecastle & anchor windlass room | 0d | 2026-08-09 A | 2026-08-22 | A07530 | 4% | 0d | Preservation / Blast & Coat [89 h] |
| A45100 |  | Blast / mechanical prep deck coating 3B — Void No. 3 | 0d | 2026-08-09 A | 2026-08-14 | A45090 | 10% | 0d | Preservation / Blast & Coat [30 h] |
| A02360 |  | Surface survey — overhead coating 1A — Catapult No. 2 launch valve room | 0d | 2026-08-09 A | 2026-08-22 |  | 3% | 0d | Preservation / Blast & Coat [300 h] |
| A35310 |  | Blast / mechanical prep deck coating 4A — Fan room No. 2 | 0d | 2026-08-09 A | 2026-08-19 | A35300 FS+2.4d | 2% | 0d | Preservation / Blast & Coat [83 h] |
| A21880 |  | Surface survey — overhead coating 6B — Crew washroom & head No. 5 | 0d | 2026-08-09 A | 2026-08-22 |  | 3% | 0d | Preservation / Blast & Coat [345 h] |
| A26160 |  | Surface survey — bilge preservation 7B — Division office No. 4 | 0d | 2026-08-10 A | 2026-08-16 |  | 3% | 0d | Preservation / Blast & Coat [171 h] |
| A21520 |  | Surface survey — bilge preservation 4B — Crew berthing No. 7 | 0d | 2026-08-10 | 2026-08-13 |  |  |  | Preservation / Blast & Coat [23 h] |
| A48800 |  | Blast / mechanical prep bilge preservation 4A — Potable water pump room No. 1 | 0d | 2026-08-10 | 2026-08-20 | A48790 |  |  | Preservation / Blast & Coat [248 h] |
| A34020 |  | Blast / mechanical prep bilge preservation 5E — Storeroom No. 1 | 0d | 2026-08-11 | 2026-08-14 | A34010 |  |  | Preservation / Blast & Coat [57 h] |
| A20320 |  | Blast / mechanical prep overhead coating 2B — Crew berthing No. 1 | 0d | 2026-08-12 | 2026-08-14 | A20310 |  |  | Preservation / Blast & Coat [33 h] |
| A44570 |  | Blast / mechanical prep deck coating 8A (5-66-3-V) | 0d | 2026-08-12 | 2026-08-25 | A44560 FS+2.4d |  |  | Preservation / Blast & Coat [380 h] |
| A27480 |  | Blast / mechanical prep deck coating 6A — Dry provisions storeroom No. 1 | 0d | 2026-08-12 | 2026-08-25 | A27470 |  |  | Preservation / Blast & Coat [172 h] |
| A35190 |  | Surface survey — bilge preservation 7E — Electrical distribution room No. 3 | 0d | 2026-08-12 | 2026-08-22 |  |  |  | Preservation / Blast & Coat [56 h]; Rigging & Weight Handling [14 h] |
| A07910 |  | Surface survey — overhead coating 8A — Catapult No. 2 steam accumulator room | 0d | 2026-08-13 | 2026-08-20 |  |  |  | Preservation / Blast & Coat [88 h] |
| A26870 |  | Surface survey — bilge preservation 9B — Division office No. 6 | 0d | 2026-08-13 | 2026-08-16 |  |  |  | Preservation / Blast & Coat [67 h] |
| A44370 |  | Blast / mechanical prep bilge preservation 8B — Storeroom No. 3 | 0d | 2026-08-13 | 2026-08-26 | A44360 |  |  | Preservation / Blast & Coat [200 h] |
| A21590 |  | Prime coat bilge preservation 9C — Crew berthing No. 7 | 0d | 2026-08-13 | 2026-08-25 | A21580 |  |  | Preservation / Blast & Coat [78 h] |
| A27270 |  | Surface survey — bilge preservation 5C (3-60-2-L) | 0d | 2026-08-13 | 2026-08-19 |  |  |  | Preservation / Blast & Coat [114 h] |
| A35780 |  | Prime coat bilge preservation 9D — Storeroom No. 2 | 0d | 2026-08-13 | 2026-08-23 | A35770 |  |  | Preservation / Blast & Coat [331 h] |
| A44460 |  | Surface survey — deck coating 3A — Forward magazine No. 2 – lower level | 0d | 2026-08-13 | 2026-08-24 |  |  |  | Preservation / Blast & Coat [136 h] |
| A27580 |  | Surface survey — overhead coating 5A — Crew washroom & head No. 4 | 0d | 2026-08-13 | 2026-08-19 |  |  |  | Preservation / Blast & Coat [42 h] |
| A44130 |  | Prime coat bilge preservation 6C — Forward fire pump room | 0d | 2026-08-14 | 2026-08-17 | A44120 FS+2.4d |  |  | Preservation / Blast & Coat [45 h] |
| A21120 |  | Surface survey — bilge preservation 6A — Crew berthing No. 4 | 0d | 2026-08-14 | 2026-08-22 |  |  |  | Preservation / Blast & Coat [159 h] |
| A02460 |  | Surface survey — bilge preservation 7C — Catapult No. 2 launch valve room | 0d | 2026-08-14 | 2026-08-20 |  |  |  | Preservation / Blast & Coat [109 h] |
| A02310 |  | Surface survey — overhead coating 9C — Catapult No. 1 launch valve room | 0d | 2026-08-14 | 2026-08-19 |  |  |  | Preservation / Blast & Coat [48 h] |
| A34760 |  | Surface survey — overhead coating 7C — Forward pump room | 0d | 2026-08-14 | 2026-08-24 |  |  |  | Preservation / Blast & Coat [89 h] |
| A21940 |  | Blast / mechanical prep deck coating 5A — Crew berthing No. 9 | 0d | 2026-08-14 | 2026-08-22 | A21930 FS-0.8d |  |  | Preservation / Blast & Coat [153 h] |

| ID | Activity | Duration | Start | Finish | Predecessors | Resources |
| --- | --- | --- | --- | --- | --- | --- |
| A49610 | Blast / mechanical prep bilge preservation 8A — Forward JP-5 transfer pump room | 0d | 2026-08-14 | 2026-08-25 | A49600 FS+2.4d | Preservation / Blast & Coat [168 h] |
| A27030 | Blast / mechanical prep deck coating 7B — Division office No. 7 | 0d | 2026-08-14 | 2026-08-22 | A27020 | Preservation / Blast & Coat [181 h] |
| A21530 | Blast / mechanical prep bilge preservation 4B — Crew berthing No. 7 | 0d | 2026-08-14 | 2026-08-20 | A21520 | Preservation / Blast & Coat [76 h] |
| A12440 | Prime coat overhead coating 1A — Chief petty officer mess – forward | 0d | 2026-08-14 | 2026-08-21 | A12430 | Preservation / Blast & Coat [185 h] |
| A43800 | Surface survey — bilge preservation 4A — Pump room No. 1 | 0d | 2026-08-14 | 2026-08-27 |  | Preservation / Blast & Coat [255 h] |
| A27440 | Prime coat overhead coating 3C — Crew washroom & head No. 3 | 0d | 2026-08-15 | 2026-08-20 | A27430 FS+2.4d | Preservation / Blast & Coat [91 h] |
| A02510 | Surface survey — bilge preservation 7D — Catapult No. 2 launch valve room | 0d | 2026-08-15 | 2026-08-22 |  | Preservation / Blast & Coat [62 h] |
| A48850 | Blast / mechanical prep deck coating 8A — Void No. 1 | 0d | 2026-08-15 | 2026-08-25 | A48840 | Preservation / Blast & Coat [189 h] |
| A49050 | Blast / mechanical prep bilge preservation 4A — Forward magazine No. 3 | 0d | 2026-08-15 | 2026-08-19 | A49040 | Preservation / Blast & Coat [23 h] |
| A44620 | Blast / mechanical prep bilge preservation 6A — Void No. 2 | 0d | 2026-08-15 | 2026-08-27 | A44610 FS+2.4d | Preservation / Blast & Coat [211 h] |
| A34030 | Prime coat bilge preservation 5E — Storeroom No. 1 | 0d | 2026-08-15 | 2026-08-27 | A34020 | Preservation / Blast & Coat [170 h] |
| A32810 | Blast / mechanical prep deck coating 8A — Forward JP-5 pump room – port | 0d | 2026-08-16 | 2026-08-27 | A32800 FS+0.8d | Preservation / Blast & Coat [320 h]; Rigging & Weight Handling [81 h] |
| A48950 | Blast / mechanical prep overhead coating 4B — Potable water pump room No. 2 | 0d | 2026-08-16 | 2026-08-22 | A48940 | Preservation / Blast & Coat [103 h] |
| A45110 | Prime coat deck coating 3B — Void No. 3 | 0d | 2026-08-16 | 2026-08-29 | A45100 | Preservation / Blast & Coat [113 h] |
| A44830 | Surface survey — overhead coating 7B — Pump room No. 4 | 0d | 2026-08-16 | 2026-08-25 |  | Preservation / Blast & Coat [165 h] |
| A20330 | Prime coat overhead coating 2B — Crew berthing No. 1 | 0d | 2026-08-16 | 2026-08-23 | A20320 FS+2.4d | Preservation / Blast & Coat [91 h] |
| A26210 | Surface survey — bilge preservation 3C (3-31-2-L) | 0d | 2026-08-16 | 2026-08-22 |  | Preservation / Blast & Coat [42 h] |
| A33290 | Surface survey — deck coating 3E — Emergency diesel generator room No. 2 | 0d | 2026-08-16 | 2026-08-30 |  | Preservation / Blast & Coat [344 h]; Rigging & Weight Handling [86 h] |
| A49460 | Blast / mechanical prep bilge preservation 3A (6-67-3-V) | 0d | 2026-08-17 | 2026-08-26 | A49450 FS+0.8d | Preservation / Blast & Coat [128 h] |
| A26880 | Blast / mechanical prep bilge preservation 9B — Division office No. 6 | 0d | 2026-08-17 | 2026-08-31 | A26870 FS+0.8d | Preservation / Blast & Coat [253 h] |
| A02260 | Surface survey — overhead coating 7B — Catapult No. 1 launch valve room | 0d | 2026-08-17 | 2026-08-26 |  | Preservation / Blast & Coat [129 h] |
| A44940 | Surface survey — deck coating 5B — Storeroom No. 4 | 0d | 2026-08-17 | 2026-08-21 |  | Preservation / Blast & Coat [46 h] |
| A26980 | Blast / mechanical prep overhead coating 1A — Division office No. 7 | 0d | 2026-08-17 | 2026-08-30 | A26970 FS+2.4d | Preservation / Blast & Coat [330 h] |
| A27370 | Surface survey — bilge preservation 6B — Crew washroom & head No. 3 | 0d | 2026-08-18 | 2026-08-30 |  | Preservation / Blast & Coat [85 h] |
| A49100 | Blast / mechanical prep bilge preservation 5A — Cofferdam No. 1 | 0d | 2026-08-18 | 2026-08-30 | A49090 | Preservation / Blast & Coat [342 h] |
| A12480 | Blast / mechanical prep deck coating 7B — Chief petty officer mess – forward | 0d | 2026-08-19 | 2026-08-22 | A12470 FS+0.8d | Preservation / Blast & Coat [78 h] |
| A26170 | Blast / mechanical prep bilge preservation 7B — Division office No. 4 | 0d | 2026-08-19 | 2026-08-22 | A26160 | Preservation / Blast & Coat [55 h] |
| A27320 | Surface survey — bilge preservation 5A — Crew washroom & head No. 3 | 0d | 2026-08-19 | 2026-09-01 |  | Preservation / Blast & Coat [419 h] |
| A44780 | Surface survey — overhead coating 2A — Pump room No. 4 | 0d | 2026-08-19 | 2026-08-25 |  | Preservation / Blast & Coat [35 h] |
| A35510 | Surface survey — bilge preservation 5A — Fourth deck passage – forward | 0d | 2026-08-19 | 2026-08-28 |  | Preservation / Blast & Coat [114 h] |
| A21300 | Surface survey — overhead coating 6B (2-62-0-L) | 0d | 2026-08-19 | 2026-08-29 |  | Preservation / Blast & Coat [74 h] |
| A49060 | Prime coat bilge preservation 4A — Forward magazine No. 3 | 0d | 2026-08-19 | 2026-08-30 | A49050 | Preservation / Blast & Coat [73 h] |
| A21210 | Surface survey — deck coating 5A — Crew berthing No. 5 | 0d | 2026-08-19 | 2026-08-24 |  | Preservation / Blast & Coat [98 h] |
| A49700 | Surface survey — bilge preservation 5A — Cofferdam No. 3 | 0d | 2026-08-20 | 2026-08-27 |  | Preservation / Blast & Coat [81 h] |
| A44140 | Top coat bilge preservation 6C — Forward fire pump room | 0d | 2026-08-20 | 2026-08-31 | A44130 | Preservation / Blast & Coat [160 h] |
| A49240 | Surface survey — deck coating 4A — JP-5 service tank No. 1 | 0d | 2026-08-20 | 2026-09-01 |  | Preservation / Blast & Coat [283 h] |
| A35320 | Prime coat deck coating 4A — Fan room No. 2 | 0d | 2026-08-20 | 2026-08-31 | A35310 | Preservation / Blast & Coat [144 h] |
| A48990 | Surface survey — deck coating 2A — Void No. 2 | 0d | 2026-08-20 | 2026-08-29 |  | Preservation / Blast & Coat [76 h] |
| A20420 | Surface survey — bilge preservation 9A — Crew washroom & head No. 2 | 0d | 2026-08-20 | 2026-08-30 |  | Preservation / Blast & Coat [146 h] |
| A21540 | Prime coat bilge preservation 4B — Crew berthing No. 7 | 0d | 2026-08-20 | 2026-09-02 | A21530 SS+4.8d | Preservation / Blast & Coat [112 h] |
| A02470 | Blast / mechanical prep bilge preservation 7C — Catapult No. 2 launch valve room | 0d | 2026-08-21 | 2026-08-24 | A02460 FS+0.8d | Preservation / Blast & Coat [42 h] |
| A15010 | Blast / mechanical prep deck coating 6A — Chain locker access & bosun storeroom | 0d | 2026-08-21 | 2026-08-31 | A15000 FS+2.4d | Preservation / Blast & Coat [87 h] |
| A49650 | Surface survey — bilge preservation 9B — Forward JP-5 transfer pump room | 0d | 2026-08-21 | 2026-08-31 |  | Preservation / Blast & Coat [76 h] |
| A20520 | Blast / mechanical prep bilge preservation 3A — Crew washroom & head No. 3 | 0d | 2026-08-21 | 2026-08-24 | A20510 FS+2.4d | Preservation / Blast & Coat [19 h] |
| A02320 | Blast / mechanical prep overhead coating 9C — Catapult No. 1 launch valve room | 0d | 2026-08-21 | 2026-08-24 | A02310 | Preservation / Blast & Coat [80 h] |
| A21840 | Blast / mechanical prep bilge preservation 6A — Crew washroom & head No. 5 | 0d | 2026-08-21 | 2026-08-25 | A21830 FS+2.4d | Preservation / Blast & Coat [82 h] |
| A27280 | Blast / mechanical prep bilge preservation 5C (3-60-2-L) | 0d | 2026-08-22 | 2026-08-24 | A27270 FS+2.4d | Preservation / Blast & Coat [23 h] |
| A44950 | Blast / mechanical prep deck coating 5B — Storeroom No. 4 | 0d | 2026-08-22 | 2026-08-28 | A44940 FS+2.4d | Preservation / Blast & Coat [189 h] |
| A21130 | Blast / mechanical prep bilge preservation 6A — Crew berthing No. 4 | 0d | 2026-08-22 | 2026-08-25 | A21120 SS+2.4d | Preservation / Blast & Coat [54 h] |
| A21890 | Blast / mechanical prep overhead coating 6B — Crew washroom & head No. 5 | 0d | 2026-08-22 | 2026-08-29 | A21880 SS+2.4d | Preservation / Blast & Coat [182 h] |
| A27590 | Blast / mechanical prep overhead coating 5A — Crew washroom & head No. 4 | 0d | 2026-08-22 | 2026-08-31 | A27580 | Preservation / Blast & Coat [154 h] |
| A27450 | Top coat overhead coating 3C — Crew washroom & head No. 3 | 0d | 2026-08-22 | 2026-09-01 | A27440 FS+0.8d | Preservation / Blast & Coat [244 h] |
| A07920 | Blast / mechanical prep overhead coating 8A — Catapult No. 2 steam accumulator room | 0d | 2026-08-22 | 2026-08-30 | A07910 | Preservation / Blast & Coat [129 h] |
| A48810 | Prime coat bilge preservation 4A — Potable water pump room No. 1 | 0d | 2026-08-23 | 2026-09-05 | A48800 | Preservation / Blast & Coat [343 h] |
| A49570 | Prime coat overhead coating 5B — Cofferdam No. 2 | 0d | 2026-08-23 | 2026-09-04 | A49560 | Preservation / Blast & Coat [105 h] |
| A12450 | Top coat overhead coating 1A — Chief petty officer mess – forward | 0d | 2026-08-23 | 2026-09-04 | A12440 FS+2.4d | Preservation / Blast & Coat [146 h]; Rigging & Weight Handling [37 h] |
| A02370 | Blast / mechanical prep overhead coating 1A — Catapult No. 2 launch valve room | 0d | 2026-08-24 | 2026-08-28 | A02360 | Preservation / Blast & Coat [39 h] |
| A20340 | Top coat overhead coating 2B — Crew berthing No. 1 | 0d | 2026-08-24 | 2026-08-28 | A20330 | Preservation / Blast & Coat [98 h] |
| A20530 | Prime coat bilge preservation 3A — Crew washroom & head No. 3 | 0d | 2026-08-24 | 2026-09-04 | A20520 FS+0.8d | Preservation / Blast & Coat [67 h] |
| A21950 | Prime coat deck coating 5A — Crew berthing No. 9 | 0d | 2026-08-24 | 2026-08-26 | A21940 FS+0.8d | Preservation / Blast & Coat [40 h] |
| A12490 | Prime coat deck coating 7B — Chief petty officer mess – forward | 0d | 2026-08-24 | 2026-08-31 | A12480 | Preservation / Blast & Coat [185 h] |
| A02520 | Blast / mechanical prep bilge preservation 7D — Catapult No. 2 launch valve room | 0d | 2026-08-24 | 2026-08-28 | A02510 FS+2.4d | Preservation / Blast & Coat [50 h] |
| A26180 | Prime coat bilge preservation 7B — Division office No. 4 | 0d | 2026-08-24 | 2026-09-03 | A26170 FS+0.8d | Preservation / Blast & Coat [222 h] |
| A02480 | Prime coat bilge preservation 7C — Catapult No. 2 launch valve room | 0d | 2026-08-24 | 2026-09-07 | A02470 FS+2.4d | Preservation / Blast & Coat [257 h] |
| A48960 | Prime coat overhead coating 4B — Potable water pump room No. 2 | 0d | 2026-08-25 | 2026-08-30 | A48950 | Preservation / Blast & Coat [29 h] |
| A35790 | Top coat bilge preservation 9D — Storeroom No. 2 | 0d | 2026-08-25 | 2026-09-03 | A35780 | Preservation / Blast & Coat [118 h] |
| A07550 | Prime coat bilge preservation 7B — Forecastle & anchor windlass room | 0d | 2026-08-25 | 2026-09-04 | A07540 FS+0.8d | Preservation / Blast & Coat [77 h] |
| A26220 | Blast / mechanical prep bilge preservation 3C (3-31-2-L) | 0d | 2026-08-25 | 2026-08-28 | A26210 FS+0.8d | Preservation / Blast & Coat [16 h] |
| A49620 | Prime coat bilge preservation 8A — Forward JP-5 transfer pump room | 0d | 2026-08-25 | 2026-08-30 | A49610 FS+0.8d | Preservation / Blast & Coat [79 h] |
| A21140 | Prime coat bilge preservation 6A — Crew berthing No. 4 | 0d | 2026-08-25 | 2026-09-03 | A21130 | Preservation / Blast & Coat [86 h]; Rigging & Weight Handling [22 h] |

| ID | Activity | Duration | Start | Finish | Predecessors | Resources |
| --- | --- | --- | --- | --- | --- | --- |
| A35200 | Blast / mechanical prep bilge preservation 7E — Electrical distribution room No. 3 | 0d | 2026-08-25 | 2026-09-04 | A35190 | Preservation / Blast & Coat [240 h]; Rigging & Weight Handling [60 h] |
| A27040 | Prime coat deck coating 7B — Division office No. 7 | 0d | 2026-08-25 | 2026-08-29 | A27030 FS+0.8d | Preservation / Blast & Coat [28 h] |
| A02330 | Prime coat overhead coating 9C — Catapult No. 1 launch valve room | 0d | 2026-08-25 | 2026-09-03 | A02320 SS+4.8d | Preservation / Blast & Coat [159 h] |
| A27290 | Prime coat bilge preservation 5C (3-60-2-L) | 0d | 2026-08-26 | 2026-08-30 | A27280 | Preservation / Blast & Coat [25 h] |
| A34770 | Blast / mechanical prep overhead coating 7C — Forward pump room | 0d | 2026-08-26 | 2026-09-02 | A34760 FS+2.4d | Preservation / Blast & Coat [97 h] |
| A44470 | Blast / mechanical prep deck coating 3A — Forward magazine No. 2 – lower level | 0d | 2026-08-26 | 2026-09-05 | A44460 FS+2.4d | Preservation / Blast & Coat [87 h] |
| A48860 | Prime coat deck coating 8A — Void No. 1 | 0d | 2026-08-26 | 2026-09-05 | A48850 SS+4.8d | Preservation / Blast & Coat [159 h] |
| A21220 | Blast / mechanical prep deck coating 5A — Crew berthing No. 5 | 0d | 2026-08-26 | 2026-08-31 | A21210 | Preservation / Blast & Coat [140 h] |
| A44840 | Blast / mechanical prep overhead coating 7B — Pump room No. 4 | 0d | 2026-08-26 | 2026-09-06 | A44830 FS+2.4d | Preservation / Blast & Coat [65 h]; Rigging & Weight Handling [17 h] |
| A02270 | Blast / mechanical prep overhead coating 7B — Catapult No. 1 launch valve room | 0d | 2026-08-26 | 2026-09-02 | A02260 FS+2.4d | Preservation / Blast & Coat [206 h] |
| A27490 | Prime coat deck coating 6A — Dry provisions storeroom No. 1 | 0d | 2026-08-27 | 2026-09-01 | A27480 | Preservation / Blast & Coat [31 h] |
| A21960 | Top coat deck coating 5A — Crew berthing No. 9 | 0d | 2026-08-27 | 2026-08-30 | A21950 FS+2.4d | Preservation / Blast & Coat [82 h] |
| A44790 | Blast / mechanical prep overhead coating 2A — Pump room No. 4 | 0d | 2026-08-27 | 2026-09-01 | A44780 FS+0.8d | Preservation / Blast & Coat [36 h] |
| A44630 | Prime coat bilge preservation 6A — Void No. 2 | 0d | 2026-08-27 | 2026-09-08 | A44620 | Preservation / Blast & Coat [72 h] |
| A21850 | Prime coat bilge preservation 6A — Crew washroom & head No. 5 | 0d | 2026-08-27 | 2026-09-08 | A21840 | Preservation / Blast & Coat [302 h] |
| A34040 | Top coat bilge preservation 5E — Storeroom No. 1 | 0d | 2026-08-27 | 2026-09-10 | A34030 FS+2.4d | Preservation / Blast & Coat [485 h] |
| A32820 | Prime coat deck coating 8A — Forward JP-5 pump room – port | 0d | 2026-08-27 | 2026-09-05 | A32810 FS+0.8d | Preservation / Blast & Coat [248 h] |
| A21600 | Top coat bilge preservation 9C — Crew berthing No. 7 | 0d | 2026-08-28 | 2026-09-05 | A21590 | Preservation / Blast & Coat [53 h]; Rigging & Weight Handling [14 h] |
| A43810 | Blast / mechanical prep bilge preservation 4A — Pump room No. 1 | 0d | 2026-08-28 | 2026-09-01 | A43800 | Preservation / Blast & Coat [95 h] |
| A44580 | Prime coat deck coating 8A (5-66-3-V) | 0d | 2026-08-28 | 2026-09-05 | A44570 | Preservation / Blast & Coat [256 h] |
| A02530 | Prime coat bilge preservation 7D — Catapult No. 2 launch valve room | 0d | 2026-08-28 | 2026-09-06 | A02520 FS+2.4d | Preservation / Blast & Coat [135 h] |
| A49710 | Blast / mechanical prep bilge preservation 5A — Cofferdam No. 3 | 0d | 2026-08-28 | 2026-09-08 | A49700 | Preservation / Blast & Coat [163 h] |
| A44380 | Prime coat bilge preservation 8B — Storeroom No. 3 | 0d | 2026-08-29 | 2026-09-04 | A44370 | Preservation / Blast & Coat [38 h] |
| A35520 | Blast / mechanical prep bilge preservation 5A — Fourth deck passage – forward | 0d | 2026-08-29 | 2026-08-31 | A35510 FS+2.4d | Preservation / Blast & Coat [17 h] |
| A26230 | Prime coat bilge preservation 3C (3-31-2-L) | 0d | 2026-08-29 | 2026-09-11 | A26220 | Preservation / Blast & Coat [270 h] |
| A02380 | Prime coat overhead coating 1A — Catapult No. 2 launch valve room | 0d | 2026-08-29 | 2026-09-09 | A02370 | Preservation / Blast & Coat [201 h]; Rigging & Weight Handling [51 h] |
| A49470 | Prime coat bilge preservation 3A (6-67-3-V) | 0d | 2026-08-29 | 2026-09-11 | A49460 FS+2.4d | Preservation / Blast & Coat [174 h] |
| A21310 | Blast / mechanical prep overhead coating 6B (2-62-0-L) | 0d | 2026-08-29 | 2026-09-02 | A21300 | Preservation / Blast & Coat [40 h] |
| A20350 | Cure & inspect overhead coating 2B — Crew berthing No. 1 | 0d | 2026-08-30 | 2026-09-06 | A20340 | Preservation / Blast & Coat [128 h] |
| A48970 | Top coat overhead coating 4B — Potable water pump room No. 2 | 0d | 2026-08-30 | 2026-09-02 | A48960 FS+2.4d | Preservation / Blast & Coat [68 h] |
| A27300 | Top coat bilge preservation 5C (3-60-2-L) | 0d | 2026-08-30 | 2026-09-11 | A27290 | Preservation / Blast & Coat [76 h] |
| A44960 | Prime coat deck coating 5B — Storeroom No. 4 | 0d | 2026-08-30 | 2026-09-07 | A44950 | Preservation / Blast & Coat [243 h] |
| A21900 | Prime coat overhead coating 6B — Crew washroom & head No. 5 | 0d | 2026-08-30 | 2026-09-09 | A21890 | Preservation / Blast & Coat [144 h] |
| A27050 | Top coat deck coating 7B — Division office No. 7 | 0d | 2026-08-31 | 2026-09-08 | A27040 FS+0.8d | Preservation / Blast & Coat [165 h]; Rigging & Weight Handling [42 h] |
| A07930 | Prime coat overhead coating 8A — Catapult No. 2 steam accumulator room | 0d | 2026-08-31 | 2026-09-08 | A07920 FS+0.8d | Preservation / Blast & Coat [221 h] |
| A26890 | Prime coat bilge preservation 9B — Division office No. 6 | 0d | 2026-08-31 | 2026-09-06 | A26880 FS+0.8d | Preservation / Blast & Coat [60 h]; Rigging & Weight Handling [16 h] |
| A33300 | Blast / mechanical prep deck coating 3E — Emergency diesel generator room No. 2 | 0d | 2026-08-31 | 2026-09-09 | A33290 FS+0.8d | Preservation / Blast & Coat [70 h] |
| A15020 | Prime coat deck coating 6A — Chain locker access & bosun storeroom | 0d | 2026-08-31 | 2026-09-09 | A15010 | Preservation / Blast & Coat [195 h]; Rigging & Weight Handling [49 h] |
| A27380 | Blast / mechanical prep bilge preservation 6B — Crew washroom & head No. 3 | 0d | 2026-08-31 | 2026-09-06 | A27370 SS+2.4d | Preservation / Blast & Coat [37 h] |
| A45120 | Top coat deck coating 3B — Void No. 3 | 0d | 2026-08-31 | 2026-09-12 | A45110 | Preservation / Blast & Coat [351 h] |
| A26990 | Prime coat overhead coating 1A — Division office No. 7 | 0d | 2026-08-31 | 2026-09-14 | A26980 FS+2.4d | Preservation / Blast & Coat [317 h] |
| A21230 | Prime coat deck coating 5A — Crew berthing No. 5 | 0d | 2026-08-31 | 2026-09-06 | A21220 | Preservation / Blast & Coat [163 h] |
| A49000 | Blast / mechanical prep deck coating 2A — Void No. 2 | 0d | 2026-08-31 | 2026-09-02 | A48990 | Preservation / Blast & Coat [13 h] |
| A12500 | Top coat deck coating 7B — Chief petty officer mess – forward | 0d | 2026-08-31 | 2026-09-11 | A12490 FS-4.8d | Preservation / Blast & Coat [77 h] |
| A27600 | Prime coat overhead coating 5A — Crew washroom & head No. 4 | 0d | 2026-08-31 | 2026-09-13 | A27590 FS+0.8d | Preservation / Blast & Coat [105 h] |
| A49070 | Top coat bilge preservation 4A — Forward magazine No. 3 | 0d | 2026-09-01 | 2026-09-10 | A49060 | Preservation / Blast & Coat [62 h]; Rigging & Weight Handling [16 h] |
| A49660 | Blast / mechanical prep bilge preservation 9B — Forward JP-5 transfer pump room | 0d | 2026-09-01 | 2026-09-06 | A49650 FS+0.8d | Preservation / Blast & Coat [168 h] |
| A49110 | Prime coat bilge preservation 5A — Cofferdam No. 1 | 0d | 2026-09-01 | 2026-09-04 | A49100 FS+0.8d | Preservation / Blast & Coat [48 h] |
| A27500 | Top coat deck coating 6A — Dry provisions storeroom No. 1 | 0d | 2026-09-01 | 2026-09-08 | A27490 FS+0.8d | Preservation / Blast & Coat [52 h]; Rigging & Weight Handling [14 h] |
| A49250 | Blast / mechanical prep deck coating 4A — JP-5 service tank No. 1 | 0d | 2026-09-01 | 2026-09-04 | A49240 | Preservation / Blast & Coat [108 h] |
| A49630 | Top coat bilge preservation 8A — Forward JP-5 transfer pump room | 0d | 2026-09-01 | 2026-09-10 | A49620 | Preservation / Blast & Coat [77 h] |
| A20430 | Blast / mechanical prep bilge preservation 9A — Crew washroom & head No. 2 | 0d | 2026-09-01 | 2026-09-13 | A20420 FS+2.4d | Preservation / Blast & Coat [169 h]; Rigging & Weight Handling [43 h] |
| A21320 | Prime coat overhead coating 6B (2-62-0-L) | 0d | 2026-09-02 | 2026-09-10 | A21310 | Preservation / Blast & Coat [79 h]; Rigging & Weight Handling [20 h] |
| A48980 | Cure & inspect overhead coating 4B — Potable water pump room No. 2 | 0d | 2026-09-02 | 2026-09-12 | A48970 FS+0.8d | Preservation / Blast & Coat [209 h] |
| A21970 | Cure & inspect deck coating 5A — Crew berthing No. 9 | 0d | 2026-09-02 | 2026-09-15 | A21960 | Preservation / Blast & Coat [80 h] |
| A43820 | Prime coat bilge preservation 4A — Pump room No. 1 | 0d | 2026-09-02 | 2026-09-15 | A43810 FS+0.8d | Preservation / Blast & Coat [159 h] |
| A27460 | Cure & inspect overhead coating 3C — Crew washroom & head No. 3 | 0d | 2026-09-02 | 2026-09-05 | A27450 FS+2.4d | Preservation / Blast & Coat [46 h] |
| A44150 | Cure & inspect bilge preservation 6C — Forward fire pump room | 0d | 2026-09-02 | 2026-09-11 | A44140 | Preservation / Blast & Coat [159 h] |
| A27330 | Blast / mechanical prep bilge preservation 5A — Crew washroom & head No. 3 | 0d | 2026-09-03 | 2026-09-11 | A27320 | Preservation / Blast & Coat [112 h] |
| A35530 | Prime coat bilge preservation 5A — Fourth deck passage – forward | 0d | 2026-09-03 | 2026-09-07 | A35520 FS+2.4d | Preservation / Blast & Coat [57 h] |
| A35330 | Top coat deck coating 4A — Fan room No. 2 | 0d | 2026-09-03 | 2026-09-14 | A35320 | Preservation / Blast & Coat [245 h] |
| A21150 | Top coat bilge preservation 6A — Crew berthing No. 4 | 0d | 2026-09-03 | 2026-09-16 | A21140 FS+2.4d | Preservation / Blast & Coat [86 h] |
| A49010 | Prime coat deck coating 2A — Void No. 2 | 0d | 2026-09-03 | 2026-09-10 | A49000 FS+2.4d | Preservation / Blast & Coat [150 h] |
| A44800 | Prime coat overhead coating 2A — Pump room No. 4 | 0d | 2026-09-04 | 2026-09-16 | A44790 FS+2.4d | Preservation / Blast & Coat [266 h] |
| A21550 | Top coat bilge preservation 4B — Crew berthing No. 7 | 0d | 2026-09-04 | 2026-09-06 | A21540 FS+2.4d | Preservation / Blast & Coat [75 h] |
| A02340 | Top coat overhead coating 9C — Catapult No. 1 launch valve room | 0d | 2026-09-04 | 2026-09-12 | A02330 FS+2.4d | Preservation / Blast & Coat [74 h] |
| A20540 | Top coat bilge preservation 3A — Crew washroom & head No. 3 | 0d | 2026-09-04 | 2026-09-09 | A20530 FS+0.8d | Preservation / Blast & Coat [43 h] |
| A34780 | Prime coat overhead coating 7C — Forward pump room | 0d | 2026-09-04 | 2026-09-09 | A34770 FS+2.4d | Preservation / Blast & Coat [43 h] |
| A02280 | Prime coat overhead coating 7B — Catapult No. 1 launch valve room | 0d | 2026-09-04 | 2026-09-11 | A02270 FS-1.6d | Preservation / Blast & Coat [188 h] |
| A44390 | Top coat bilge preservation 8B — Storeroom No. 3 | 0d | 2026-09-04 | 2026-09-15 | A44380 FS+0.8d | Preservation / Blast & Coat [186 h] |

| ID | Activity | Duration | Start | Finish | Predecessors | Resources |
| --- | --- | --- | --- | --- | --- | --- |
| A26190 | Top coat bilge preservation 7B — Division office No. 4 | 0d | 2026-09-05 | 2026-09-07 | A26180 FS+0.8d | Preservation / Blast & Coat [26 h] |
| A35800 | Cure & inspect bilge preservation 9D — Storeroom No. 2 | 0d | 2026-09-05 | 2026-09-14 | A35790 | Preservation / Blast & Coat [114 h] |
| A49260 | Prime coat deck coating 4A — JP-5 service tank No. 1 | 0d | 2026-09-05 | 2026-09-11 | A49250 | Preservation / Blast & Coat [92 h] |
| A48870 | Top coat deck coating 8A — Void No. 1 | 0d | 2026-09-05 | 2026-09-17 | A48860 | Preservation / Blast & Coat [197 h] |
| A35210 | Prime coat bilge preservation 7E — Electrical distribution room No. 3 | 0d | 2026-09-05 | 2026-09-08 | A35200 | Preservation / Blast & Coat [34 h] |
| A49120 | Top coat bilge preservation 5A — Cofferdam No. 1 | 0d | 2026-09-06 | 2026-09-14 | A49110 FS+2.4d | Preservation / Blast & Coat [216 h] |
| A44590 | Top coat deck coating 8A (5-66-3-V) | 0d | 2026-09-06 | 2026-09-18 | A44580 FS+2.4d | Preservation / Blast & Coat [332 h] |
| A26900 | Top coat bilge preservation 9B — Division office No. 6 | 0d | 2026-09-06 | 2026-09-09 | A26890 | Preservation / Blast & Coat [39 h] |
| A49580 | Top coat overhead coating 5B — Cofferdam No. 2 | 0d | 2026-09-06 | 2026-09-11 | A49570 FS+2.4d | Preservation / Blast & Coat [71 h] |
| A02540 | Top coat bilge preservation 7D — Catapult No. 2 launch valve room | 0d | 2026-09-07 | 2026-09-13 | A02530 | Preservation / Blast & Coat [122 h] |
| A21610 | Cure & inspect bilge preservation 9C — Crew berthing No. 7 | 0d | 2026-09-07 | 2026-09-16 | A21600 | Preservation / Blast & Coat [64 h] |
| A12460 | Cure & inspect overhead coating 1A — Chief petty officer mess – forward | 0d | 2026-09-07 | 2026-09-15 | A12450 SS+7.2d | Preservation / Blast & Coat [48 h] |
| A21240 | Top coat deck coating 5A — Crew berthing No. 5 | 0d | 2026-09-07 | 2026-09-17 | A21230 | Preservation / Blast & Coat [261 h] |
| A07560 | Top coat bilge preservation 7B — Forecastle & anchor windlass room | 0d | 2026-09-07 | 2026-09-21 | A07550 | Preservation / Blast & Coat [247 h] |
| A44480 | Prime coat deck coating 3A — Forward magazine No. 2 – lower level | 0d | 2026-09-07 | 2026-09-21 | A44470 | Preservation / Blast & Coat [462 h] |
| A32830 | Top coat deck coating 8A — Forward JP-5 pump room – port | 0d | 2026-09-07 | 2026-09-16 | A32820 SS+2.4d | Preservation / Blast & Coat [269 h] |
| A02490 | Top coat bilge preservation 7C — Catapult No. 2 launch valve room | 0d | 2026-09-08 | 2026-09-17 | A02480 | Preservation / Blast & Coat [271 h] |
| A48820 | Top coat bilge preservation 4A — Potable water pump room No. 1 | 0d | 2026-09-08 | 2026-09-14 | A48810 | Preservation / Blast & Coat [120 h] |
| A49670 | Prime coat bilge preservation 9B — Forward JP-5 transfer pump room | 0d | 2026-09-08 | 2026-09-15 | A49660 FS+0.8d | Preservation / Blast & Coat [118 h] |
| A26200 | Cure & inspect bilge preservation 7B — Division office No. 4 | 0d | 2026-09-08 | 2026-09-18 | A26190 | Preservation / Blast & Coat [279 h] |
| A21560 | Cure & inspect bilge preservation 4B — Crew berthing No. 7 | 0d | 2026-09-08 | 2026-09-13 | A21550 | Preservation / Blast & Coat [107 h] |
| A44850 | Prime coat overhead coating 7B — Pump room No. 4 | 0d | 2026-09-08 | 2026-09-18 | A44840 | Preservation / Blast & Coat [58 h] |
| A21860 | Top coat bilge preservation 6A — Crew washroom & head No. 5 | 0d | 2026-09-08 | 2026-09-20 | A21850 | Preservation / Blast & Coat [144 h] |
| A35220 | Top coat bilge preservation 7E — Electrical distribution room No. 3 | 0d | 2026-09-09 | 2026-09-17 | A35210 FS+0.8d | Preservation / Blast & Coat [153 h] |
| A07940 | Top coat overhead coating 8A — Catapult No. 2 steam accumulator room | 0d | 2026-09-09 | 2026-09-12 | A07930 FS+0.8d | Preservation / Blast & Coat [79 h] |
| A27390 | Prime coat bilge preservation 6B — Crew washroom & head No. 3 | 0d | 2026-09-09 | 2026-09-17 | A27380 | Preservation / Blast & Coat [118 h] |
| A27060 | Cure & inspect deck coating 7B — Division office No. 7 | 0d | 2026-09-09 | 2026-09-14 | A27050 FS+2.4d | Preservation / Blast & Coat [71 h] |
| A35540 | Top coat bilge preservation 5A — Fourth deck passage – forward | 0d | 2026-09-09 | 2026-09-23 | A35530 FS+2.4d | Preservation / Blast & Coat [244 h] |
| A26910 | Cure & inspect bilge preservation 9B — Division office No. 6 | 0d | 2026-09-10 | 2026-09-17 | A26900 FS+0.8d | Preservation / Blast & Coat [181 h] |
| A44970 | Top coat deck coating 5B — Storeroom No. 4 | 0d | 2026-09-10 | 2026-09-14 | A44960 | Preservation / Blast & Coat [26 h] |
| A44640 | Top coat bilge preservation 6A — Void No. 2 | 0d | 2026-09-10 | 2026-09-19 | A44630 | Preservation / Blast & Coat [155 h] |
| A34050 | Cure & inspect bilge preservation 5E — Storeroom No. 1 | 0d | 2026-09-10 | 2026-09-22 | A34040 | Preservation / Blast & Coat [186 h] |
| A34790 | Top coat overhead coating 7C — Forward pump room | 0d | 2026-09-10 | 2026-09-18 | A34780 | Preservation / Blast & Coat [169 h]; Rigging & Weight Handling [43 h] |
| A21910 | Top coat overhead coating 6B — Crew washroom & head No. 5 | 0d | 2026-09-10 | 2026-09-13 | A21900 FS-0.8d | Preservation / Blast & Coat [53 h] |
| A49720 | Prime coat bilge preservation 5A — Cofferdam No. 3 | 0d | 2026-09-11 | 2026-09-23 | A49710 | Preservation / Blast & Coat [93 h] |
| A02390 | Top coat overhead coating 1A — Catapult No. 2 launch valve room | 0d | 2026-09-11 | 2026-09-22 | A02380 FS+0.8d | Preservation / Blast & Coat [94 h] |
| A27510 | Cure & inspect deck coating 6A — Dry provisions storeroom No. 1 | 0d | 2026-09-11 | 2026-09-20 | A27500 FS+2.4d | Preservation / Blast & Coat [248 h] |
| A15030 | Top coat deck coating 6A — Chain locker access & bosun storeroom | 0d | 2026-09-11 | 2026-09-22 | A15020 | Preservation / Blast & Coat [148 h] |
| A49270 | Top coat deck coating 4A — JP-5 service tank No. 1 | 0d | 2026-09-11 | 2026-09-22 | A49260 FS+0.8d | Preservation / Blast & Coat [292 h] |
| A21330 | Top coat overhead coating 6B (2-62-0-L) | 0d | 2026-09-11 | 2026-09-16 | A21320 SS+4.8d | Preservation / Blast & Coat [33 h] |
| A49080 | Cure & inspect bilge preservation 4A — Forward magazine No. 3 | 0d | 2026-09-11 | 2026-09-14 | A49070 FS+0.8d | Preservation / Blast & Coat [31 h] |
| A27310 | Cure & inspect bilge preservation 5C (3-60-2-L) | 0d | 2026-09-11 | 2026-09-17 | A27300 FS+0.8d | Preservation / Blast & Coat [88 h] |
| A20550 | Cure & inspect bilge preservation 3A — Crew washroom & head No. 3 | 0d | 2026-09-12 | 2026-09-19 | A20540 | Preservation / Blast & Coat [55 h] |
| A33310 | Prime coat deck coating 3E — Emergency diesel generator room No. 2 | 0d | 2026-09-12 | 2026-09-16 | A33300 | Preservation / Blast & Coat [78 h] |
| A02290 | Top coat overhead coating 7B — Catapult No. 1 launch valve room | 0d | 2026-09-12 | 2026-09-23 | A02280 | Preservation / Blast & Coat [150 h] |
| A27340 | Prime coat bilge preservation 5A — Crew washroom & head No. 3 | 0d | 2026-09-12 | 2026-09-20 | A27330 | Preservation / Blast & Coat [56 h] |
| A49020 | Top coat deck coating 2A — Void No. 2 | 0d | 2026-09-13 | 2026-09-17 | A49010 FS+0.8d | Preservation / Blast & Coat [84 h] |
| A49480 | Top coat bilge preservation 3A (6-67-3-V) | 0d | 2026-09-13 | 2026-09-21 | A49470 | Preservation / Blast & Coat [290 h] |
| A12510 | Cure & inspect deck coating 7B — Chief petty officer mess – forward | 0d | 2026-09-13 | 2026-09-25 | A12500 | Preservation / Blast & Coat [438 h] |
| A49640 | Cure & inspect bilge preservation 8A — Forward JP-5 transfer pump room | 0d | 2026-09-13 | 2026-09-16 | A49630 | Preservation / Blast & Coat [37 h] |
| A45130 | Cure & inspect deck coating 3B — Void No. 3 | 0d | 2026-09-13 | 2026-09-17 | A45120 | Preservation / Blast & Coat [23 h] |
| A26240 | Top coat bilge preservation 3C (3-31-2-L) | 0d | 2026-09-13 | 2026-09-21 | A26230 | Preservation / Blast & Coat [176 h] |
| A49590 | Cure & inspect overhead coating 5B — Cofferdam No. 2 | 0d | 2026-09-14 | 2026-09-26 | A49580 | Preservation / Blast & Coat [311 h] |
| A02550 | Cure & inspect bilge preservation 7D — Catapult No. 2 launch valve room | 0d | 2026-09-14 | 2026-09-20 | A02540 | Preservation / Blast & Coat [77 h] |
| A27610 | Top coat overhead coating 5A — Crew washroom & head No. 4 | 0d | 2026-09-14 | 2026-09-25 | A27600 | Preservation / Blast & Coat [195 h] |
| A02350 | Cure & inspect overhead coating 9C — Catapult No. 1 launch valve room | 0d | 2026-09-14 | 2026-09-23 | A02340 | Preservation / Blast & Coat [50 h] |
| A49130 | Cure & inspect bilge preservation 5A — Cofferdam No. 1 | 0d | 2026-09-14 | 2026-09-18 | A49120 FS+2.4d | Preservation / Blast & Coat [44 h] |
| A21920 | Cure & inspect overhead coating 6B — Crew washroom & head No. 5 | 0d | 2026-09-14 | 2026-09-28 | A21910 | Preservation / Blast & Coat [159 h] |
| A27000 | Top coat overhead coating 1A — Division office No. 7 | 0d | 2026-09-14 | 2026-09-20 | A26990 | Preservation / Blast & Coat [49 h] |
| A07950 | Cure & inspect overhead coating 8A — Catapult No. 2 steam accumulator room | 0d | 2026-09-15 | 2026-09-19 | A07940 | Preservation / Blast & Coat [116 h] |
| A20440 | Prime coat bilge preservation 9A — Crew washroom & head No. 2 | 0d | 2026-09-15 | 2026-09-19 | A20430 | Preservation / Blast & Coat [35 h] |
| A49680 | Top coat bilge preservation 9B — Forward JP-5 transfer pump room | 0d | 2026-09-15 | 2026-09-27 | A49670 FS+0.8d | Preservation / Blast & Coat [110 h]; Rigging & Weight Handling [28 h] |
| A44980 | Cure & inspect deck coating 5B — Storeroom No. 4 | 0d | 2026-09-15 | 2026-09-18 | A44970 FS+2.4d | Preservation / Blast & Coat [60 h] |
| A48830 | Cure & inspect bilge preservation 4A — Potable water pump room No. 1 | 0d | 2026-09-16 | 2026-09-28 | A48820 | Preservation / Blast & Coat [372 h] |
| A44400 | Cure & inspect bilge preservation 8B — Storeroom No. 3 | 0d | 2026-09-16 | 2026-09-28 | A44390 | Preservation / Blast & Coat [311 h] |
| A35340 | Cure & inspect deck coating 4A — Fan room No. 2 | 0d | 2026-09-16 | 2026-09-30 | A35330 | Preservation / Blast & Coat [186 h] |
| A21160 | Cure & inspect bilge preservation 6A — Crew berthing No. 4 | 0d | 2026-09-17 | 2026-09-20 | A21150 | Preservation / Blast & Coat [75 h] |
| A33320 | Top coat deck coating 3E — Emergency diesel generator room No. 2 | 0d | 2026-09-17 | 2026-09-19 | A33310 | Preservation / Blast & Coat [30 h] |
| A43830 | Top coat bilge preservation 4A — Pump room No. 1 | 0d | 2026-09-17 | 2026-09-20 | A43820 | Preservation / Blast & Coat [19 h] |
| A44810 | Top coat overhead coating 2A — Pump room No. 4 | 0d | 2026-09-17 | 2026-09-22 | A44800 FS+2.4d | Preservation / Blast & Coat [68 h] |

| ID | Activity | Duration | Start | Finish | Predecessors | Resources |
| --- | --- | --- | --- | --- | --- | --- |
| A27400 | Top coat bilge preservation 6B — Crew washroom & head No. 3 | 0d | 2026-09-18 | 2026-09-27 | A27390 | Preservation / Blast & Coat [149 h] |
| A02500 | Cure & inspect bilge preservation 7C — Catapult No. 2 launch valve room | 0d | 2026-09-18 | 2026-09-29 | A02490 | Preservation / Blast & Coat [71 h]; Rigging & Weight Handling [18 h] |
| A32840 | Cure & inspect deck coating 8A — Forward JP-5 pump room – port | 0d | 2026-09-18 | 2026-09-26 | A32830 | Preservation / Blast & Coat [144 h] |
| A35230 | Cure & inspect bilge preservation 7E — Electrical distribution room No. 3 | 0d | 2026-09-19 | 2026-09-27 | A35220 | Preservation / Blast & Coat [126 h] |
| A21340 | Cure & inspect overhead coating 6B (2-62-0-L) | 0d | 2026-09-19 | 2026-09-26 | A21330 FS+0.8d | Preservation / Blast & Coat [82 h]; Rigging & Weight Handling [21 h] |
| A48880 | Cure & inspect deck coating 8A — Void No. 1 | 0d | 2026-09-19 | 2026-09-26 | A48870 | Preservation / Blast & Coat [75 h] |
| A21250 | Cure & inspect deck coating 5A — Crew berthing No. 5 | 0d | 2026-09-19 | 2026-09-22 | A21240 | Preservation / Blast & Coat [23 h] |
| A49030 | Cure & inspect deck coating 2A — Void No. 2 | 0d | 2026-09-20 | 2026-10-02 | A49020 FS+0.8d | Preservation / Blast & Coat [113 h] |
| A27350 | Top coat bilge preservation 5A — Crew washroom & head No. 3 | 0d | 2026-09-20 | 2026-10-04 | A27340 | Preservation / Blast & Coat [471 h] |
| A44860 | Top coat overhead coating 7B — Pump room No. 4 | 0d | 2026-09-20 | 2026-09-24 | A44850 | Preservation / Blast & Coat [26 h] |
| A34800 | Cure & inspect overhead coating 7C — Forward pump room | 0d | 2026-09-21 | 2026-10-03 | A34790 | Preservation / Blast & Coat [96 h] |
| A07570 | Cure & inspect bilge preservation 7B — Forecastle & anchor windlass room | 0d | 2026-09-21 | 2026-09-29 | A07560 | Preservation / Blast & Coat [136 h] |
| A33330 | Cure & inspect deck coating 3E — Emergency diesel generator room No. 2 | 0d | 2026-09-21 | 2026-09-28 | A33320 | Preservation / Blast & Coat [58 h] |
| A44600 | Cure & inspect deck coating 8A (5-66-3-V) | 0d | 2026-09-21 | 2026-09-27 | A44590 FS+2.4d | Preservation / Blast & Coat [155 h] |
| A44650 | Cure & inspect bilge preservation 6A — Void No. 2 | 0d | 2026-09-21 | 2026-10-01 | A44640 | Preservation / Blast & Coat [56 h] |
| A27010 | Cure & inspect overhead coating 1A — Division office No. 7 | 0d | 2026-09-21 | 2026-10-03 | A27000 | Preservation / Blast & Coat [211 h] |
| A43840 | Cure & inspect bilge preservation 4A — Pump room No. 1 | 0d | 2026-09-21 | 2026-09-25 | A43830 | Preservation / Blast & Coat [31 h] |
| A20450 | Top coat bilge preservation 9A — Crew washroom & head No. 2 | 0d | 2026-09-21 | 2026-09-28 | A20440 | Preservation / Blast & Coat [39 h] |
| A44820 | Cure & inspect overhead coating 2A — Pump room No. 4 | 0d | 2026-09-22 | 2026-10-04 | A44810 | Preservation / Blast & Coat [193 h] |
| A15040 | Cure & inspect deck coating 6A — Chain locker access & bosun storeroom | 0d | 2026-09-23 | 2026-10-06 | A15030 SS+2.4d | Preservation / Blast & Coat [172 h] |
| A21870 | Cure & inspect bilge preservation 6A — Crew washroom & head No. 5 | 0d | 2026-09-23 | 2026-09-30 | A21860 | Preservation / Blast & Coat [129 h]; Rigging & Weight Handling [33 h] |
| A49280 | Cure & inspect deck coating 4A — JP-5 service tank No. 1 | 0d | 2026-09-23 | 2026-10-07 | A49270 FS+2.4d | Preservation / Blast & Coat [235 h] |
| A44490 | Top coat deck coating 3A — Forward magazine No. 2 – lower level | 0d | 2026-09-23 | 2026-10-04 | A44480 FS+0.8d | Preservation / Blast & Coat [64 h] |
| A49490 | Cure & inspect bilge preservation 3A (6-67-3-V) | 0d | 2026-09-24 | 2026-10-01 | A49480 | Preservation / Blast & Coat [175 h] |
| A49730 | Top coat bilge preservation 5A — Cofferdam No. 3 | 0d | 2026-09-24 | 2026-09-28 | A49720 FS+0.8d | Preservation / Blast & Coat [32 h] |
| A26250 | Cure & inspect bilge preservation 3C (3-31-2-L) | 0d | 2026-09-24 | 2026-10-03 | A26240 FS+2.4d | Preservation / Blast & Coat [156 h] |
| A02300 | Cure & inspect overhead coating 7B — Catapult No. 1 launch valve room | 0d | 2026-09-24 | 2026-09-28 | A02290 FS+0.8d | Preservation / Blast & Coat [37 h]; Rigging & Weight Handling [10 h] |
| A35550 | Cure & inspect bilge preservation 5A — Fourth deck passage – forward | 0d | 2026-09-24 | 2026-09-29 | A35540 | Preservation / Blast & Coat [31 h] |
| A02400 | Cure & inspect overhead coating 1A — Catapult No. 2 launch valve room | 0d | 2026-09-25 | 2026-10-01 | A02390 SS+7.2d | Preservation / Blast & Coat [119 h] |
| A44870 | Cure & inspect overhead coating 7B — Pump room No. 4 | 0d | 2026-09-26 | 2026-10-09 | A44860 SS+2.4d | Preservation / Blast & Coat [226 h] |
| A27620 | Cure & inspect overhead coating 5A — Crew washroom & head No. 4 | 0d | 2026-09-27 | 2026-10-05 | A27610 | Preservation / Blast & Coat [70 h] |
| A49740 | Cure & inspect bilge preservation 5A — Cofferdam No. 3 | 0d | 2026-09-28 | 2026-10-08 | A49730 FS+2.4d | Preservation / Blast & Coat [181 h] |
| A27410 | Cure & inspect bilge preservation 6B — Crew washroom & head No. 3 | 0d | 2026-09-28 | 2026-10-08 | A27400 | Preservation / Blast & Coat [66 h] |
| A20460 | Cure & inspect bilge preservation 9A — Crew washroom & head No. 2 | 0d | 2026-09-30 | 2026-10-08 | A20450 | Preservation / Blast & Coat [242 h] |
| A49690 | Cure & inspect bilge preservation 9B — Forward JP-5 transfer pump room | 0d | 2026-09-30 | 2026-10-13 | A49680 | Preservation / Blast & Coat [152 h] |
| A27360 | Cure & inspect bilge preservation 5A — Crew washroom & head No. 3 | 0d | 2026-10-04 | 2026-10-12 | A27350 FS-4.8d | Preservation / Blast & Coat [136 h] |
| A44500 | Cure & inspect deck coating 3A — Forward magazine No. 2 – lower level | 0d | 2026-10-05 | 2026-10-12 | A44490 | Preservation / Blast & Coat [87 h] |

| ID | WBS | Activity | Duration | Start | Finish | Predecessors | Complete | Remaining | Resources |
| --- | --- | --- | --- | --- | --- | --- | --- | --- | --- |
|  | SVC | **Zone Services & Access** |  | 2026-07-28 | 2026-11-01 |  |  |  |  |
| A55830 |  | Temp ventilation trunk 5 — Forward Below-Decks | 0d | 2026-07-28 A | 2026-08-05 A |  | 100% |  | Sheet Metal / HVAC [70 h] |
| A55760 |  | Reposition temp vent 2 — Forward Below-Decks | 0d | 2026-07-29 A | 2026-08-04 A |  | 100% |  | Sheet Metal / HVAC [157 h] |
| A55850 |  | Clear lay-down 6 — Forward Below-Decks | 0d | 2026-07-29 A | 2026-08-05 A |  | 100% |  | Rigging & Weight Handling [51 h] |
| A55740 |  | Temp ventilation trunk 1 — Forward Below-Decks | 0d | 2026-08-02 A | 2026-08-10 |  | 94% | 0d | Sheet Metal / HVAC [103 h] |
| A55800 |  | Stage scaffolding — Forward Below-Decks band 4 | 0d | 2026-08-02 A | 2026-08-12 |  | 76% | 0d | Rigging & Weight Handling [309 h] |
| A55780 |  | Reposition temp vent 3 — Forward Below-Decks | 0d | 2026-08-03 A | 2026-08-06 A |  | 100% |  | Sheet Metal / HVAC [34 h] |
| A55890 |  | Recover temp services — Forward Below-Decks feeder 8 | 0d | 2026-08-11 | 2026-08-16 |  |  |  | Electrical [27 h] |
| A55870 |  | Reposition temp vent 7 — Forward Below-Decks | 0d | 2026-08-14 | 2026-08-20 |  |  |  | Sheet Metal / HVAC [30 h] |
| A55860 |  | Material staging & lay-down 6 — Forward Below-Decks | 0d | 2026-08-17 | 2026-08-24 | A55850 |  |  | Rigging & Weight Handling [56 h] |
| A55750 |  | Reposition temp vent 1 — Forward Below-Decks | 0d | 2026-08-18 | 2026-08-28 | A55740 |  |  | Sheet Metal / HVAC [154 h] |
| A55790 |  | Temp ventilation trunk 3 — Forward Below-Decks | 0d | 2026-08-24 | 2026-08-27 | A55780 |  |  | Sheet Metal / HVAC [53 h] |
| A55840 |  | Reposition temp vent 5 — Forward Below-Decks | 0d | 2026-08-28 | 2026-09-01 | A55830 |  |  | Sheet Metal / HVAC [67 h] |
| A55770 |  | Temp ventilation trunk 2 — Forward Below-Decks | 0d | 2026-09-06 | 2026-09-14 | A55760 |  |  | Sheet Metal / HVAC [67 h] |
| A55900 |  | Temp lighting string 8 — Forward Below-Decks | 0d | 2026-09-11 | 2026-09-19 | A55890 |  |  | Electrical [94 h] |
| A55880 |  | Temp ventilation trunk 7 — Forward Below-Decks | 0d | 2026-09-11 | 2026-09-18 | A55870 |  |  | Sheet Metal / HVAC [111 h] |
| A55810 |  | Strike scaffolding — Forward Below-Decks band 4 | 0d | 2026-09-13 | 2026-09-21 | A55800 |  |  | Rigging & Weight Handling [46 h] |
| A55820 |  | Rig access platforms — Forward Below-Decks band 4 | 0d | 2026-10-26 | 2026-11-01 | A55810 |  |  | Rigging & Weight Handling [66 h] |
|  | Z4 | **Zone 4 — Propulsion Plant & Midships** |  | 2026-07-27 | 2026-10-27 |  |  |  |  |
|  | 130 | **130 Hull Structure** |  | 2026-08-03 | 2026-10-08 |  |  |  |  |
| A28210 |  | NDT survey — foundation group 1A — Refrigerated stores No. 2 | 0d | 2026-08-03 A | 2026-08-15 |  | 52% | 0d | Structural Welding [90 h] |
| A50930 |  | NDT survey — structural bay 7B — Void No. 1 | 0d | 2026-08-03 A | 2026-08-16 |  | 46% | 0d | Structural Welding [190 h] |
| A53130 |  | NDT survey — structural bay 6B — Reactor Compartment No. 2 – hold level | 0d | 2026-08-04 A | 2026-08-10 A |  | 100% |  | Structural Welding [38 h] |
| A37050 |  | NDT survey — foundation group 8B — Reactor auxiliaries room No. 1 | 0d | 2026-08-07 A | 2026-08-14 |  | 38% | 0d | Structural Welding [90 h] |
| A52980 |  | NDT survey — foundation group 2A — Void between reactor compartments | 0d | 2026-08-07 A | 2026-08-10 |  | 62% | 0d | Structural Welding [19 h]; Rigging & Weight Handling [5 h] |
| A38800 |  | NDT survey — foundation group 8A — Evaporator room No. 2 | 0d | 2026-08-08 A | 2026-08-15 |  | 19% | 0d | Structural Welding [107 h] |
| A37960 |  | NDT survey — structural bay 8D — Forced Draft Blower Room No. 3 | 0d | 2026-08-09 A | 2026-08-16 |  | 5% | 0d | Structural Welding [185 h] |
| A53140 |  | Crop out structural bay 6B — Reactor Compartment No. 2 – hold level | 0d | 2026-08-10 | 2026-08-23 | A53130 FS+0.8d |  |  | Structural Welding [185 h] |
| A52990 |  | Crop out foundation group 2A — Void between reactor compartments | 0d | 2026-08-10 | 2026-08-17 | A52980 FS+2.4d |  |  | Structural Welding [165 h] |
| A50300 |  | NDT survey — structural bay 1A — Reactor plant cooling water pump room No. 2 | 0d | 2026-08-12 | 2026-08-16 |  |  |  | Structural Welding [48 h]; Rigging & Weight Handling [12 h] |
| A45480 |  | NDT survey — foundation group 3A — Reactor Compartment No. 1 – lower level | 0d | 2026-08-14 | 2026-08-20 |  |  |  | Structural Welding [149 h] |
| A38810 |  | Crop out foundation group 8A — Evaporator room No. 2 | 0d | 2026-08-16 | 2026-08-25 | A38800 |  |  | Structural Welding [247 h] |
| A53180 |  | NDT survey — foundation group 6C (7-152-0-E) | 0d | 2026-08-16 | 2026-08-28 |  |  |  | Structural Welding [101 h] |
| A37060 |  | Crop out foundation group 8B — Reactor auxiliaries room No. 1 | 0d | 2026-08-16 | 2026-08-26 | A37050 |  |  | Structural Welding [116 h] |
| A50940 |  | Crop out structural bay 7B — Void No. 1 | 0d | 2026-08-16 | 2026-08-23 | A50930 |  |  | Structural Welding [131 h] |
| A36350 |  | NDT survey — foundation group 4F — Main Machinery Room No. 1 – upper level | 0d | 2026-08-17 | 2026-08-29 |  |  |  | Structural Welding [139 h] |
| A50310 |  | Crop out structural bay 1A — Reactor plant cooling water pump room No. 2 | 0d | 2026-08-17 | 2026-08-26 | A50300 FS+0.8d |  |  | Structural Welding [135 h] |
| A28220 |  | Crop out foundation group 1A — Refrigerated stores No. 2 | 0d | 2026-08-18 | 2026-08-27 | A28210 |  |  | Structural Welding [65 h] |
| A37970 |  | Crop out structural bay 8D — Forced Draft Blower Room No. 3 | 0d | 2026-08-19 | 2026-08-27 | A37960 FS+2.4d |  |  | Structural Welding [68 h] |
| A53000 |  | Fit & weld foundation group 2A — Void between reactor compartments | 0d | 2026-08-19 | 2026-08-26 | A52990 FS+2.4d |  |  | Structural Welding [43 h] |
| A36940 |  | NDT survey — deck insert 7C — Reactor Compartment No. 1 – upper level | 0d | 2026-08-19 | 2026-08-30 |  |  |  | Structural Welding [267 h] |
| A50410 |  | NDT survey — foundation group 9B — Sea chest & strainer room No. 3 | 0d | 2026-08-19 | 2026-08-31 |  |  |  | Structural Welding [101 h] |
| A45490 |  | Crop out foundation group 3A — Reactor Compartment No. 1 – lower level | 0d | 2026-08-21 | 2026-08-26 | A45480 |  |  | Structural Welding [41 h] |
| A53150 |  | Fit & weld structural bay 6B — Reactor Compartment No. 2 – hold level | 0d | 2026-08-23 | 2026-08-25 | A53140 FS-2.4d |  |  | Structural Welding [16 h] |
| A50950 |  | Fit & weld structural bay 7B — Void No. 1 | 0d | 2026-08-25 | 2026-08-28 | A50940 FS+2.4d |  |  | Structural Welding [54 h] |
| A45500 |  | Fit & weld foundation group 3A — Reactor Compartment No. 1 – lower level | 0d | 2026-08-26 | 2026-09-09 | A45490 |  |  | Structural Welding [287 h] |
| A53160 |  | NDT acceptance — structural bay 6B — Reactor Compartment No. 2 – hold level | 0d | 2026-08-26 | 2026-09-04 | A53150 |  |  | Structural Welding [131 h] |
| A53010 |  | NDT acceptance — foundation group 2A — Void between reactor compartments | 0d | 2026-08-26 | 2026-08-28 | A53000 FS-2.4d |  |  | Structural Welding [15 h] |
| A37070 |  | Fit & weld foundation group 8B — Reactor auxiliaries room No. 1 | 0d | 2026-08-27 | 2026-09-07 | A37060 SS+4.8d |  |  | Structural Welding [136 h] |
| A28230 |  | Fit & weld foundation group 1A — Refrigerated stores No. 2 | 0d | 2026-08-27 | 2026-09-02 | A28220 |  |  | Structural Welding [90 h] |
| A37980 |  | Fit & weld structural bay 8D — Forced Draft Blower Room No. 3 | 0d | 2026-08-27 | 2026-09-02 | A37970 |  |  | Structural Welding [138 h] |
| A38820 |  | Fit & weld foundation group 8A — Evaporator room No. 2 | 0d | 2026-08-28 | 2026-09-06 | A38810 FS+0.8d |  |  | Structural Welding [66 h] |
| A50320 |  | Fit & weld structural bay 1A — Reactor plant cooling water pump room No. 2 | 0d | 2026-08-28 | 2026-08-31 | A50310 |  |  | Structural Welding [96 h] |
| A53020 |  | Grind & dress foundation group 2A — Void between reactor compartments | 0d | 2026-08-29 | 2026-09-04 | A53010 |  |  | Structural Welding [88 h] |
| A36360 |  | Crop out foundation group 4F — Main Machinery Room No. 1 – upper level | 0d | 2026-08-30 | 2026-09-04 | A36350 FS+2.4d |  |  | Structural Welding [42 h] |
| A50960 |  | NDT acceptance — structural bay 7B — Void No. 1 | 0d | 2026-08-30 | 2026-09-09 | A50950 |  |  | Structural Welding [83 h] |
| A53190 |  | Crop out foundation group 6C (7-152-0-E) | 0d | 2026-08-30 | 2026-09-02 | A53180 |  |  | Structural Welding [101 h] |
| A50420 |  | Crop out foundation group 9B — Sea chest & strainer room No. 3 | 0d | 2026-09-01 | 2026-09-05 | A50410 |  |  | Structural Welding [55 h] |
| A50330 |  | NDT acceptance — structural bay 1A — Reactor plant cooling water pump room No. 2 | 0d | 2026-09-01 | 2026-09-05 | A50320 |  |  | Structural Welding [27 h]; Rigging & Weight Handling [7 h] |
| A36950 |  | Crop out deck insert 7C — Reactor Compartment No. 1 – upper level | 0d | 2026-09-02 | 2026-09-13 | A36940 FS+0.8d |  |  | Structural Welding [95 h] |
| A53200 |  | Fit & weld foundation group 6C (7-152-0-E) | 0d | 2026-09-02 | 2026-09-15 | A53190 |  |  | Structural Welding [251 h] |
| A28240 |  | NDT acceptance — foundation group 1A — Refrigerated stores No. 2 | 0d | 2026-09-03 | 2026-09-08 | A28230 |  |  | Structural Welding [43 h] |
| A37990 |  | NDT acceptance — structural bay 8D — Forced Draft Blower Room No. 3 | 0d | 2026-09-03 | 2026-09-13 | A37980 FS+0.8d |  |  | Structural Welding [237 h] |
| A53170 |  | Grind & dress structural bay 6B — Reactor Compartment No. 2 – hold level | 0d | 2026-09-06 | 2026-09-16 | A53160 FS+2.4d |  |  | Structural Welding [150 h] |
| A36370 |  | Fit & weld foundation group 4F — Main Machinery Room No. 1 – upper level | 0d | 2026-09-06 | 2026-09-14 | A36360 FS+2.4d |  |  | Structural Welding [94 h] |
| A50340 |  | Grind & dress structural bay 1A — Reactor plant cooling water pump room No. 2 | 0d | 2026-09-07 | 2026-09-16 | A50330 |  |  | Structural Welding [246 h] |
| A50430 |  | Fit & weld foundation group 9B — Sea chest & strainer room No. 3 | 0d | 2026-09-07 | 2026-09-10 | A50420 FS+2.4d |  |  | Structural Welding [56 h] |
| A38830 |  | NDT acceptance — foundation group 8A — Evaporator room No. 2 | 0d | 2026-09-07 | 2026-09-11 | A38820 |  |  | Structural Welding [22 h]; Rigging & Weight Handling [6 h] |
| A37080 |  | NDT acceptance — foundation group 8B — Reactor auxiliaries room No. 1 | 0d | 2026-09-08 | 2026-09-22 | A37070 |  |  | Structural Welding [197 h] |
| A45510 |  | NDT acceptance — foundation group 3A — Reactor Compartment No. 1 – lower level | 0d | 2026-09-09 | 2026-09-11 | A45500 |  |  | Structural Welding [63 h] |

| ID | WBS | Activity | Duration | Start | Finish | Predecessors | Complete | Remaining | Resources |
| --- | --- | --- | --- | --- | --- | --- | --- | --- | --- |
| A28250 |  | Grind & dress foundation group 1A — Refrigerated stores No. 2 | 0d | 2026-09-10 | 2026-09-18 | A28240 |  |  | Structural Welding [53 h] |
| A50970 |  | Grind & dress structural bay 7B — Void No. 1 | 0d | 2026-09-10 | 2026-09-18 | A50960 |  |  | Structural Welding [92 h]; Rigging & Weight Handling [24 h] |
| A45520 |  | Grind & dress foundation group 3A — Reactor Compartment No. 1 – lower level | 0d | 2026-09-11 | 2026-09-22 | A45510 SS+7.2d |  |  | Structural Welding [75 h] |
| A38840 |  | Grind & dress foundation group 8A — Evaporator room No. 2 | 0d | 2026-09-12 | 2026-09-25 | A38830 FS+2.4d |  |  | Structural Welding [71 h]; Rigging & Weight Handling [18 h] |
| A50440 |  | NDT acceptance — foundation group 9B — Sea chest & strainer room No. 3 | 0d | 2026-09-13 | 2026-09-26 | A50430 |  |  | Structural Welding [98 h] |
| A38000 |  | Grind & dress structural bay 8D — Forced Draft Blower Room No. 3 | 0d | 2026-09-14 | 2026-09-20 | A37990 |  |  | Structural Welding [68 h] |
| A36380 |  | NDT acceptance — foundation group 4F — Main Machinery Room No. 1 – upper level | 0d | 2026-09-14 | 2026-09-19 | A36370 |  |  | Structural Welding [31 h] |
| A53210 |  | NDT acceptance — foundation group 6C (7-152-0-E) | 0d | 2026-09-15 | 2026-09-19 | A53200 |  |  | Structural Welding [28 h] |
| A36960 |  | Fit & weld deck insert 7C — Reactor Compartment No. 1 – upper level | 0d | 2026-09-16 | 2026-09-18 | A36950 FS+0.8d |  |  | Structural Welding [34 h] |
| A53220 |  | Grind & dress foundation group 6C (7-152-0-E) | 0d | 2026-09-20 | 2026-09-29 | A53210 |  |  | Structural Welding [125 h] |
| A36390 |  | Grind & dress foundation group 4F — Main Machinery Room No. 1 – upper level | 0d | 2026-09-20 | 2026-09-25 | A36380 FS-4.8d |  |  | Structural Welding [37 h] |
| A36970 |  | NDT acceptance — deck insert 7C — Reactor Compartment No. 1 – upper level | 0d | 2026-09-21 | 2026-09-30 | A36960 |  |  | Structural Welding [75 h] |
| A37090 |  | Grind & dress foundation group 8B — Reactor auxiliaries room No. 1 | 0d | 2026-09-22 | 2026-10-03 | A37080 FS+2.4d |  |  | Structural Welding [78 h] |
| A50450 |  | Grind & dress foundation group 9B — Sea chest & strainer room No. 3 | 0d | 2026-09-27 | 2026-10-01 | A50440 FS+2.4d |  |  | Structural Welding [90 h]; Rigging & Weight Handling [23 h] |
| A36980 |  | Grind & dress deck insert 7C — Reactor Compartment No. 1 – upper level | 0d | 2026-10-01 | 2026-10-08 | A36970 |  |  | Structural Welding [47 h] |
|  | 300 | **300 Electrical Distribution** |  | 2026-07-29 | 2026-10-13 |  |  |  |  |
| A28850 |  | Circuit survey — cable run 4A — Switchgear Room No. 2 | 0d | 2026-07-29 A | 2026-08-06 A |  | 100% |  | Electrical [211 h] |
| A28900 |  | Circuit survey — cable run 8B — Switchgear Room No. 2 | 0d | 2026-07-29 A | 2026-08-02 A |  | 100% |  | Electrical [44 h] |
| A23010 |  | Circuit survey — panel group 7C — Disbursing & personnel office | 0d | 2026-07-29 A | 2026-08-01 A |  | 100% |  | Electrical [43 h] |
| A28750 |  | Circuit survey — lighting circuit 9A — Chief Petty Officer Berthing | 0d | 2026-07-30 A | 2026-08-12 |  | 55% | 0d | Electrical [283 h] |
| A50250 |  | Circuit survey — cable run 9A — Reactor plant cooling water pump room No. 1 | 0d | 2026-07-30 A | 2026-08-12 |  | 57% | 0d | Electrical [213 h] |
| A46020 |  | Circuit survey — lighting circuit 9A — Reactor Compartment No. 2 – lower level | 0d | 2026-07-31 A | 2026-08-13 |  | 73% | 0d | Electrical [78 h] |
| A28100 |  | Circuit survey — cable run 7C — Air conditioning plant No. 1 | 0d | 2026-08-02 A | 2026-08-06 A |  | 100% |  | Electrical [30 h] |
| A28050 |  | Circuit survey — cable run 6B — Air conditioning plant No. 1 | 0d | 2026-08-02 A | 2026-08-13 |  | 54% | 0d | Electrical [97 h] |
| A45260 |  | Circuit survey — cable run 7C — Main Machinery Room No. 1 – lower level | 0d | 2026-08-02 A | 2026-08-06 A |  | 100% |  | Electrical [113 h] |
| A22190 |  | Circuit survey — panel group 7B — Damage control repair locker No. 3 | 0d | 2026-08-03 A | 2026-08-15 |  | 35% | 0d | Electrical [212 h] |
| A50030 |  | Circuit survey — panel group 3B — Sea chest & strainer room No. 2 | 0d | 2026-08-03 A | 2026-08-17 |  | 38% | 0d | Electrical [62 h]; Rigging & Weight Handling [16 h] |
| A36590 |  | Circuit survey — panel group 6B — Switchboard Room No. 1 | 0d | 2026-08-03 A | 2026-08-13 |  | 64% | 0d | Electrical [177 h]; Rigging & Weight Handling [45 h] |
| A39300 |  | Circuit survey — lighting circuit 8A — Switchgear Room No. 3 | 0d | 2026-08-03 A | 2026-08-06 A |  | 100% |  | Electrical [51 h] |
| A36400 |  | Circuit survey — panel group 6A — Switchgear Room No. 1 | 0d | 2026-08-03 A | 2026-08-06 A |  | 100% |  | Electrical [34 h]; Rigging & Weight Handling [9 h] |
| A23020 |  | De-energize & tag out panel group 7C — Disbursing & personnel office | 0d | 2026-08-04 A | 2026-08-09 A | A23010 | 100% |  | Electrical [149 h] |
| A28910 |  | De-energize & tag out cable run 8B — Switchgear Room No. 2 | 0d | 2026-08-04 A | 2026-08-09 A | A28900 FS+0.8d | 100% |  | Electrical [80 h] |
| A39350 |  | Circuit survey — panel group 6B — Switchgear Room No. 3 | 0d | 2026-08-05 A | 2026-08-14 |  | 55% | 0d | Electrical [171 h]; Rigging & Weight Handling [43 h] |
| A29760 |  | Circuit survey — panel group 7F — AC Plant No. 2 | 0d | 2026-08-05 A | 2026-08-16 |  | 43% | 0d | Electrical [192 h] |
| A37800 |  | Circuit survey — cable run 8A — Forced Draft Blower Room No. 3 | 0d | 2026-08-06 A | 2026-08-11 |  | 78% | 0d | Electrical [32 h] |
| A28860 |  | De-energize & tag out cable run 4A — Switchgear Room No. 2 | 0d | 2026-08-07 A | 2026-08-15 | A28850 | 32% | 0d | Electrical [62 h] |
| A45270 |  | De-energize & tag out cable run 7C — Main Machinery Room No. 1 – lower level | 0d | 2026-08-07 A | 2026-08-17 | A45260 | 22% | 0d | Electrical [254 h] |
| A39310 |  | De-energize & tag out lighting circuit 8A — Switchgear Room No. 3 | 0d | 2026-08-08 A | 2026-08-17 | A39300 FS+2.4d | 21% | 0d | Electrical [170 h] |
| A37100 |  | Circuit survey — lighting circuit 8A — Fan Room | 0d | 2026-08-08 A | 2026-08-14 |  | 30% | 0d | Electrical [46 h] |
| A24030 |  | Circuit survey — lighting circuit 7B — Crew berthing No. 1 | 0d | 2026-08-08 A | 2026-08-19 |  | 17% | 0d | Electrical [132 h]; Rigging & Weight Handling [34 h] |
| A36410 |  | De-energize & tag out panel group 6A — Switchgear Room No. 1 | 0d | 2026-08-08 A | 2026-08-21 | A36400 FS+2.4d | 13% | 0d | Electrical [108 h] |
| A28110 |  | De-energize & tag out cable run 7C — Air conditioning plant No. 1 | 0d | 2026-08-08 A | 2026-08-20 | A28100 | 11% | 0d | Electrical [161 h] |
| A22960 |  | Circuit survey — lighting circuit 6B — Disbursing & personnel office | 0d | 2026-08-08 A | 2026-08-15 |  | 17% | 0d | Electrical [79 h]; Rigging & Weight Handling [20 h] |
| A36490 |  | Circuit survey — panel group 9C — Switchgear Room No. 1 | 0d | 2026-08-09 A | 2026-08-16 |  | 7% | 0d | Electrical [56 h] |
| A23800 |  | Circuit survey — lighting circuit 1B — Chief petty officer mess – aft | 0d | 2026-08-10 A | 2026-08-23 |  | 1% | 0d | Electrical [321 h] |
| A23060 |  | Circuit survey — panel group 8A — Damage control repair locker No. 4 | 0d | 2026-08-10 A | 2026-08-12 |  | 2% | 0d | Electrical [61 h] |
| A28920 |  | Pull & land cable — cable run 8B — Switchgear Room No. 2 | 0d | 2026-08-11 | 2026-08-19 | A28910 FS+2.4d |  |  | Electrical [65 h] |
| A23030 |  | Pull & land cable — panel group 7C — Disbursing & personnel office | 0d | 2026-08-11 | 2026-08-19 | A23020 FS+0.8d |  |  | Electrical [196 h] |
| A37810 |  | De-energize & tag out cable run 8A — Forced Draft Blower Room No. 3 | 0d | 2026-08-11 | 2026-08-21 | A37800 |  |  | Electrical [284 h]; Rigging & Weight Handling [71 h] |
| A29240 |  | Circuit survey — lighting circuit 4C — Auxiliary Machinery Room No. 4 | 0d | 2026-08-12 | 2026-08-15 |  |  |  | Electrical [104 h] |
| A28500 |  | Circuit survey — lighting circuit 7A — Air conditioning plant No. 2 | 0d | 2026-08-12 | 2026-08-24 |  |  |  | Electrical [290 h] |
| A50260 |  | De-energize & tag out cable run 9A — Reactor plant cooling water pump room No. 1 | 0d | 2026-08-12 | 2026-08-24 | A50250 FS+0.8d |  |  | Electrical [108 h]; Rigging & Weight Handling [28 h] |
| A22680 |  | Circuit survey — lighting circuit 7C — Sick bay | 0d | 2026-08-13 | 2026-08-24 |  |  |  | Electrical [69 h] |
| A46030 |  | De-energize & tag out lighting circuit 9A — Reactor Compartment No. 2 – lower level | 0d | 2026-08-13 | 2026-08-20 | A46020 |  |  | Electrical [230 h] |
| A36600 |  | De-energize & tag out panel group 6B — Switchboard Room No. 1 | 0d | 2026-08-13 | 2026-08-27 | A36590 |  |  | Electrical [307 h] |
| A28760 |  | De-energize & tag out lighting circuit 9A — Chief Petty Officer Berthing | 0d | 2026-08-14 | 2026-08-26 | A28750 SS+2.4d |  |  | Electrical [171 h] |
| A30260 |  | Circuit survey — cable run 8A — CPO Living Space | 0d | 2026-08-14 | 2026-08-26 |  |  |  | Electrical [85 h] |
| A23110 |  | Circuit survey — lighting circuit 9B — Damage control repair locker No. 4 | 0d | 2026-08-14 | 2026-08-19 |  |  |  | Electrical [38 h] |
| A37110 |  | De-energize & tag out lighting circuit 8A — Fan Room | 0d | 2026-08-14 | 2026-08-23 | A37100 FS+0.8d |  |  | Electrical [133 h] |
| A29390 |  | Circuit survey — cable run 3F — Auxiliary Machinery Room No. 4 | 0d | 2026-08-15 | 2026-08-28 |  |  |  | Electrical [170 h] |
| A39360 |  | De-energize & tag out panel group 6B — Switchgear Room No. 3 | 0d | 2026-08-15 | 2026-08-26 | A39350 |  |  | Electrical [68 h] |
| A23070 |  | De-energize & tag out panel group 8A — Damage control repair locker No. 4 | 0d | 2026-08-15 | 2026-08-26 | A23060 |  |  | Electrical [272 h] |
| A22970 |  | De-energize & tag out lighting circuit 6B — Disbursing & personnel office | 0d | 2026-08-15 | 2026-08-25 | A22960 FS+0.8d |  |  | Electrical [331 h] |
| A36540 |  | Circuit survey — panel group 7A — Switchboard Room No. 1 | 0d | 2026-08-15 | 2026-08-27 |  |  |  | Electrical [237 h] |
| A22200 |  | De-energize & tag out panel group 7B — Damage control repair locker No. 3 | 0d | 2026-08-15 | 2026-08-25 | A22190 |  |  | Electrical [227 h]; Rigging & Weight Handling [57 h] |
| A28060 |  | De-energize & tag out cable run 6B — Air conditioning plant No. 1 | 0d | 2026-08-16 | 2026-08-18 | A28050 |  |  | Electrical [30 h] |
| A28870 |  | Pull & land cable — cable run 4A — Switchgear Room No. 2 | 0d | 2026-08-16 | 2026-08-28 | A28860 |  |  | Electrical [165 h] |
| A29250 |  | De-energize & tag out lighting circuit 4C — Auxiliary Machinery Room No. 4 | 0d | 2026-08-17 | 2026-08-24 | A29240 |  |  | Electrical [119 h] |
| A45530 |  | Circuit survey — lighting circuit 5B — Reactor Compartment No. 1 – lower level | 0d | 2026-08-17 | 2026-08-24 |  |  |  | Electrical [119 h] |
| A36160 |  | Circuit survey — lighting circuit 3B — Main Machinery Room No. 1 – upper level | 0d | 2026-08-18 | 2026-08-27 |  |  |  | Electrical [137 h] |

| ID | Activity | Duration | Start | Finish | Predecessors | Resources |
| --- | --- | --- | --- | --- | --- | --- |
| A29770 | De-energize & tag out panel group 7F — AC Plant No. 2 | 0d | 2026-08-18 | 2026-08-21 | A29760 | Electrical [27 h] |
| A39320 | Pull & land cable — lighting circuit 8A — Switchgear Room No. 3 | 0d | 2026-08-18 | 2026-08-28 | A39310 | Electrical [59 h] |
| A50040 | De-energize & tag out panel group 3B — Sea chest & strainer room No. 2 | 0d | 2026-08-18 | 2026-08-24 | A50030 FS+0.8d | Electrical [156 h] |
| A45280 | Pull & land cable — cable run 7C — Main Machinery Room No. 1 – lower level | 0d | 2026-08-18 | 2026-08-22 | A45270 | Electrical [32 h]; Rigging & Weight Handling [8 h] |
| A36500 | De-energize & tag out panel group 9C — Switchgear Room No. 1 | 0d | 2026-08-19 | 2026-08-30 | A36490 FS+2.4d | Electrical [170 h] |
| A38640 | Circuit survey — panel group 7F — Pump Room No. 2 | 0d | 2026-08-19 | 2026-08-29 |  | Electrical [316 h] |
| A23120 | De-energize & tag out lighting circuit 9B — Damage control repair locker No. 4 | 0d | 2026-08-19 | 2026-08-23 | A23110 FS+0.8d | Electrical [64 h] |
| A28070 | Pull & land cable — cable run 6B — Air conditioning plant No. 1 | 0d | 2026-08-20 | 2026-09-02 | A28060 | Electrical [366 h] |
| A36640 | Circuit survey — panel group 3C — Switchboard Room No. 1 | 0d | 2026-08-20 | 2026-08-29 |  | Electrical [136 h] |
| A46480 | Circuit survey — cable run 3B — Main Machinery Room No. 3 – lower level | 0d | 2026-08-21 | 2026-08-27 |  | Electrical [160 h] |
| A36830 | Circuit survey — lighting circuit 2A — Reactor Compartment No. 1 – upper level | 0d | 2026-08-21 | 2026-08-31 |  | Electrical [173 h] |
| A46040 | Pull & land cable — lighting circuit 9A — Reactor Compartment No. 2 – lower level | 0d | 2026-08-21 | 2026-08-24 | A46030 | Electrical [62 h] |
| A36420 | Pull & land cable — panel group 6A — Switchgear Room No. 1 | 0d | 2026-08-21 | 2026-08-29 | A36410 | Electrical [123 h] |
| A24040 | De-energize & tag out lighting circuit 7B — Crew berthing No. 1 | 0d | 2026-08-21 | 2026-08-25 | A24030 | Electrical [66 h] |
| A28930 | Megger & continuity test cable run 8B — Switchgear Room No. 2 | 0d | 2026-08-21 | 2026-09-01 | A28920 | Electrical [248 h] |
| A23040 | Megger & continuity test panel group 7C — Disbursing & personnel office | 0d | 2026-08-22 | 2026-08-29 | A23030 | Electrical [131 h] |
| A37820 | Pull & land cable — cable run 8A — Forced Draft Blower Room No. 3 | 0d | 2026-08-22 | 2026-08-27 | A37810 | Electrical [34 h] |
| A28120 | Pull & land cable — cable run 7C — Air conditioning plant No. 1 | 0d | 2026-08-22 | 2026-09-05 | A28110 | Electrical [361 h] |
| A29780 | Pull & land cable — panel group 7F — AC Plant No. 2 | 0d | 2026-08-24 | 2026-09-03 | A29770 FS+2.4d | Electrical [79 h] |
| A45290 | Megger & continuity test cable run 7C — Main Machinery Room No. 1 – lower level | 0d | 2026-08-24 | 2026-09-01 | A45280 FS+2.4d | Electrical [96 h] |
| A22690 | De-energize & tag out lighting circuit 7C — Sick bay | 0d | 2026-08-24 | 2026-09-06 | A22680 | Electrical [73 h] |
| A29260 | Pull & land cable — lighting circuit 4C — Auxiliary Machinery Room No. 4 | 0d | 2026-08-25 | 2026-09-02 | A29250 FS-0.8d | Electrical [126 h] |
| A45540 | De-energize & tag out lighting circuit 5B — Reactor Compartment No. 1 – lower level | 0d | 2026-08-25 | 2026-08-29 | A45530 | Electrical [52 h]; Rigging & Weight Handling [13 h] |
| A37120 | Pull & land cable — lighting circuit 8A — Fan Room | 0d | 2026-08-25 | 2026-09-02 | A37110 | Electrical [204 h] |
| A28510 | De-energize & tag out lighting circuit 7A — Air conditioning plant No. 2 | 0d | 2026-08-25 | 2026-09-02 | A28500 | Electrical [190 h] |
| A22980 | Pull & land cable — lighting circuit 6B — Disbursing & personnel office | 0d | 2026-08-25 | 2026-08-28 | A22970 FS+2.4d | Electrical [13 h] |
| A46050 | Megger & continuity test lighting circuit 9A — Reactor Compartment No. 2 – lower level | 0d | 2026-08-25 | 2026-08-28 | A46040 FS+2.4d | Electrical [39 h] |
| A23130 | Pull & land cable — lighting circuit 9B — Damage control repair locker No. 4 | 0d | 2026-08-26 | 2026-08-31 | A23120 FS+0.8d | Electrical [41 h] |
| A50270 | Pull & land cable — cable run 9A — Reactor plant cooling water pump room No. 1 | 0d | 2026-08-26 | 2026-09-05 | A50260 FS+2.4d | Electrical [139 h] |
| A50050 | Pull & land cable — panel group 3B — Sea chest & strainer room No. 2 | 0d | 2026-08-26 | 2026-08-29 | A50040 FS+2.4d | Electrical [20 h] |
| A23810 | De-energize & tag out lighting circuit 1B — Chief petty officer mess – aft | 0d | 2026-08-26 | 2026-08-28 | A23800 | Electrical [20 h] |
| A23080 | Pull & land cable — panel group 8A — Damage control repair locker No. 4 | 0d | 2026-08-27 | 2026-09-02 | A23070 FS+0.8d | Electrical [178 h] |
| A22210 | Pull & land cable — panel group 7B — Damage control repair locker No. 3 | 0d | 2026-08-27 | 2026-08-29 | A22200 FS+0.8d | Electrical [13 h] |
| A30270 | De-energize & tag out cable run 8A — CPO Living Space | 0d | 2026-08-27 | 2026-09-05 | A30260 FS+0.8d | Electrical [226 h]; Rigging & Weight Handling [57 h] |
| A39370 | Pull & land cable — panel group 6B — Switchgear Room No. 3 | 0d | 2026-08-27 | 2026-09-08 | A39360 | Electrical [194 h] |
| A24050 | Pull & land cable — lighting circuit 7B — Crew berthing No. 1 | 0d | 2026-08-28 | 2026-09-03 | A24040 | Electrical [170 h] |
| A36550 | De-energize & tag out panel group 7A — Switchboard Room No. 1 | 0d | 2026-08-28 | 2026-09-05 | A36540 FS+0.8d | Electrical [129 h] |
| A28770 | Pull & land cable — lighting circuit 9A — Chief Petty Officer Berthing | 0d | 2026-08-28 | 2026-09-01 | A28760 FS+0.8d | Electrical [30 h] |
| A37830 | Megger & continuity test cable run 8A — Forced Draft Blower Room No. 3 | 0d | 2026-08-28 | 2026-09-08 | A37820 | Electrical [376 h] |
| A39330 | Megger & continuity test lighting circuit 8A — Switchgear Room No. 3 | 0d | 2026-08-29 | 2026-09-04 | A39320 FS+2.4d | Electrical [94 h] |
| A36610 | Pull & land cable — panel group 6B — Switchboard Room No. 1 | 0d | 2026-08-29 | 2026-09-10 | A36600 | Electrical [105 h] |
| A36650 | De-energize & tag out panel group 3C — Switchboard Room No. 1 | 0d | 2026-08-29 | 2026-09-08 | A36640 | Electrical [55 h] |
| A46490 | De-energize & tag out cable run 3B — Main Machinery Room No. 3 – lower level | 0d | 2026-08-29 | 2026-09-09 | A46480 | Electrical [61 h]; Rigging & Weight Handling [16 h] |
| A38650 | De-energize & tag out panel group 7F — Pump Room No. 2 | 0d | 2026-08-29 | 2026-09-12 | A38640 FS+0.8d | Electrical [185 h] |
| A29400 | De-energize & tag out cable run 3F — Auxiliary Machinery Room No. 4 | 0d | 2026-08-29 | 2026-09-01 | A29390 FS+2.4d | Electrical [21 h] |
| A36170 | De-energize & tag out lighting circuit 3B — Main Machinery Room No. 1 – upper level | 0d | 2026-08-29 | 2026-09-01 | A36160 | Electrical [34 h] |
| A22220 | Megger & continuity test panel group 7B — Damage control repair locker No. 3 | 0d | 2026-08-30 | 2026-09-12 | A22210 FS+2.4d | Electrical [393 h] |
| A23820 | Pull & land cable — lighting circuit 1B — Chief petty officer mess – aft | 0d | 2026-08-30 | 2026-09-07 | A23810 FS+0.8d | Electrical [62 h] |
| A50060 | Megger & continuity test panel group 3B — Sea chest & strainer room No. 2 | 0d | 2026-08-30 | 2026-09-07 | A50050 FS+0.8d | Electrical [51 h] |
| A28880 | Megger & continuity test cable run 4A — Switchgear Room No. 2 | 0d | 2026-08-30 | 2026-09-09 | A28870 FS+0.8d | Electrical [143 h] |
| A45550 | Pull & land cable — lighting circuit 5B — Reactor Compartment No. 1 – lower level | 0d | 2026-08-30 | 2026-09-04 | A45540 FS+2.4d | Electrical [96 h] |
| A22990 | Megger & continuity test lighting circuit 6B — Disbursing & personnel office | 0d | 2026-08-31 | 2026-09-10 | A22980 FS+2.4d | Electrical [93 h] |
| A46060 | Energize & close-out lighting circuit 9A — Reactor Compartment No. 2 – lower level | 0d | 2026-08-31 | 2026-09-08 | A46050 | Electrical [130 h] |
| A23140 | Megger & continuity test lighting circuit 9B — Damage control repair locker No. 4 | 0d | 2026-08-31 | 2026-09-11 | A23130 SS+7.2d | Electrical [290 h] |
| A23050 | Energize & close-out panel group 7C — Disbursing & personnel office | 0d | 2026-08-31 | 2026-09-13 | A23040 | Electrical [437 h] |
| A36430 | Megger & continuity test panel group 6A — Switchgear Room No. 1 | 0d | 2026-09-01 | 2026-09-04 | A36420 | Electrical [106 h] |
| A36510 | Pull & land cable — panel group 9C — Switchgear Room No. 1 | 0d | 2026-09-01 | 2026-09-03 | A36500 FS+2.4d | Electrical [41 h] |
| A36180 | Pull & land cable — lighting circuit 3B — Main Machinery Room No. 1 – upper level | 0d | 2026-09-01 | 2026-09-04 | A36170 | Electrical [16 h] |
| A45300 | Energize & close-out cable run 7C — Main Machinery Room No. 1 – lower level | 0d | 2026-09-01 | 2026-09-05 | A45290 FS+2.4d | Electrical [45 h] |
| A28080 | Megger & continuity test cable run 6B — Air conditioning plant No. 1 | 0d | 2026-09-02 | 2026-09-11 | A28070 FS+0.8d | Electrical [143 h] |
| A36840 | De-energize & tag out lighting circuit 2A — Reactor Compartment No. 1 – upper level | 0d | 2026-09-02 | 2026-09-13 | A36830 | Electrical [66 h] |
| A29410 | Pull & land cable — cable run 3F — Auxiliary Machinery Room No. 4 | 0d | 2026-09-03 | 2026-09-08 | A29400 FS-0.8d | Electrical [66 h] |
| A28940 | Energize & close-out cable run 8B — Switchgear Room No. 2 | 0d | 2026-09-03 | 2026-09-05 | A28930 FS-2.4d | Electrical [13 h] |
| A29270 | Megger & continuity test lighting circuit 4C — Auxiliary Machinery Room No. 4 | 0d | 2026-09-03 | 2026-09-09 | A29260 FS+2.4d | Electrical [49 h] |
| A28520 | Pull & land cable — lighting circuit 7A — Air conditioning plant No. 2 | 0d | 2026-09-04 | 2026-09-14 | A28510 | Electrical [241 h] |
| A37130 | Megger & continuity test lighting circuit 8A — Fan Room | 0d | 2026-09-04 | 2026-09-09 | A37120 | Electrical [159 h] |
| A28780 | Megger & continuity test lighting circuit 9A — Chief Petty Officer Berthing | 0d | 2026-09-04 | 2026-09-11 | A28770 | Electrical [44 h]; Rigging & Weight Handling [12 h] |
| A29790 | Megger & continuity test panel group 7F — AC Plant No. 2 | 0d | 2026-09-04 | 2026-09-13 | A29780 | Electrical [55 h] |
| A45560 | Megger & continuity test lighting circuit 5B — Reactor Compartment No. 1 – lower level | 0d | 2026-09-05 | 2026-09-14 | A45550 FS+2.4d | Electrical [216 h] |
| A23090 | Megger & continuity test panel group 8A — Damage control repair locker No. 4 | 0d | 2026-09-05 | 2026-09-09 | A23080 FS+2.4d | Electrical [86 h] |

| ID | Activity | Duration | Start | Finish | Predecessors | Resources |
| --- | --- | --- | --- | --- | --- | --- |
| A24060 | Megger & continuity test lighting circuit 7B — Crew berthing No. 1 | 0d | 2026-09-05 | 2026-09-12 | A24050 FS+2.4d | Electrical [112 h]; Rigging & Weight Handling [28 h] |
| A30280 | Pull & land cable — cable run 8A — CPO Living Space | 0d | 2026-09-06 | 2026-09-18 | A30270 FS+0.8d | Electrical [305 h] |
| A36520 | Megger & continuity test panel group 9C — Switchgear Room No. 1 | 0d | 2026-09-06 | 2026-09-08 | A36510 FS+2.4d | Electrical [17 h] |
| A39340 | Energize & close-out lighting circuit 8A — Switchgear Room No. 3 | 0d | 2026-09-06 | 2026-09-09 | A39330 FS+0.8d | Electrical [24 h] |
| A36440 | Energize & close-out panel group 6A — Switchgear Room No. 1 | 0d | 2026-09-06 | 2026-09-17 | A36430 FS+0.8d | Electrical [60 h] |
| A22700 | Pull & land cable — lighting circuit 7C — Sick bay | 0d | 2026-09-07 | 2026-09-12 | A22690 | Electrical [135 h] |
| A28130 | Megger & continuity test cable run 7C — Air conditioning plant No. 1 | 0d | 2026-09-07 | 2026-09-20 | A28120 | Electrical [451 h] |
| A36190 | Megger & continuity test lighting circuit 3B — Main Machinery Room No. 1 – upper level | 0d | 2026-09-07 | 2026-09-14 | A36180 | Electrical [103 h] |
| A36560 | Pull & land cable — panel group 7A — Switchboard Room No. 1 | 0d | 2026-09-07 | 2026-09-19 | A36550 | Electrical [187 h] |
| A39380 | Megger & continuity test panel group 6B — Switchgear Room No. 3 | 0d | 2026-09-08 | 2026-09-13 | A39370 | Electrical [46 h] |
| A50280 | Megger & continuity test cable run 9A — Reactor plant cooling water pump room No. 1 | 0d | 2026-09-08 | 2026-09-11 | A50270 FS+2.4d | Electrical [56 h] |
| A29420 | Megger & continuity test cable run 3F — Auxiliary Machinery Room No. 4 | 0d | 2026-09-09 | 2026-09-21 | A29410 | Electrical [213 h] |
| A37140 | Energize & close-out lighting circuit 8A — Fan Room | 0d | 2026-09-09 | 2026-09-17 | A37130 FS+0.8d | Electrical [55 h] |
| A50070 | Energize & close-out panel group 3B — Sea chest & strainer room No. 2 | 0d | 2026-09-09 | 2026-09-16 | A50060 | Electrical [57 h] |
| A23830 | Megger & continuity test lighting circuit 1B — Chief petty officer mess – aft | 0d | 2026-09-09 | 2026-09-13 | A23820 FS+0.8d | Electrical [21 h] |
| A36660 | Pull & land cable — panel group 3C — Switchboard Room No. 1 | 0d | 2026-09-10 | 2026-09-15 | A36650 | Electrical [69 h] |
| A37840 | Energize & close-out cable run 8A — Forced Draft Blower Room No. 3 | 0d | 2026-09-10 | 2026-09-21 | A37830 | Electrical [153 h] |
| A46500 | Pull & land cable — cable run 3B — Main Machinery Room No. 3 – lower level | 0d | 2026-09-10 | 2026-09-17 | A46490 | Electrical [135 h] |
| A36530 | Energize & close-out panel group 9C — Switchgear Room No. 1 | 0d | 2026-09-11 | 2026-09-22 | A36520 | Electrical [238 h] |
| A23000 | Energize & close-out lighting circuit 6B — Disbursing & personnel office | 0d | 2026-09-11 | 2026-09-24 | A22990 FS+0.8d | Electrical [113 h] |
| A29280 | Energize & close-out lighting circuit 4C — Auxiliary Machinery Room No. 4 | 0d | 2026-09-11 | 2026-09-23 | A29270 | Electrical [193 h] |
| A23100 | Energize & close-out panel group 8A — Damage control repair locker No. 4 | 0d | 2026-09-11 | 2026-09-23 | A23090 | Electrical [299 h] |
| A28890 | Energize & close-out cable run 4A — Switchgear Room No. 2 | 0d | 2026-09-12 | 2026-09-25 | A28880 FS+2.4d | Electrical [205 h] |
| A36620 | Megger & continuity test panel group 6B — Switchboard Room No. 1 | 0d | 2026-09-12 | 2026-09-20 | A36610 SS+4.8d | Electrical [223 h] |
| A28790 | Energize & close-out lighting circuit 9A — Chief Petty Officer Berthing | 0d | 2026-09-12 | 2026-09-17 | A28780 | Electrical [145 h] |
| A28090 | Energize & close-out cable run 6B — Air conditioning plant No. 1 | 0d | 2026-09-13 | 2026-09-19 | A28080 FS+2.4d | Electrical [181 h] |
| A38660 | Pull & land cable — panel group 7F — Pump Room No. 2 | 0d | 2026-09-13 | 2026-09-16 | A38650 | Electrical [22 h]; Rigging & Weight Handling [6 h] |
| A23150 | Energize & close-out lighting circuit 9B — Damage control repair locker No. 4 | 0d | 2026-09-13 | 2026-09-18 | A23140 SS+7.2d | Electrical [161 h] |
| A50290 | Energize & close-out cable run 9A — Reactor plant cooling water pump room No. 1 | 0d | 2026-09-13 | 2026-09-16 | A50280 SS+4.8d | Electrical [89 h] |
| A22230 | Energize & close-out panel group 7B — Damage control repair locker No. 3 | 0d | 2026-09-14 | 2026-09-22 | A22220 FS+0.8d | Electrical [104 h] |
| A22710 | Megger & continuity test lighting circuit 7C — Sick bay | 0d | 2026-09-14 | 2026-09-25 | A22700 | Electrical [158 h] |
| A39390 | Energize & close-out panel group 6B — Switchgear Room No. 3 | 0d | 2026-09-14 | 2026-09-20 | A39380 | Electrical [55 h] |
| A23840 | Energize & close-out lighting circuit 1B — Chief petty officer mess – aft | 0d | 2026-09-14 | 2026-09-23 | A23830 | Electrical [50 h] |
| A36850 | Pull & land cable — lighting circuit 2A — Reactor Compartment No. 1 – upper level | 0d | 2026-09-14 | 2026-09-26 | A36840 FS+0.8d | Electrical [164 h] |
| A24070 | Energize & close-out lighting circuit 7B — Crew berthing No. 1 | 0d | 2026-09-15 | 2026-09-26 | A24060 | Electrical [291 h] |
| A36200 | Energize & close-out lighting circuit 3B — Main Machinery Room No. 1 – upper level | 0d | 2026-09-15 | 2026-09-21 | A36190 | Electrical [128 h] |
| A36670 | Megger & continuity test panel group 3C — Switchboard Room No. 1 | 0d | 2026-09-16 | 2026-09-24 | A36660 FS+0.8d | Electrical [215 h] |
| A29800 | Energize & close-out panel group 7F — AC Plant No. 2 | 0d | 2026-09-16 | 2026-09-19 | A29790 FS+2.4d | Electrical [53 h]; Rigging & Weight Handling [14 h] |
| A45570 | Energize & close-out lighting circuit 5B — Reactor Compartment No. 1 – lower level | 0d | 2026-09-16 | 2026-09-21 | A45560 FS-0.8d | Electrical [87 h] |
| A38670 | Megger & continuity test panel group 7F — Pump Room No. 2 | 0d | 2026-09-17 | 2026-09-23 | A38660 FS+2.4d | Electrical [112 h] |
| A28530 | Megger & continuity test lighting circuit 7A — Air conditioning plant No. 2 | 0d | 2026-09-17 | 2026-09-23 | A28520 FS+0.8d | Electrical [37 h]; Rigging & Weight Handling [10 h] |
| A30290 | Megger & continuity test cable run 8A — CPO Living Space | 0d | 2026-09-18 | 2026-09-24 | A30280 FS+0.8d | Electrical [189 h] |
| A46510 | Megger & continuity test cable run 3B — Main Machinery Room No. 3 – lower level | 0d | 2026-09-18 | 2026-09-24 | A46500 FS+2.4d | Electrical [80 h]; Rigging & Weight Handling [21 h] |
| A36570 | Megger & continuity test panel group 7A — Switchboard Room No. 1 | 0d | 2026-09-20 | 2026-09-24 | A36560 | Electrical [128 h]; Rigging & Weight Handling [32 h] |
| A36630 | Energize & close-out panel group 6B — Switchboard Room No. 1 | 0d | 2026-09-22 | 2026-09-28 | A36620 | Electrical [104 h]; Rigging & Weight Handling [26 h] |
| A29430 | Energize & close-out cable run 3F — Auxiliary Machinery Room No. 4 | 0d | 2026-09-23 | 2026-10-04 | A29420 FS+2.4d | Electrical [169 h]; Rigging & Weight Handling [43 h] |
| A28140 | Energize & close-out cable run 7C — Air conditioning plant No. 1 | 0d | 2026-09-23 | 2026-10-02 | A28130 | Electrical [179 h] |
| A38680 | Energize & close-out panel group 7F — Pump Room No. 2 | 0d | 2026-09-24 | 2026-09-27 | A38670 | Electrical [48 h] |
| A28540 | Energize & close-out lighting circuit 7A — Air conditioning plant No. 2 | 0d | 2026-09-24 | 2026-10-05 | A28530 | Electrical [140 h] |
| A36580 | Energize & close-out panel group 7A — Switchboard Room No. 1 | 0d | 2026-09-25 | 2026-10-08 | A36570 | Electrical [92 h]; Rigging & Weight Handling [23 h] |
| A30300 | Energize & close-out cable run 8A — CPO Living Space | 0d | 2026-09-25 | 2026-09-29 | A30290 FS+2.4d | Electrical [63 h] |
| A36680 | Energize & close-out panel group 3C — Switchboard Room No. 1 | 0d | 2026-09-25 | 2026-10-07 | A36670 | Electrical [71 h] |
| A46520 | Energize & close-out cable run 3B — Main Machinery Room No. 3 – lower level | 0d | 2026-09-27 | 2026-09-30 | A46510 FS+2.4d | Electrical [43 h] |
| A36860 | Megger & continuity test lighting circuit 2A — Reactor Compartment No. 1 – upper level | 0d | 2026-09-28 | 2026-10-09 | A36850 | Electrical [227 h] |
| A22720 | Energize & close-out lighting circuit 7C — Sick bay | 0d | 2026-09-28 | 2026-10-07 | A22710 FS+2.4d | Electrical [110 h]; Rigging & Weight Handling [28 h] |
| A36870 | Energize & close-out lighting circuit 2A — Reactor Compartment No. 1 – upper level | 0d | 2026-10-10 | 2026-10-13 | A36860 | Electrical [40 h] |

| ID | WBS | Activity | Duration | Start | Finish | Predecessors | Complete | Remaining | Resources |
| --- | --- | --- | --- | --- | --- | --- | --- | --- | --- |
|  | 430 | **430 Interior Communications** |  | 2026-08-01 | 2026-09-21 |  |  |  |  |
| A36690 |  | Circuit trace — announcing group 3D — Switchboard Room No. 1 | 0d | 2026-08-01 A | 2026-08-08 A |  | 100% |  | Interior Communications [109 h] |
| A36450 |  | Circuit trace — announcing group 4B — Switchgear Room No. 1 | 0d | 2026-08-01 A | 2026-08-14 |  | 50% | 0d | Interior Communications [104 h] |
| A22240 |  | Circuit trace — announcing group 6A — Main galley | 0d | 2026-08-07 A | 2026-08-18 |  | 23% | 0d | Interior Communications [216 h] |
| A23850 |  | Circuit trace — IC circuit 2C — Chief petty officer mess – aft | 0d | 2026-08-07 A | 2026-08-11 |  | 46% | 0d | Interior Communications [28 h] |
| A36700 |  | Rip out announcing group 3D — Switchboard Room No. 1 | 0d | 2026-08-08 A | 2026-08-16 | A36690 | 21% | 0d | Interior Communications [114 h] |
| A37720 |  | Circuit trace — announcing group 2A — Aft IC & Gyro Room | 0d | 2026-08-09 A | 2026-08-19 |  | 11% | 0d | Interior Communications [132 h] |
| A23160 |  | Circuit trace — IC circuit 8A — Mess Decks – starboard | 0d | 2026-08-09 A | 2026-08-13 |  | 16% | 0d | Interior Communications [112 h] |
| A23860 |  | Rip out IC circuit 2C — Chief petty officer mess – aft | 0d | 2026-08-12 | 2026-08-19 | A23850 |  |  | Interior Communications [222 h] |
| A23170 |  | Rip out IC circuit 8A — Mess Decks – starboard | 0d | 2026-08-13 | 2026-08-19 | A23160 |  |  | Interior Communications [33 h] |
| A36460 |  | Rip out announcing group 4B — Switchgear Room No. 1 | 0d | 2026-08-16 | 2026-08-24 | A36450 |  |  | Interior Communications [221 h] |
| A36710 |  | Install & terminate announcing group 3D — Switchboard Room No. 1 | 0d | 2026-08-17 | 2026-08-27 | A36700 FS+0.8d |  |  | Interior Communications [88 h] |
| A37760 |  | Circuit trace — IC circuit 5B — Aft IC & Gyro Room | 0d | 2026-08-20 | 2026-08-25 |  |  |  | Interior Communications [204 h] |
| A22250 |  | Rip out announcing group 6A — Main galley | 0d | 2026-08-21 | 2026-08-26 | A22240 |  |  | Interior Communications [46 h] |
| A37730 |  | Rip out announcing group 2A — Aft IC & Gyro Room | 0d | 2026-08-21 | 2026-08-31 | A37720 |  |  | Interior Communications [72 h] |
| A23180 |  | Install & terminate IC circuit 8A — Mess Decks – starboard | 0d | 2026-08-21 | 2026-09-02 | A23170 |  |  | Interior Communications [200 h] |
| A23870 |  | Install & terminate IC circuit 2C — Chief petty officer mess – aft | 0d | 2026-08-21 | 2026-09-02 | A23860 |  |  | Interior Communications [328 h] |
| A36470 |  | Install & terminate announcing group 4B — Switchgear Room No. 1 | 0d | 2026-08-24 | 2026-08-31 | A36460 FS+2.4d |  |  | Interior Communications [126 h] |
| A37770 |  | Rip out IC circuit 5B — Aft IC & Gyro Room | 0d | 2026-08-28 | 2026-09-02 | A37760 FS+2.4d |  |  | Interior Communications [27 h] |
| A36720 |  | Ring-out & test announcing group 3D — Switchboard Room No. 1 | 0d | 2026-08-29 | 2026-09-03 | A36710 FS+0.8d |  |  | Interior Communications [59 h] |
| A22260 |  | Install & terminate announcing group 6A — Main galley | 0d | 2026-08-29 | 2026-09-03 | A22250 FS+0.8d |  |  | Interior Communications [41 h] |
| A36480 |  | Ring-out & test announcing group 4B — Switchgear Room No. 1 | 0d | 2026-09-02 | 2026-09-11 | A36470 FS+0.8d |  |  | Interior Communications [216 h] |
| A37780 |  | Install & terminate IC circuit 5B — Aft IC & Gyro Room | 0d | 2026-09-02 | 2026-09-05 | A37770 |  |  | Interior Communications [113 h] |
| A37740 |  | Install & terminate announcing group 2A — Aft IC & Gyro Room | 0d | 2026-09-03 | 2026-09-07 | A37730 |  |  | Interior Communications [26 h] |
| A23190 |  | Ring-out & test IC circuit 8A — Mess Decks – starboard | 0d | 2026-09-03 | 2026-09-14 | A23180 |  |  | Interior Communications [96 h] |
| A23880 |  | Ring-out & test IC circuit 2C — Chief petty officer mess – aft | 0d | 2026-09-04 | 2026-09-16 | A23870 |  |  | Interior Communications [170 h] |
| A22270 |  | Ring-out & test announcing group 6A — Main galley | 0d | 2026-09-05 | 2026-09-14 | A22260 |  |  | Interior Communications [77 h] |
| A37790 |  | Ring-out & test IC circuit 5B — Aft IC & Gyro Room | 0d | 2026-09-06 | 2026-09-18 | A37780 FS+2.4d |  |  | Interior Communications [145 h] |
| A37750 |  | Ring-out & test announcing group 2A — Aft IC & Gyro Room | 0d | 2026-09-08 | 2026-09-21 | A37740 FS+2.4d |  |  | Interior Communications [177 h] |

| ID | WBS | Activity | Duration | Start | Finish | Predecessors | Complete | Remaining | Resources |
| --- | --- | --- | --- | --- | --- | --- | --- | --- | --- |
|  | 505 | **505 Piping Systems** |  | 2026-07-27 | 2026-10-27 |  |  |  |  |
| A39070 |  | Lay-up & drain drain riser 1B — Main Machinery Room No. 3 – upper level | 0d | 2026-07-27 A | 2026-08-04 A |  | 100% |  | Pipefitting [191 h] |
| A36100 |  | Lay-up & drain valve bank 1A — Main Machinery Room No. 1 – upper level | 0d | 2026-07-28 A | 2026-08-01 A |  | 100% |  | Pipefitting [101 h] |
| A54740 |  | Lay-up & drain drain riser 1A — Reactor compartment No. 1 inner-bottom void | 0d | 2026-07-28 A | 2026-08-10 |  | 97% | 0d | Pipefitting [333 h] |
| A28550 |  | Lay-up & drain pipe spool group 9B — Air conditioning plant No. 2 | 0d | 2026-07-28 A | 2026-08-02 A |  | 100% |  | Pipefitting [76 h] |
| A39450 |  | Lay-up & drain drain riser 4A — Ship's service turbine generator room No. 3 | 0d | 2026-07-28 A | 2026-08-11 |  | 87% | 0d | Pipefitting [111 h] |
| A54800 |  | Lay-up & drain pipe spool group 4B — Reactor compartment No. 1 inner-bottom void | 0d | 2026-07-28 A | 2026-08-05 A |  | 100% |  | Pipefitting [42 h] |
| A49850 |  | Lay-up & drain valve bank 1B (6-100-1-Q) | 0d | 2026-07-29 A | 2026-07-31 A |  | 100% |  | Pipefitting [76 h] |
| A38910 |  | Lay-up & drain pipe spool group 4C — Evaporator room No. 2 | 0d | 2026-07-29 A | 2026-08-03 A |  | 100% |  | Pipefitting [40 h] |
| A50770 |  | Lay-up & drain valve bank 2D — Sea chest & strainer room No. 4 | 0d | 2026-08-01 A | 2026-08-13 |  | 62% | 0d | Pipefitting [204 h] |
| A49860 |  | Cut out valve bank 1B (6-100-1-Q) | 0d | 2026-08-01 A | 2026-08-04 A | A49850 | 100% |  | Pipefitting [17 h] |
| A46420 |  | Lay-up & drain valve bank 7A — Main Machinery Room No. 3 – lower level | 0d | 2026-08-01 A | 2026-08-07 A |  | 100% |  | Pipefitting [119 h] |
| A36110 |  | Cut out valve bank 1A — Main Machinery Room No. 1 – upper level | 0d | 2026-08-02 A | 2026-08-07 A | A36100 FS+0.8d | 100% |  | Pipefitting [41 h] |
| A50610 |  | Lay-up & drain valve bank 2A (6-180-2-Q) | 0d | 2026-08-03 A | 2026-08-07 A |  | 100% |  | Pipefitting [42 h]; Rigging & Weight Handling [11 h] |
| A28560 |  | Cut out pipe spool group 9B — Air conditioning plant No. 2 | 0d | 2026-08-03 A | 2026-08-08 A | A28550 FS+0.8d | 100% |  | Pipefitting [82 h] |
| A54810 |  | Cut out pipe spool group 4B — Reactor compartment No. 1 inner-bottom void | 0d | 2026-08-05 A | 2026-08-12 | A54800 | 66% | 0d | Pipefitting [165 h]; Rigging & Weight Handling [42 h] |
| A38920 |  | Cut out pipe spool group 4C — Evaporator room No. 2 | 0d | 2026-08-05 A | 2026-08-08 A | A38910 FS+0.8d | 100% |  | Pipefitting [12 h] |
| A49870 |  | Fab & fit valve bank 1B (6-100-1-Q) | 0d | 2026-08-06 A | 2026-08-11 | A49860 | 73% | 0d | Pipefitting [30 h] |
| A39080 |  | Cut out drain riser 1B — Main Machinery Room No. 3 – upper level | 0d | 2026-08-06 A | 2026-08-17 | A39070 FS+2.4d | 31% | 0d | Pipefitting [58 h] |
| A36120 |  | Fab & fit valve bank 1A — Main Machinery Room No. 1 – upper level | 0d | 2026-08-07 A | 2026-08-16 | A36110 | 30% | 0d | Pipefitting [111 h] |
| A50620 |  | Cut out valve bank 2A (6-180-2-Q) | 0d | 2026-08-07 A | 2026-08-20 | A50610 | 21% | 0d | Pipefitting [210 h] |
| A36990 |  | Lay-up & drain valve bank 9A — Reactor auxiliaries room No. 1 | 0d | 2026-08-07 A | 2026-08-12 |  | 47% | 0d | Pipefitting [36 h] |
| A37440 |  | Lay-up & drain drain riser 3B — Main Machinery Room No. 2 – upper level | 0d | 2026-08-07 A | 2026-08-11 |  | 64% | 0d | Pipefitting [28 h] |
| A46430 |  | Cut out valve bank 7A — Main Machinery Room No. 3 – lower level | 0d | 2026-08-08 A | 2026-08-11 | A46420 | 49% | 0d | Pipefitting [39 h] |
| A50870 |  | Lay-up & drain drain riser 4A — Void No. 1 | 0d | 2026-08-09 A | 2026-08-22 |  | 8% | 0d | Pipefitting [207 h] |
| A28570 |  | Fab & fit pipe spool group 9B — Air conditioning plant No. 2 | 0d | 2026-08-09 A | 2026-08-15 | A28560 | 7% | 0d | Pipefitting [106 h] |
| A29970 |  | Lay-up & drain pipe spool group 7D (3-172-1-E) | 0d | 2026-08-10 A | 2026-08-16 |  |  | 0d | Pipefitting [157 h] |
| A38930 |  | Fab & fit pipe spool group 4C — Evaporator room No. 2 | 0d | 2026-08-10 A | 2026-08-14 | A38920 SS+2.4d |  | 0d | Pipefitting [24 h]; Rigging & Weight Handling [7 h] |
| A45810 |  | Lay-up & drain drain riser 9E (5-130-1-Q) | 0d | 2026-08-10 | 2026-08-21 |  |  |  | Pipefitting [70 h] |
| A54750 |  | Cut out drain riser 1A — Reactor compartment No. 1 inner-bottom void | 0d | 2026-08-10 | 2026-08-14 | A54740 SS+4.8d |  |  | Pipefitting [26 h] |
| A45960 |  | Lay-up & drain valve bank 9C — Main Machinery Room No. 2 – lower level | 0d | 2026-08-11 | 2026-08-22 |  |  |  | Pipefitting [355 h] |
| A49880 |  | Weld out valve bank 1B (6-100-1-Q) | 0d | 2026-08-11 | 2026-08-19 | A49870 |  |  | Pipefitting [92 h] |
| A39460 |  | Cut out drain riser 4A — Ship's service turbine generator room No. 3 | 0d | 2026-08-11 | 2026-08-15 | A39450 |  |  | Pipefitting [58 h] |
| A30200 |  | Lay-up & drain pipe spool group 2C — AC Plant No. 2 Machinery Room | 0d | 2026-08-12 | 2026-08-16 |  |  |  | Pipefitting [101 h] |
| A50350 |  | Lay-up & drain pipe spool group 2A — Sea chest & strainer room No. 3 | 0d | 2026-08-12 | 2026-08-15 |  |  |  | Pipefitting [35 h]; Rigging & Weight Handling [9 h] |
| A38120 |  | Lay-up & drain valve bank 4B — Reactor Compartment No. 2 – upper level | 0d | 2026-08-12 | 2026-08-15 |  |  |  | Pipefitting [53 h] |
| A45690 |  | Lay-up & drain valve bank 2C (5-130-1-Q) | 0d | 2026-08-12 | 2026-08-16 |  |  |  | Pipefitting [106 h] |
| A38330 |  | Lay-up & drain pipe spool group 4C — Reactor auxiliaries room No. 2 | 0d | 2026-08-12 | 2026-08-21 |  |  |  | Pipefitting [58 h] |
| A46440 |  | Fab & fit valve bank 7A — Main Machinery Room No. 3 – lower level | 0d | 2026-08-12 | 2026-08-21 | A46430 FS+2.4d |  |  | Pipefitting [243 h] |
| A37450 |  | Cut out drain riser 3B — Main Machinery Room No. 2 – upper level | 0d | 2026-08-12 | 2026-08-18 | A37440 |  |  | Pipefitting [107 h] |
| A38060 |  | Lay-up & drain valve bank 5A — Reactor Compartment No. 2 – upper level | 0d | 2026-08-12 | 2026-08-25 |  |  |  | Pipefitting [272 h] |
| A54820 |  | Fab & fit pipe spool group 4B — Reactor compartment No. 1 inner-bottom void | 0d | 2026-08-13 | 2026-08-26 | A54810 |  |  | Pipefitting [165 h] |
| A28150 |  | Lay-up & drain valve bank 7D — Air conditioning plant No. 1 | 0d | 2026-08-13 | 2026-08-21 |  |  |  | Pipefitting [71 h] |
| A50780 |  | Cut out valve bank 2D — Sea chest & strainer room No. 4 | 0d | 2026-08-13 | 2026-08-20 | A50770 |  |  | Pipefitting [122 h] |
| A37000 |  | Cut out valve bank 9A — Reactor auxiliaries room No. 1 | 0d | 2026-08-13 | 2026-08-25 | A36990 |  |  | Pipefitting [239 h] |
| A45580 |  | Lay-up & drain drain riser 3A — Seawater service pump room No. 1 | 0d | 2026-08-13 | 2026-08-25 |  |  |  | Pipefitting [236 h] |
| A49910 |  | Lay-up & drain valve bank 3C (6-100-1-Q) | 0d | 2026-08-14 | 2026-08-24 |  |  |  | Pipefitting [193 h] |
| A54760 |  | Fab & fit drain riser 1A — Reactor compartment No. 1 inner-bottom void | 0d | 2026-08-14 | 2026-08-23 | A54750 |  |  | Pipefitting [151 h] |
| A54860 |  | Lay-up & drain drain riser 4A — Reactor compartment No. 2 inner-bottom void | 0d | 2026-08-15 | 2026-08-25 |  |  |  | Pipefitting [82 h] |
| A30090 |  | Lay-up & drain pipe spool group 9A — AC Plant No. 2 Machinery Room | 0d | 2026-08-15 | 2026-08-21 |  |  |  | Pipefitting [70 h]; Rigging & Weight Handling [18 h] |
| A45200 |  | Lay-up & drain pipe spool group 6B (5-96-0-E) | 0d | 2026-08-15 | 2026-08-21 |  |  |  | Pipefitting [40 h] |
| A38940 |  | Weld out pipe spool group 4C — Evaporator room No. 2 | 0d | 2026-08-15 | 2026-08-26 | A38930 |  |  | Pipefitting [287 h] |
| A38970 |  | Lay-up & drain drain riser 1D — Evaporator room No. 2 | 0d | 2026-08-16 | 2026-08-28 |  |  |  | Pipefitting [126 h]; Rigging & Weight Handling [32 h] |
| A50360 |  | Cut out pipe spool group 2A — Sea chest & strainer room No. 3 | 0d | 2026-08-16 | 2026-08-26 | A50350 |  |  | Pipefitting [59 h] |
| A29980 |  | Cut out pipe spool group 7D (3-172-1-E) | 0d | 2026-08-17 | 2026-08-29 | A29970 FS+0.8d |  |  | Pipefitting [217 h] |
| A28580 |  | Weld out pipe spool group 9B — Air conditioning plant No. 2 | 0d | 2026-08-17 | 2026-08-29 | A28570 FS+2.4d |  |  | Pipefitting [300 h] |
| A36880 |  | Lay-up & drain drain riser 5B (4-116-0-E) | 0d | 2026-08-17 | 2026-08-25 |  |  |  | Pipefitting [165 h] |
| A45700 |  | Cut out valve bank 2C (5-130-1-Q) | 0d | 2026-08-17 | 2026-08-22 | A45690 FS+0.8d |  |  | Pipefitting [33 h] |
| A38130 |  | Cut out valve bank 4B — Reactor Compartment No. 2 – upper level | 0d | 2026-08-17 | 2026-08-21 | A38120 |  |  | Pipefitting [101 h] |
| A39470 |  | Fab & fit drain riser 4A — Ship's service turbine generator room No. 3 | 0d | 2026-08-18 | 2026-08-21 | A39460 SS+2.4d |  |  | Pipefitting [92 h] |
| A30210 |  | Cut out pipe spool group 2C — AC Plant No. 2 Machinery Room | 0d | 2026-08-18 | 2026-08-27 | A30200 |  |  | Pipefitting [106 h] |
| A36130 |  | Weld out valve bank 1A — Main Machinery Room No. 1 – upper level | 0d | 2026-08-18 | 2026-08-22 | A36120 FS+2.4d |  |  | Pipefitting [85 h] |
| A50130 |  | Lay-up & drain pipe spool group 6D — Sea chest & strainer room No. 2 | 0d | 2026-08-19 | 2026-08-24 |  |  |  | Pipefitting [37 h] |
| A30030 |  | Lay-up & drain pipe spool group 2E — Air conditioning plant No. 3 | 0d | 2026-08-19 | 2026-08-26 |  |  |  | Pipefitting [128 h] |
| A39090 |  | Fab & fit drain riser 1B — Main Machinery Room No. 3 – upper level | 0d | 2026-08-19 | 2026-08-29 | A39080 SS+2.4d |  |  | Pipefitting [338 h] |
| A49890 |  | Hydro test valve bank 1B (6-100-1-Q) | 0d | 2026-08-20 | 2026-08-30 | A49880 FS+0.8d |  |  | Pipefitting [306 h] |
| A37460 |  | Fab & fit drain riser 3B — Main Machinery Room No. 2 – upper level | 0d | 2026-08-20 | 2026-08-31 | A37450 FS+0.8d |  |  | Pipefitting [270 h] |
| A37850 |  | Lay-up & drain valve bank 4B — Forced Draft Blower Room No. 3 | 0d | 2026-08-20 | 2026-08-29 |  |  |  | Pipefitting [94 h]; Rigging & Weight Handling [24 h] |
| A29910 |  | Lay-up & drain valve bank 9C — Air conditioning plant No. 3 | 0d | 2026-08-21 | 2026-08-30 |  |  |  | Pipefitting [245 h] |
| A50790 |  | Fab & fit valve bank 2D — Sea chest & strainer room No. 4 | 0d | 2026-08-21 | 2026-08-27 | A50780 |  |  | Pipefitting [93 h] |

| ID | Activity | Duration | Start | Finish | Predecessors | Resources |
| --- | --- | --- | --- | --- | --- | --- |
| A45210 | Cut out pipe spool group 6B (5-96-0-E) | 0d | 2026-08-21 | 2026-08-28 | A45200 FS+2.4d | Pipefitting [140 h] |
| A30100 | Cut out pipe spool group 9A — AC Plant No. 2 Machinery Room | 0d | 2026-08-22 | 2026-08-27 | A30090 FS+2.4d | Pipefitting [129 h] |
| A50630 | Fab & fit valve bank 2A (6-180-2-Q) | 0d | 2026-08-23 | 2026-09-01 | A50620 | Pipefitting [75 h] |
| A38340 | Cut out pipe spool group 4C — Reactor auxiliaries room No. 2 | 0d | 2026-08-23 | 2026-09-02 | A38330 FS+0.8d | Pipefitting [154 h] |
| A28160 | Cut out valve bank 7D — Air conditioning plant No. 1 | 0d | 2026-08-23 | 2026-08-30 | A28150 | Pipefitting [85 h] |
| A45710 | Fab & fit valve bank 2C (5-130-1-Q) | 0d | 2026-08-23 | 2026-08-27 | A45700 | Pipefitting [49 h] |
| A38140 | Fab & fit valve bank 4B — Reactor Compartment No. 2 – upper level | 0d | 2026-08-23 | 2026-08-31 | A38130 SS+7.2d | Pipefitting [165 h] |
| A36140 | Hydro test valve bank 1A — Main Machinery Room No. 1 – upper level | 0d | 2026-08-24 | 2026-08-28 | A36130 SS+7.2d | Pipefitting [60 h] |
| A45820 | Cut out drain riser 9E (5-130-1-Q) | 0d | 2026-08-24 | 2026-09-04 | A45810 | Pipefitting [291 h] |
| A39480 | Weld out drain riser 4A — Ship's service turbine generator room No. 3 | 0d | 2026-08-24 | 2026-09-02 | A39470 | Pipefitting [83 h] |
| A45970 | Cut out valve bank 9C — Main Machinery Room No. 2 – lower level | 0d | 2026-08-24 | 2026-08-30 | A45960 | Pipefitting [35 h] |
| A46450 | Weld out valve bank 7A — Main Machinery Room No. 3 – lower level | 0d | 2026-08-24 | 2026-09-06 | A46440 | Pipefitting [196 h] |
| A50140 | Cut out pipe spool group 6D — Sea chest & strainer room No. 2 | 0d | 2026-08-24 | 2026-09-04 | A50130 | Pipefitting [262 h] |
| A49920 | Cut out valve bank 3C (6-100-1-Q) | 0d | 2026-08-24 | 2026-09-04 | A49910 FS+2.4d | Pipefitting [158 h] |
| A50880 | Cut out drain riser 4A — Void No. 1 | 0d | 2026-08-24 | 2026-08-31 | A50870 FS+2.4d | Pipefitting [188 h] |
| A54770 | Weld out drain riser 1A — Reactor compartment No. 1 inner-bottom void | 0d | 2026-08-25 | 2026-09-08 | A54760 | Pipefitting [111 h] |
| A36890 | Cut out drain riser 5B (4-116-0-E) | 0d | 2026-08-26 | 2026-09-01 | A36880 | Pipefitting [92 h] |
| A38070 | Cut out valve bank 5A — Reactor Compartment No. 2 – upper level | 0d | 2026-08-27 | 2026-09-01 | A38060 | Pipefitting [67 h] |
| A37010 | Fab & fit valve bank 9A — Reactor auxiliaries room No. 1 | 0d | 2026-08-27 | 2026-09-08 | A37000 FS+2.4d | Pipefitting [404 h] |
| A45720 | Weld out valve bank 2C (5-130-1-Q) | 0d | 2026-08-27 | 2026-09-06 | A45710 | Pipefitting [83 h] |
| A54870 | Cut out drain riser 4A — Reactor compartment No. 2 inner-bottom void | 0d | 2026-08-28 | 2026-09-07 | A54860 FS+0.8d | Pipefitting [264 h] |
| A45590 | Cut out drain riser 3A — Seawater service pump room No. 1 | 0d | 2026-08-28 | 2026-08-30 | A45580 FS+0.8d | Pipefitting [79 h] |
| A30040 | Cut out pipe spool group 2E — Air conditioning plant No. 3 | 0d | 2026-08-28 | 2026-09-11 | A30030 FS+0.8d | Pipefitting [99 h] |
| A30110 | Fab & fit pipe spool group 9A — AC Plant No. 2 Machinery Room | 0d | 2026-08-28 | 2026-09-08 | A30100 FS+2.4d | Pipefitting [343 h] |
| A36150 | Flush & restore valve bank 1A — Main Machinery Room No. 1 – upper level | 0d | 2026-08-28 | 2026-09-08 | A36140 | Pipefitting [132 h] |
| A38950 | Hydro test pipe spool group 4C — Evaporator room No. 2 | 0d | 2026-08-28 | 2026-09-06 | A38940 FS+0.8d | Pipefitting [246 h] |
| A50800 | Weld out valve bank 2D — Sea chest & strainer room No. 4 | 0d | 2026-08-28 | 2026-09-10 | A50790 | Pipefitting [157 h] |
| A50370 | Fab & fit pipe spool group 2A — Sea chest & strainer room No. 3 | 0d | 2026-08-28 | 2026-09-05 | A50360 FS+0.8d | Pipefitting [67 h] |
| A54830 | Weld out pipe spool group 4B — Reactor compartment No. 1 inner-bottom void | 0d | 2026-08-28 | 2026-09-06 | A54820 FS+0.8d | Pipefitting [166 h] |
| A30220 | Fab & fit pipe spool group 2C — AC Plant No. 2 Machinery Room | 0d | 2026-08-30 | 2026-09-03 | A30210 | Pipefitting [25 h] |
| A45220 | Fab & fit pipe spool group 6B (5-96-0-E) | 0d | 2026-08-30 | 2026-09-04 | A45210 FS+2.4d | Pipefitting [150 h] |
| A28590 | Hydro test pipe spool group 9B — Air conditioning plant No. 2 | 0d | 2026-08-30 | 2026-09-08 | A28580 | Pipefitting [72 h] |
| A45600 | Fab & fit drain riser 3A — Seawater service pump room No. 1 | 0d | 2026-08-30 | 2026-09-13 | A45590 FS+2.4d | Pipefitting [196 h] |
| A49900 | Flush & restore valve bank 1B (6-100-1-Q) | 0d | 2026-08-31 | 2026-09-09 | A49890 FS+2.4d | Pipefitting [303 h] |
| A38980 | Cut out drain riser 1D — Evaporator room No. 2 | 0d | 2026-08-31 | 2026-09-14 | A38970 | Pipefitting [181 h] |
| A45980 | Fab & fit valve bank 9C — Main Machinery Room No. 2 – lower level | 0d | 2026-08-31 | 2026-09-12 | A45970 FS+2.4d | Pipefitting [323 h] |
| A37860 | Cut out valve bank 4B — Forced Draft Blower Room No. 3 | 0d | 2026-08-31 | 2026-09-09 | A37850 | Pipefitting [128 h] |
| A29990 | Fab & fit pipe spool group 7D (3-172-1-E) | 0d | 2026-08-31 | 2026-09-12 | A29980 FS+0.8d | Pipefitting [167 h] |
| A37470 | Weld out drain riser 3B — Main Machinery Room No. 2 – upper level | 0d | 2026-09-01 | 2026-09-11 | A37460 FS+0.8d | Pipefitting [271 h] |
| A39100 | Weld out drain riser 1B — Main Machinery Room No. 3 – upper level | 0d | 2026-09-01 | 2026-09-10 | A39090 | Pipefitting [248 h] |
| A38080 | Fab & fit valve bank 5A — Reactor Compartment No. 2 – upper level | 0d | 2026-09-01 | 2026-09-07 | A38070 SS+7.2d | Pipefitting [47 h] |
| A29920 | Cut out valve bank 9C — Air conditioning plant No. 3 | 0d | 2026-09-01 | 2026-09-09 | A29910 | Pipefitting [65 h] |
| A38150 | Weld out valve bank 4B — Reactor Compartment No. 2 – upper level | 0d | 2026-09-01 | 2026-09-10 | A38140 FS+2.4d | Pipefitting [289 h] |
| A50640 | Weld out valve bank 2A (6-180-2-Q) | 0d | 2026-09-02 | 2026-09-04 | A50630 FS+2.4d | Pipefitting [38 h] |
| A50890 | Fab & fit drain riser 4A — Void No. 1 | 0d | 2026-09-02 | 2026-09-13 | A50880 | Pipefitting [285 h] |
| A28170 | Fab & fit valve bank 7D — Air conditioning plant No. 1 | 0d | 2026-09-02 | 2026-09-07 | A28160 FS+0.8d | Pipefitting [95 h] |
| A39490 | Hydro test drain riser 4A — Ship's service turbine generator room No. 3 | 0d | 2026-09-02 | 2026-09-14 | A39480 FS+2.4d | Pipefitting [136 h]; Rigging & Weight Handling [35 h] |
| A38350 | Fab & fit pipe spool group 4C — Reactor auxiliaries room No. 2 | 0d | 2026-09-03 | 2026-09-14 | A38340 | Pipefitting [391 h] |
| A30230 | Weld out pipe spool group 2C — AC Plant No. 2 Machinery Room | 0d | 2026-09-04 | 2026-09-13 | A30220 FS+0.8d | Pipefitting [81 h] |
| A36900 | Fab & fit drain riser 5B (4-116-0-E) | 0d | 2026-09-04 | 2026-09-12 | A36890 FS+0.8d | Pipefitting [206 h] |
| A49930 | Fab & fit valve bank 3C (6-100-1-Q) | 0d | 2026-09-04 | 2026-09-14 | A49920 | Pipefitting [208 h]; Rigging & Weight Handling [53 h] |
| A50380 | Weld out pipe spool group 2A — Sea chest & strainer room No. 3 | 0d | 2026-09-05 | 2026-09-18 | A50370 FS+0.8d | Pipefitting [305 h]; Rigging & Weight Handling [77 h] |
| A50650 | Hydro test valve bank 2A (6-180-2-Q) | 0d | 2026-09-05 | 2026-09-08 | A50640 FS+0.8d | Pipefitting [42 h] |
| A50150 | Fab & fit pipe spool group 6D — Sea chest & strainer room No. 2 | 0d | 2026-09-06 | 2026-09-14 | A50140 | Pipefitting [48 h] |
| A45230 | Weld out pipe spool group 6B (5-96-0-E) | 0d | 2026-09-06 | 2026-09-13 | A45220 | Pipefitting [178 h] |
| A54840 | Hydro test pipe spool group 4B — Reactor compartment No. 1 inner-bottom void | 0d | 2026-09-07 | 2026-09-18 | A54830 FS+2.4d | Pipefitting [298 h] |
| A45830 | Fab & fit drain riser 9E (5-130-1-Q) | 0d | 2026-09-07 | 2026-09-20 | A45820 | Pipefitting [225 h] |
| A38090 | Weld out valve bank 5A — Reactor Compartment No. 2 – upper level | 0d | 2026-09-07 | 2026-09-10 | A38080 FS+2.4d | Pipefitting [79 h] |
| A38960 | Flush & restore pipe spool group 4C — Evaporator room No. 2 | 0d | 2026-09-07 | 2026-09-19 | A38950 | Pipefitting [77 h]; Rigging & Weight Handling [20 h] |
| A46460 | Hydro test valve bank 7A — Main Machinery Room No. 3 – lower level | 0d | 2026-09-07 | 2026-09-16 | A46450 | Pipefitting [67 h] |
| A54880 | Fab & fit drain riser 4A — Reactor compartment No. 2 inner-bottom void | 0d | 2026-09-08 | 2026-09-14 | A54870 SS+2.4d | Pipefitting [148 h] |
| A45730 | Hydro test valve bank 2C (5-130-1-Q) | 0d | 2026-09-08 | 2026-09-16 | A45720 SS+2.4d | Pipefitting [110 h] |
| A30120 | Weld out pipe spool group 9A — AC Plant No. 2 Machinery Room | 0d | 2026-09-09 | 2026-09-21 | A30110 | Pipefitting [182 h] |
| A50660 | Flush & restore valve bank 2A (6-180-2-Q) | 0d | 2026-09-09 | 2026-09-12 | A50650 | Pipefitting [54 h] |
| A37020 | Weld out valve bank 9A — Reactor auxiliaries room No. 1 | 0d | 2026-09-10 | 2026-09-24 | A37010 FS+0.8d | Pipefitting [282 h] |
| A28180 | Weld out valve bank 7D — Air conditioning plant No. 1 | 0d | 2026-09-10 | 2026-09-19 | A28170 | Pipefitting [253 h] |
| A50810 | Hydro test valve bank 2D — Sea chest & strainer room No. 4 | 0d | 2026-09-10 | 2026-09-13 | A50800 FS+2.4d | Pipefitting [39 h]; Rigging & Weight Handling [10 h] |
| A54780 | Hydro test drain riser 1A — Reactor compartment No. 1 inner-bottom void | 0d | 2026-09-10 | 2026-09-14 | A54770 SS+7.2d | Pipefitting [59 h] |
| A37870 | Fab & fit valve bank 4B — Forced Draft Blower Room No. 3 | 0d | 2026-09-10 | 2026-09-16 | A37860 | Pipefitting [111 h] |
| A28600 | Flush & restore pipe spool group 9B — Air conditioning plant No. 2 | 0d | 2026-09-11 | 2026-09-16 | A28590 FS+2.4d | Pipefitting [138 h] |

| ID | Activity | Duration | Start | Finish | Predecessors | Resources |
| --- | --- | --- | --- | --- | --- | --- |
| A39110 | Hydro test drain riser 1B — Main Machinery Room No. 3 – upper level | 0d | 2026-09-11 | 2026-09-24 | A39100 SS+4.8d | Pipefitting [240 h]; Rigging & Weight Handling [60 h] |
| A29930 | Fab & fit valve bank 9C — Air conditioning plant No. 3 | 0d | 2026-09-12 | 2026-09-19 | A29920 SS+4.8d | Pipefitting [90 h] |
| A38100 | Hydro test valve bank 5A — Reactor Compartment No. 2 – upper level | 0d | 2026-09-12 | 2026-09-22 | A38090 FS+0.8d | Pipefitting [82 h] |
| A38160 | Hydro test valve bank 4B — Reactor Compartment No. 2 – upper level | 0d | 2026-09-12 | 2026-09-16 | A38150 | Pipefitting [42 h] |
| A37480 | Hydro test drain riser 3B — Main Machinery Room No. 2 – upper level | 0d | 2026-09-12 | 2026-09-15 | A37470 FS-1.6d | Pipefitting [20 h] |
| A36910 | Weld out drain riser 5B (4-116-0-E) | 0d | 2026-09-13 | 2026-09-17 | A36900 FS+0.8d | Pipefitting [61 h] |
| A30000 | Weld out pipe spool group 7D (3-172-1-E) | 0d | 2026-09-13 | 2026-09-25 | A29990 | Pipefitting [323 h] |
| A30050 | Fab & fit pipe spool group 2E — Air conditioning plant No. 3 | 0d | 2026-09-13 | 2026-09-23 | A30040 | Pipefitting [220 h] |
| A45610 | Weld out drain riser 3A — Seawater service pump room No. 1 | 0d | 2026-09-14 | 2026-09-17 | A45600 | Pipefitting [123 h] |
| A50160 | Weld out pipe spool group 6D — Sea chest & strainer room No. 2 | 0d | 2026-09-14 | 2026-09-16 | A50150 FS+0.8d | Pipefitting [74 h] |
| A45240 | Hydro test pipe spool group 6B (5-96-0-E) | 0d | 2026-09-14 | 2026-09-17 | A45230 | Pipefitting [37 h] |
| A30240 | Hydro test pipe spool group 2C — AC Plant No. 2 Machinery Room | 0d | 2026-09-14 | 2026-09-18 | A30230 FS+2.4d | Pipefitting [77 h]; Rigging & Weight Handling [20 h] |
| A54790 | Flush & restore drain riser 1A — Reactor compartment No. 1 inner-bottom void | 0d | 2026-09-14 | 2026-09-23 | A54780 FS+0.8d | Pipefitting [55 h] |
| A38990 | Fab & fit drain riser 1D — Evaporator room No. 2 | 0d | 2026-09-14 | 2026-09-22 | A38980 | Pipefitting [53 h] |
| A45990 | Weld out valve bank 9C — Main Machinery Room No. 2 – lower level | 0d | 2026-09-15 | 2026-09-21 | A45980 | Pipefitting [165 h] |
| A49940 | Weld out valve bank 3C (6-100-1-Q) | 0d | 2026-09-15 | 2026-09-24 | A49930 FS+2.4d | Pipefitting [112 h] |
| A50820 | Flush & restore valve bank 2D — Sea chest & strainer room No. 4 | 0d | 2026-09-15 | 2026-09-24 | A50810 FS+2.4d | Pipefitting [51 h] |
| A50900 | Weld out drain riser 4A — Void No. 1 | 0d | 2026-09-16 | 2026-09-27 | A50890 FS+0.8d | Pipefitting [133 h] |
| A38360 | Weld out pipe spool group 4C — Reactor auxiliaries room No. 2 | 0d | 2026-09-16 | 2026-09-25 | A38350 | Pipefitting [115 h] |
| A39500 | Flush & restore drain riser 4A — Ship's service turbine generator room No. 3 | 0d | 2026-09-16 | 2026-09-26 | A39490 SS+2.4d | Pipefitting [144 h]; Rigging & Weight Handling [37 h] |
| A54890 | Weld out drain riser 4A — Reactor compartment No. 2 inner-bottom void | 0d | 2026-09-16 | 2026-09-21 | A54880 FS+0.8d | Pipefitting [61 h] |
| A38170 | Flush & restore valve bank 4B — Reactor Compartment No. 2 – upper level | 0d | 2026-09-17 | 2026-09-24 | A38160 | Pipefitting [197 h] |
| A50170 | Hydro test pipe spool group 6D — Sea chest & strainer room No. 2 | 0d | 2026-09-17 | 2026-09-20 | A50160 FS+0.8d | Pipefitting [94 h] |
| A46470 | Flush & restore valve bank 7A — Main Machinery Room No. 3 – lower level | 0d | 2026-09-17 | 2026-09-21 | A46460 FS+0.8d | Pipefitting [74 h] |
| A37880 | Weld out valve bank 4B — Forced Draft Blower Room No. 3 | 0d | 2026-09-18 | 2026-09-30 | A37870 FS+2.4d | Pipefitting [190 h] |
| A45250 | Flush & restore pipe spool group 6B (5-96-0-E) | 0d | 2026-09-18 | 2026-09-20 | A45240 FS+0.8d | Pipefitting [32 h] |
| A37490 | Flush & restore drain riser 3B — Main Machinery Room No. 2 – upper level | 0d | 2026-09-18 | 2026-09-22 | A37480 | Pipefitting [21 h] |
| A54850 | Flush & restore pipe spool group 4B — Reactor compartment No. 1 inner-bottom void | 0d | 2026-09-18 | 2026-09-23 | A54840 | Pipefitting [39 h] |
| A45620 | Hydro test drain riser 3A — Seawater service pump room No. 1 | 0d | 2026-09-18 | 2026-09-22 | A45610 FS+0.8d | Pipefitting [46 h]; Rigging & Weight Handling [12 h] |
| A45740 | Flush & restore valve bank 2C (5-130-1-Q) | 0d | 2026-09-18 | 2026-10-01 | A45730 | Pipefitting [384 h] |
| A36920 | Hydro test drain riser 5B (4-116-0-E) | 0d | 2026-09-19 | 2026-09-21 | A36910 FS+2.4d | Pipefitting [24 h] |
| A30250 | Flush & restore pipe spool group 2C — AC Plant No. 2 Machinery Room | 0d | 2026-09-19 | 2026-10-02 | A30240 FS+0.8d | Pipefitting [80 h] |
| A28190 | Hydro test valve bank 7D — Air conditioning plant No. 1 | 0d | 2026-09-20 | 2026-09-23 | A28180 | Pipefitting [27 h] |
| A50390 | Hydro test pipe spool group 2A — Sea chest & strainer room No. 3 | 0d | 2026-09-20 | 2026-10-03 | A50380 | Pipefitting [81 h] |
| A30130 | Hydro test pipe spool group 9A — AC Plant No. 2 Machinery Room | 0d | 2026-09-22 | 2026-10-02 | A30120 FS+0.8d | Pipefitting [191 h] |
| A29940 | Weld out valve bank 9C — Air conditioning plant No. 3 | 0d | 2026-09-22 | 2026-10-03 | A29930 | Pipefitting [194 h] |
| A50180 | Flush & restore pipe spool group 6D — Sea chest & strainer room No. 2 | 0d | 2026-09-22 | 2026-09-26 | A50170 FS+0.8d | Pipefitting [38 h] |
| A39000 | Weld out drain riser 1D — Evaporator room No. 2 | 0d | 2026-09-23 | 2026-10-05 | A38990 | Pipefitting [82 h] |
| A46000 | Hydro test valve bank 9C — Main Machinery Room No. 2 – lower level | 0d | 2026-09-23 | 2026-09-29 | A45990 | Pipefitting [40 h] |
| A45840 | Weld out drain riser 9E (5-130-1-Q) | 0d | 2026-09-23 | 2026-10-04 | A45830 | Pipefitting [83 h] |
| A45630 | Flush & restore drain riser 3A — Seawater service pump room No. 1 | 0d | 2026-09-23 | 2026-10-06 | A45620 | Pipefitting [344 h] |
| A36930 | Flush & restore drain riser 5B (4-116-0-E) | 0d | 2026-09-23 | 2026-10-03 | A36920 FS+0.8d | Pipefitting [326 h] |
| A54900 | Hydro test drain riser 4A — Reactor compartment No. 2 inner-bottom void | 0d | 2026-09-24 | 2026-10-03 | A54890 FS+0.8d | Pipefitting [164 h] |
| A37030 | Hydro test valve bank 9A — Reactor auxiliaries room No. 1 | 0d | 2026-09-24 | 2026-09-27 | A37020 FS+0.8d | Pipefitting [36 h] |
| A30060 | Weld out pipe spool group 2E — Air conditioning plant No. 3 | 0d | 2026-09-24 | 2026-10-04 | A30050 SS+7.2d | Pipefitting [250 h] |
| A38110 | Flush & restore valve bank 5A — Reactor Compartment No. 2 – upper level | 0d | 2026-09-25 | 2026-09-29 | A38100 FS+2.4d | Pipefitting [159 h] |
| A49950 | Hydro test valve bank 3C (6-100-1-Q) | 0d | 2026-09-25 | 2026-10-06 | A49940 SS+4.8d | Pipefitting [88 h] |
| A28200 | Flush & restore valve bank 7D — Air conditioning plant No. 1 | 0d | 2026-09-25 | 2026-10-02 | A28190 | Pipefitting [47 h] |
| A30010 | Hydro test pipe spool group 7D (3-172-1-E) | 0d | 2026-09-26 | 2026-10-06 | A30000 FS+2.4d | Pipefitting [119 h] |
| A39120 | Flush & restore drain riser 1B — Main Machinery Room No. 3 – upper level | 0d | 2026-09-26 | 2026-09-29 | A39110 | Pipefitting [23 h] |
| A38370 | Hydro test pipe spool group 4C — Reactor auxiliaries room No. 2 | 0d | 2026-09-27 | 2026-09-29 | A38360 FS+0.8d | Pipefitting [18 h] |
| A37040 | Flush & restore valve bank 9A — Reactor auxiliaries room No. 1 | 0d | 2026-09-30 | 2026-10-10 | A37030 | Pipefitting [61 h] |
| A50910 | Hydro test drain riser 4A — Void No. 1 | 0d | 2026-09-30 | 2026-10-07 | A50900 | Pipefitting [230 h] |
| A38380 | Flush & restore pipe spool group 4C — Reactor auxiliaries room No. 2 | 0d | 2026-10-01 | 2026-10-10 | A38370 FS+0.8d | Pipefitting [232 h]; Rigging & Weight Handling [59 h] |
| A46010 | Flush & restore valve bank 9C — Main Machinery Room No. 2 – lower level | 0d | 2026-10-02 | 2026-10-16 | A46000 | Pipefitting [469 h] |
| A37890 | Hydro test valve bank 4B — Forced Draft Blower Room No. 3 | 0d | 2026-10-02 | 2026-10-11 | A37880 FS+2.4d | Pipefitting [51 h] |
| A30140 | Flush & restore pipe spool group 9A — AC Plant No. 2 Machinery Room | 0d | 2026-10-03 | 2026-10-14 | A30130 | Pipefitting [166 h] |
| A50400 | Flush & restore pipe spool group 2A — Sea chest & strainer room No. 3 | 0d | 2026-10-04 | 2026-10-12 | A50390 | Pipefitting [225 h] |
| A29950 | Hydro test valve bank 9C — Air conditioning plant No. 3 | 0d | 2026-10-04 | 2026-10-15 | A29940 | Pipefitting [201 h] |
| A54910 | Flush & restore drain riser 4A — Reactor compartment No. 2 inner-bottom void | 0d | 2026-10-05 | 2026-10-08 | A54900 FS+2.4d | Pipefitting [84 h] |
| A45850 | Hydro test drain riser 9E (5-130-1-Q) | 0d | 2026-10-05 | 2026-10-12 | A45840 | Pipefitting [116 h] |
| A30070 | Hydro test pipe spool group 2E — Air conditioning plant No. 3 | 0d | 2026-10-06 | 2026-10-09 | A30060 | Pipefitting [53 h] |
| A30020 | Flush & restore pipe spool group 7D (3-172-1-E) | 0d | 2026-10-07 | 2026-10-18 | A30010 FS+0.8d | Pipefitting [69 h] |
| A39010 | Hydro test drain riser 1D — Evaporator room No. 2 | 0d | 2026-10-07 | 2026-10-10 | A39000 FS+2.4d | Pipefitting [61 h] |
| A49960 | Flush & restore valve bank 3C (6-100-1-Q) | 0d | 2026-10-08 | 2026-10-15 | A49950 FS+0.8d | Pipefitting [52 h] |
| A39020 | Flush & restore drain riser 1D — Evaporator room No. 2 | 0d | 2026-10-10 | 2026-10-20 | A39010 | Pipefitting [84 h] |
| A50920 | Flush & restore drain riser 4A — Void No. 1 | 0d | 2026-10-10 | 2026-10-15 | A50910 | Pipefitting [195 h] |
| A30080 | Flush & restore pipe spool group 2E — Air conditioning plant No. 3 | 0d | 2026-10-12 | 2026-10-25 | A30070 | Pipefitting [238 h]; Rigging & Weight Handling [60 h] |
| A37900 | Flush & restore valve bank 4B — Forced Draft Blower Room No. 3 | 0d | 2026-10-13 | 2026-10-20 | A37890 FS+0.8d | Pipefitting [118 h] |
| A45860 | Flush & restore drain riser 9E (5-130-1-Q) | 0d | 2026-10-13 | 2026-10-27 | A45850 | Pipefitting [213 h] |

| ID | WBS | Activity | Duration | Start | Finish | Predecessors | Complete | Remaining | Resources |
| --- | --- | --- | --- | --- | --- | --- | --- | --- | --- |
| A29960 |  | Flush & restore valve bank 9C — Air conditioning plant No. 3 | 0d | 2026-10-16 | 2026-10-21 | A29950 FS+2.4d |  |  | Pipefitting [36 h] |
|  | 508 | **508 Insulation & Lagging** |  | 2026-07-27 | 2026-10-06 |  |  |  |  |
| A39030 |  | Strip lagging — hull board field 7A — Main Machinery Room No. 3 – upper level | 0d | 2026-07-27 A | 2026-07-30 A |  | 100% |  | Insulation & Lagging [26 h]; Rigging & Weight Handling [7 h] |
| A38450 |  | Strip lagging — lagging section 7B — Pump Room No. 2 | 0d | 2026-07-29 A | 2026-08-04 A |  | 100% |  | Insulation & Lagging [46 h] |
| A28260 |  | Strip lagging — lagging section 5A — Third deck trunk No. 3 | 0d | 2026-07-29 A | 2026-08-10 A |  | 100% |  | Insulation & Lagging [157 h] |
| A28660 |  | Strip lagging — lagging section 3D (3-128-2-E) | 0d | 2026-07-31 A | 2026-08-07 A |  | 100% |  | Insulation & Lagging [34 h]; Rigging & Weight Handling [9 h] |
| A28950 |  | Strip lagging — lagging section 9A — Third deck trunk No. 4 | 0d | 2026-07-31 A | 2026-08-08 A |  | 100% |  | Insulation & Lagging [238 h] |
| A22320 |  | Strip lagging — hull board field 8C — Main galley | 0d | 2026-08-01 A | 2026-08-11 |  | 50% | 0d | Insulation & Lagging [172 h] |
| A39040 |  | Asbestos survey — hull board field 7A — Main Machinery Room No. 3 – upper level | 0d | 2026-08-02 A | 2026-08-15 | A39030 | 58% | 0d | Insulation & Lagging [167 h] |
| A22280 |  | Strip lagging — hull board field 4B — Main galley | 0d | 2026-08-02 A | 2026-08-09 A |  | 100% |  | Insulation & Lagging [44 h] |
| A23540 |  | Strip lagging — hull board field 9A — Barber shop | 0d | 2026-08-02 A | 2026-08-10 |  | 85% | 0d | Insulation & Lagging [136 h] |
| A36260 |  | Strip lagging — lagging section 2D — Main Machinery Room No. 1 – upper level | 0d | 2026-08-03 A | 2026-08-06 A |  | 100% |  | Insulation & Lagging [51 h] |
| A37400 |  | Strip lagging — hull board field 3A — Main Machinery Room No. 2 – upper level | 0d | 2026-08-04 A | 2026-08-09 A |  | 100% |  | Insulation & Lagging [105 h] |
| A38460 |  | Asbestos survey — lagging section 7B — Pump Room No. 2 | 0d | 2026-08-04 A | 2026-08-08 A | A38450 FS+2.4d | 100% |  | Insulation & Lagging [21 h] |
| A37150 |  | Strip lagging — lagging section 5B (4-120-4-Q) | 0d | 2026-08-06 A | 2026-08-15 |  | 26% | 0d | Insulation & Lagging [58 h] |
| A23500 |  | Strip lagging — lagging section 1A — Dental | 0d | 2026-08-06 A | 2026-08-09 A |  | 100% |  | Insulation & Lagging [61 h] |
| A28350 |  | Strip lagging — hull board field 1A — Supply department office | 0d | 2026-08-07 A | 2026-08-17 |  | 23% | 0d | Insulation & Lagging [172 h]; Rigging & Weight Handling [43 h] |
| A36270 |  | Asbestos survey — lagging section 2D — Main Machinery Room No. 1 – upper level | 0d | 2026-08-08 A | 2026-08-11 | A36260 SS+7.2d | 62% | 0d | Insulation & Lagging [125 h] |
| A28670 |  | Asbestos survey — lagging section 3D (3-128-2-E) | 0d | 2026-08-08 A | 2026-08-15 | A28660 | 27% | 0d | Insulation & Lagging [152 h]; Rigging & Weight Handling [38 h] |
| A23510 |  | Asbestos survey — lagging section 1A — Dental | 0d | 2026-08-09 A | 2026-08-14 | A23500 FS+0.8d | 12% | 0d | Insulation & Lagging [42 h] |
| A22780 |  | Strip lagging — hull board field 6A — Second deck passage No. 6 | 0d | 2026-08-10 A | 2026-08-23 |  | 1% | 0d | Insulation & Lagging [207 h] |
| A28960 |  | Asbestos survey — lagging section 9A — Third deck trunk No. 4 | 0d | 2026-08-10 | 2026-08-16 | A28950 |  |  | Insulation & Lagging [80 h] |
| A23550 |  | Asbestos survey — hull board field 9A — Barber shop | 0d | 2026-08-10 | 2026-08-20 | A23540 FS+0.8d |  |  | Insulation & Lagging [70 h] |
| A38470 |  | Re-insulate lagging section 7B — Pump Room No. 2 | 0d | 2026-08-10 | 2026-08-15 | A38460 |  |  | Insulation & Lagging [140 h] |
| A45870 |  | Strip lagging — lagging section 3A — Main Machinery Room No. 2 – lower level | 0d | 2026-08-11 | 2026-08-23 |  |  |  | Insulation & Lagging [279 h] |
| A22870 |  | Strip lagging — hull board field 4A — Intensive care & ward | 0d | 2026-08-11 | 2026-08-19 |  |  |  | Insulation & Lagging [135 h] |
| A28270 |  | Asbestos survey — lagging section 5A — Third deck trunk No. 3 | 0d | 2026-08-11 | 2026-08-19 | A28260 |  |  | Insulation & Lagging [134 h] |
| A22330 |  | Asbestos survey — hull board field 8C — Main galley | 0d | 2026-08-11 | 2026-08-25 | A22320 FS+2.4d |  |  | Insulation & Lagging [210 h]; Rigging & Weight Handling [53 h] |
| A37410 |  | Asbestos survey — hull board field 3A — Main Machinery Room No. 2 – upper level | 0d | 2026-08-12 | 2026-08-19 | A37400 |  |  | Insulation & Lagging [118 h] |
| A22290 |  | Asbestos survey — hull board field 4B — Main galley | 0d | 2026-08-12 | 2026-08-16 | A22280 |  |  | Insulation & Lagging [57 h]; Rigging & Weight Handling [15 h] |
| A50570 |  | Strip lagging — lagging section 5E — Sea chest & strainer room No. 3 | 0d | 2026-08-12 | 2026-08-14 |  |  |  | Insulation & Lagging [63 h] |
| A23890 |  | Strip lagging — lagging section 8A — Wardroom Terminal Space | 0d | 2026-08-12 | 2026-08-22 |  |  |  | Insulation & Lagging [335 h] |
| A36280 |  | Re-insulate lagging section 2D — Main Machinery Room No. 1 – upper level | 0d | 2026-08-13 | 2026-08-27 | A36270 |  |  | Insulation & Lagging [162 h] |
| A24080 |  | Strip lagging — hull board field 1A — Crew berthing No. 2 | 0d | 2026-08-13 | 2026-08-24 |  |  |  | Insulation & Lagging [357 h] |
| A30310 |  | Strip lagging — lagging section 2B — CPO Living Space | 0d | 2026-08-13 | 2026-08-17 |  |  |  | Insulation & Lagging [84 h] |
| A23520 |  | Re-insulate lagging section 1A — Dental | 0d | 2026-08-14 | 2026-08-17 | A23510 |  |  | Insulation & Lagging [29 h]; Rigging & Weight Handling [8 h] |
| A30350 |  | Strip lagging — hull board field 7C — CPO Living Space | 0d | 2026-08-15 | 2026-08-26 |  |  |  | Insulation & Lagging [191 h] |
| A39050 |  | Re-insulate hull board field 7A — Main Machinery Room No. 3 – upper level | 0d | 2026-08-15 | 2026-08-25 | A39040 |  |  | Insulation & Lagging [91 h] |
| A28680 |  | Re-insulate lagging section 3D (3-128-2-E) | 0d | 2026-08-15 | 2026-08-21 | A28670 FS+0.8d |  |  | Insulation & Lagging [94 h] |
| A50580 |  | Asbestos survey — lagging section 5E — Sea chest & strainer room No. 3 | 0d | 2026-08-17 | 2026-08-30 | A50570 SS+7.2d |  |  | Insulation & Lagging [125 h] |
| A37160 |  | Asbestos survey — lagging section 5B (4-120-4-Q) | 0d | 2026-08-17 | 2026-08-20 | A37150 FS+2.4d |  |  | Insulation & Lagging [39 h] |
| A22300 |  | Re-insulate hull board field 4B — Main galley | 0d | 2026-08-17 | 2026-08-30 | A22290 SS+7.2d |  |  | Insulation & Lagging [146 h] |
| A23530 |  | Sheathing & finish lagging section 1A — Dental | 0d | 2026-08-18 | 2026-08-31 | A23520 FS+0.8d |  |  | Insulation & Lagging [81 h]; Rigging & Weight Handling [21 h] |
| A38480 |  | Sheathing & finish lagging section 7B — Pump Room No. 2 | 0d | 2026-08-18 | 2026-08-26 | A38470 FS+2.4d |  |  | Insulation & Lagging [106 h] |
| A28970 |  | Re-insulate lagging section 9A — Third deck trunk No. 4 | 0d | 2026-08-18 | 2026-08-23 | A28960 FS+2.4d |  |  | Insulation & Lagging [39 h] |
| A29100 |  | Strip lagging — hull board field 6B (3-152-0-Q) | 0d | 2026-08-19 | 2026-08-28 |  |  |  | Insulation & Lagging [119 h] |
| A30320 |  | Asbestos survey — lagging section 2B — CPO Living Space | 0d | 2026-08-20 | 2026-09-02 | A30310 |  |  | Insulation & Lagging [65 h]; Rigging & Weight Handling [17 h] |
| A50830 |  | Strip lagging — hull board field 5E — Sea chest & strainer room No. 4 | 0d | 2026-08-20 | 2026-09-02 |  |  |  | Insulation & Lagging [180 h] |
| A28360 |  | Asbestos survey — hull board field 1A — Supply department office | 0d | 2026-08-20 | 2026-09-01 | A28350 |  |  | Insulation & Lagging [73 h] |
| A30390 |  | Strip lagging — lagging section 8A — Third deck trunk No. 5 | 0d | 2026-08-21 | 2026-09-03 |  |  |  | Insulation & Lagging [205 h] |
| A22880 |  | Asbestos survey — hull board field 4A — Intensive care & ward | 0d | 2026-08-21 | 2026-08-28 | A22870 FS+0.8d |  |  | Insulation & Lagging [79 h]; Rigging & Weight Handling [20 h] |
| A23560 |  | Re-insulate hull board field 9A — Barber shop | 0d | 2026-08-21 | 2026-09-03 | A23550 |  |  | Insulation & Lagging [112 h] |
| A37170 |  | Re-insulate lagging section 5B (4-120-4-Q) | 0d | 2026-08-22 | 2026-08-27 | A37160 |  |  | Insulation & Lagging [95 h]; Rigging & Weight Handling [24 h] |
| A37420 |  | Re-insulate hull board field 3A — Main Machinery Room No. 2 – upper level | 0d | 2026-08-22 | 2026-09-05 | A37410 FS+0.8d |  |  | Insulation & Lagging [505 h] |
| A28280 |  | Re-insulate lagging section 5A — Third deck trunk No. 3 | 0d | 2026-08-22 | 2026-08-28 | A28270 |  |  | Insulation & Lagging [44 h] |
| A28690 |  | Sheathing & finish lagging section 3D (3-128-2-E) | 0d | 2026-08-23 | 2026-09-02 | A28680 |  |  | Insulation & Lagging [154 h] |
| A45880 |  | Asbestos survey — lagging section 3A — Main Machinery Room No. 2 – lower level | 0d | 2026-08-24 | 2026-09-03 | A45870 |  |  | Insulation & Lagging [54 h] |
| A22790 |  | Asbestos survey — hull board field 6A — Second deck passage No. 6 | 0d | 2026-08-24 | 2026-08-28 | A22780 FS+2.4d |  |  | Insulation & Lagging [56 h] |
| A23900 |  | Asbestos survey — lagging section 8A — Wardroom Terminal Space | 0d | 2026-08-25 | 2026-08-30 | A23890 FS+2.4d |  |  | Insulation & Lagging [148 h] |
| A22340 |  | Re-insulate hull board field 8C — Main galley | 0d | 2026-08-26 | 2026-09-07 | A22330 FS+2.4d |  |  | Insulation & Lagging [109 h] |
| A28980 |  | Sheathing & finish lagging section 9A — Third deck trunk No. 4 | 0d | 2026-08-26 | 2026-09-07 | A28970 |  |  | Insulation & Lagging [165 h] |
| A24090 |  | Asbestos survey — hull board field 1A — Crew berthing No. 2 | 0d | 2026-08-26 | 2026-09-02 | A24080 |  |  | Insulation & Lagging [50 h] |
| A30360 |  | Asbestos survey — hull board field 7C — CPO Living Space | 0d | 2026-08-27 | 2026-08-29 | A30350 FS+2.4d |  |  | Insulation & Lagging [63 h] |
| A37180 |  | Sheathing & finish lagging section 5B (4-120-4-Q) | 0d | 2026-08-27 | 2026-09-04 | A37170 FS+0.8d |  |  | Insulation & Lagging [98 h] |
| A39060 |  | Sheathing & finish hull board field 7A — Main Machinery Room No. 3 – upper level | 0d | 2026-08-28 | 2026-09-05 | A39050 |  |  | Insulation & Lagging [121 h] |
| A29110 |  | Asbestos survey — hull board field 6B (3-152-0-Q) | 0d | 2026-08-28 | 2026-09-10 | A29100 FS+2.4d |  |  | Insulation & Lagging [237 h] |
| A36290 |  | Sheathing & finish lagging section 2D — Main Machinery Room No. 1 – upper level | 0d | 2026-08-29 | 2026-09-09 | A36280 |  |  | Insulation & Lagging [400 h] |
| A22890 |  | Re-insulate hull board field 4A — Intensive care & ward | 0d | 2026-08-29 | 2026-09-07 | A22880 FS+2.4d |  |  | Insulation & Lagging [185 h] |
| A28290 |  | Sheathing & finish lagging section 5A — Third deck trunk No. 3 | 0d | 2026-08-30 | 2026-09-12 | A28280 FS+0.8d |  |  | Insulation & Lagging [84 h] |
| A30370 |  | Re-insulate hull board field 7C — CPO Living Space | 0d | 2026-08-30 | 2026-09-13 | A30360 FS+2.4d |  |  | Insulation & Lagging [101 h] |

| ID | Activity | Duration | Start | Finish | Predecessors | Resources |
| --- | --- | --- | --- | --- | --- | --- |
| A22310 | Sheathing & finish hull board field 4B — Main galley | 0d | 2026-08-30 | 2026-09-09 | A22300 | Insulation & Lagging [174 h] |
| A23910 | Re-insulate lagging section 8A — Wardroom Terminal Space | 0d | 2026-08-30 | 2026-09-08 | A23900 FS+2.4d | Insulation & Lagging [232 h] |
| A22800 | Re-insulate hull board field 6A — Second deck passage No. 6 | 0d | 2026-08-31 | 2026-09-04 | A22790 FS+2.4d | Insulation & Lagging [120 h] |
| A50590 | Re-insulate lagging section 5E — Sea chest & strainer room No. 3 | 0d | 2026-09-02 | 2026-09-11 | A50580 FS+0.8d | Insulation & Lagging [74 h] |
| A28370 | Re-insulate hull board field 1A — Supply department office | 0d | 2026-09-03 | 2026-09-14 | A28360 FS+2.4d | Insulation & Lagging [90 h] |
| A45890 | Re-insulate lagging section 3A — Main Machinery Room No. 2 – lower level | 0d | 2026-09-03 | 2026-09-14 | A45880 FS+0.8d | Insulation & Lagging [89 h] |
| A30330 | Re-insulate lagging section 2B — CPO Living Space | 0d | 2026-09-04 | 2026-09-14 | A30320 | Insulation & Lagging [80 h] |
| A24100 | Re-insulate hull board field 1A — Crew berthing No. 2 | 0d | 2026-09-04 | 2026-09-17 | A24090 | Insulation & Lagging [449 h] |
| A50840 | Asbestos survey — hull board field 5E — Sea chest & strainer room No. 4 | 0d | 2026-09-04 | 2026-09-14 | A50830 | Insulation & Lagging [232 h] |
| A30400 | Asbestos survey — lagging section 8A — Third deck trunk No. 5 | 0d | 2026-09-04 | 2026-09-10 | A30390 | Insulation & Lagging [52 h]; Rigging & Weight Handling [13 h] |
| A37430 | Sheathing & finish hull board field 3A — Main Machinery Room No. 2 – upper level | 0d | 2026-09-05 | 2026-09-16 | A37420 | Insulation & Lagging [135 h] |
| A23570 | Sheathing & finish hull board field 9A — Barber shop | 0d | 2026-09-06 | 2026-09-11 | A23560 FS+2.4d | Insulation & Lagging [193 h] |
| A22810 | Sheathing & finish hull board field 6A — Second deck passage No. 6 | 0d | 2026-09-07 | 2026-09-20 | A22800 FS+0.8d | Insulation & Lagging [109 h] |
| A22900 | Sheathing & finish hull board field 4A — Intensive care & ward | 0d | 2026-09-07 | 2026-09-10 | A22890 FS+2.4d | Insulation & Lagging [21 h] |
| A22350 | Sheathing & finish hull board field 8C — Main galley | 0d | 2026-09-09 | 2026-09-12 | A22340 FS+0.8d | Insulation & Lagging [48 h] |
| A30410 | Re-insulate lagging section 8A — Third deck trunk No. 5 | 0d | 2026-09-11 | 2026-09-15 | A30400 FS+2.4d | Insulation & Lagging [86 h] |
| A23920 | Sheathing & finish lagging section 8A — Wardroom Terminal Space | 0d | 2026-09-11 | 2026-09-14 | A23910 FS+2.4d | Insulation & Lagging [81 h] |
| A29120 | Re-insulate hull board field 6B (3-152-0-Q) | 0d | 2026-09-13 | 2026-09-19 | A29110 FS+0.8d | Insulation & Lagging [146 h] |
| A50600 | Sheathing & finish lagging section 5E — Sea chest & strainer room No. 3 | 0d | 2026-09-13 | 2026-09-20 | A50590 | Insulation & Lagging [133 h] |
| A28380 | Sheathing & finish hull board field 1A — Supply department office | 0d | 2026-09-14 | 2026-09-21 | A28370 FS+2.4d | Insulation & Lagging [153 h] |
| A45900 | Sheathing & finish lagging section 3A — Main Machinery Room No. 2 – lower level | 0d | 2026-09-15 | 2026-09-27 | A45890 | Insulation & Lagging [338 h] |
| A30380 | Sheathing & finish hull board field 7C — CPO Living Space | 0d | 2026-09-16 | 2026-09-22 | A30370 | Insulation & Lagging [50 h] |
| A30340 | Sheathing & finish lagging section 2B — CPO Living Space | 0d | 2026-09-16 | 2026-09-28 | A30330 FS+2.4d | Insulation & Lagging [78 h] |
| A30420 | Sheathing & finish lagging section 8A — Third deck trunk No. 5 | 0d | 2026-09-16 | 2026-09-20 | A30410 | Insulation & Lagging [39 h] |
| A50850 | Re-insulate hull board field 5E — Sea chest & strainer room No. 4 | 0d | 2026-09-17 | 2026-09-22 | A50840 | Insulation & Lagging [45 h] |
| A24110 | Sheathing & finish hull board field 1A — Crew berthing No. 2 | 0d | 2026-09-18 | 2026-09-29 | A24100 | Insulation & Lagging [146 h] |
| A29130 | Sheathing & finish hull board field 6B (3-152-0-Q) | 0d | 2026-09-20 | 2026-09-25 | A29120 FS+0.8d | Insulation & Lagging [71 h] |
| A50860 | Sheathing & finish hull board field 5E — Sea chest & strainer room No. 4 | 0d | 2026-09-25 | 2026-10-06 | A50850 | Insulation & Lagging [204 h] |

| ID | WBS | Activity | Duration | Start | Finish | Predecessors | Complete | Remaining | Resources |
| --- | --- | --- | --- | --- | --- | --- | --- | --- | --- |
|  | 512 | **512 Ventilation & Uptakes** |  | 2026-07-27 | 2026-10-23 |  |  |  |  |
| A22070 |  | Survey & mark exhaust riser 5A (2-96-0-T) | 0d | 2026-07-27 A | 2026-07-31 A |  | 100% |  | Sheet Metal / HVAC [88 h] |
| A38390 |  | Survey & mark exhaust riser 5A — Pump Room No. 2 | 0d | 2026-07-28 A | 2026-08-11 |  | 95% | 0d | Sheet Metal / HVAC [111 h] |
| A46190 |  | Survey & mark vent branch 9C — Seawater service pump room No. 2 | 0d | 2026-07-29 A | 2026-07-31 A |  | 100% |  | Sheet Metal / HVAC [71 h] |
| A28990 |  | Survey & mark supply trunk 7B — Third deck trunk No. 4 | 0d | 2026-07-30 A | 2026-08-07 A |  | 100% |  | Sheet Metal / HVAC [43 h]; Rigging & Weight Handling [11 h] |
| A38690 |  | Survey & mark vent branch 5A — Cable Trunk & IC Space | 0d | 2026-07-31 A | 2026-08-12 |  | 74% | 0d | Sheet Metal / HVAC [297 h] |
| A46200 |  | Remove & tag vent branch 9C — Seawater service pump room No. 2 | 0d | 2026-07-31 A | 2026-08-07 A | A46190 | 100% |  | Sheet Metal / HVAC [189 h] |
| A46130 |  | Survey & mark exhaust riser 7B — Seawater service pump room No. 2 | 0d | 2026-08-01 A | 2026-08-06 A |  | 100% |  | Sheet Metal / HVAC [34 h]; Rigging & Weight Handling [9 h] |
| A22080 |  | Remove & tag exhaust riser 5A (2-96-0-T) | 0d | 2026-08-01 A | 2026-08-11 | A22070 FS+0.8d | 88% | 0d | Sheet Metal / HVAC [152 h] |
| A37610 |  | Survey & mark exhaust riser 9E — Main Machinery Room No. 2 – upper level | 0d | 2026-08-01 A | 2026-08-06 A |  | 100% |  | Sheet Metal / HVAC [107 h] |
| A23740 |  | Survey & mark vent branch 3A — Chief petty officer mess – aft | 0d | 2026-08-02 A | 2026-08-10 A |  | 100% |  | Sheet Metal / HVAC [126 h] |
| A27990 |  | Survey & mark vent branch 1A — Air conditioning plant No. 1 | 0d | 2026-08-02 A | 2026-08-06 A |  | 100% |  | Sheet Metal / HVAC [25 h] |
| A46070 |  | Survey & mark supply trunk 4A — Seawater service pump room No. 2 | 0d | 2026-08-04 A | 2026-08-07 A |  | 100% |  | Sheet Metal / HVAC [58 h] |
| A46300 |  | Survey & mark vent branch 2E — Seawater service pump room No. 2 | 0d | 2026-08-05 A | 2026-08-11 |  | 63% | 0d | Sheet Metal / HVAC [59 h] |
| A45140 |  | Survey & mark exhaust riser 7A — Main Machinery Room No. 1 – lower level | 0d | 2026-08-05 A | 2026-08-14 |  | 53% | 0d | Sheet Metal / HVAC [60 h] |
| A37620 |  | Remove & tag exhaust riser 9E — Main Machinery Room No. 2 – upper level | 0d | 2026-08-06 A | 2026-08-15 | A37610 | 36% | 0d | Sheet Metal / HVAC [66 h] |
| A28000 |  | Remove & tag vent branch 1A — Air conditioning plant No. 1 | 0d | 2026-08-06 A | 2026-08-11 | A27990 | 79% | 0d | Sheet Metal / HVAC [73 h] |
| A45420 |  | Survey & mark vent branch 7F — Main Machinery Room No. 1 – lower level | 0d | 2026-08-07 A | 2026-08-11 |  | 40% | 0d | Sheet Metal / HVAC [95 h] |
| A46140 |  | Remove & tag exhaust riser 7B — Seawater service pump room No. 2 | 0d | 2026-08-08 A | 2026-08-20 | A46130 | 12% | 0d | Sheet Metal / HVAC [369 h] |
| A46080 |  | Remove & tag supply trunk 4A — Seawater service pump room No. 2 | 0d | 2026-08-08 A | 2026-08-12 | A46070 | 36% | 0d | Sheet Metal / HVAC [95 h] |
| A29000 |  | Remove & tag supply trunk 7B — Third deck trunk No. 4 | 0d | 2026-08-09 A | 2026-08-12 | A28990 FS+2.4d | 18% | 0d | Sheet Metal / HVAC [22 h] |
| A23750 |  | Remove & tag vent branch 3A — Chief petty officer mess – aft | 0d | 2026-08-10 | 2026-08-23 | A23740 |  |  | Sheet Metal / HVAC [316 h] |
| A46210 |  | Fab replacement duct — vent branch 9C — Seawater service pump room No. 2 | 0d | 2026-08-10 | 2026-08-14 | A46200 |  |  | Sheet Metal / HVAC [109 h] |
| A37500 |  | Survey & mark exhaust riser 6C — Main Machinery Room No. 2 – upper level | 0d | 2026-08-10 | 2026-08-17 |  |  |  | Sheet Metal / HVAC [107 h] |
| A29540 |  | Survey & mark supply trunk 7B — AC Plant No. 2 | 0d | 2026-08-11 | 2026-08-13 |  |  |  | Sheet Metal / HVAC [12 h] |
| A38400 |  | Remove & tag exhaust riser 5A — Pump Room No. 2 | 0d | 2026-08-11 | 2026-08-21 | A38390 FS+2.4d |  |  | Sheet Metal / HVAC [170 h] |
| A50190 |  | Survey & mark supply trunk 1E — Sea chest & strainer room No. 2 | 0d | 2026-08-11 | 2026-08-25 |  |  |  | Sheet Metal / HVAC [120 h] |
| A37190 |  | Survey & mark supply trunk 1C — Fan Room | 0d | 2026-08-11 | 2026-08-22 |  |  |  | Sheet Metal / HVAC [187 h] |
| A22620 |  | Survey & mark exhaust riser 2B — Sick bay | 0d | 2026-08-11 | 2026-08-21 |  |  |  | Sheet Metal / HVAC [117 h] |
| A46360 |  | Survey & mark supply trunk 5F — Seawater service pump room No. 2 | 0d | 2026-08-12 | 2026-08-24 |  |  |  | Sheet Metal / HVAC [321 h] |
| A45430 |  | Remove & tag vent branch 7F — Main Machinery Room No. 1 – lower level | 0d | 2026-08-12 | 2026-08-16 | A45420 |  |  | Sheet Metal / HVAC [66 h] |
| A46090 |  | Fab replacement duct — supply trunk 4A — Seawater service pump room No. 2 | 0d | 2026-08-12 | 2026-08-25 | A46080 |  |  | Sheet Metal / HVAC [62 h]; Rigging & Weight Handling [16 h] |
| A28010 |  | Fab replacement duct — vent branch 1A — Air conditioning plant No. 1 | 0d | 2026-08-13 | 2026-08-19 | A28000 SS+7.2d |  |  | Sheet Metal / HVAC [78 h] |
| A22090 |  | Fab replacement duct — exhaust riser 5A (2-96-0-T) | 0d | 2026-08-13 | 2026-08-20 | A22080 FS+0.8d |  |  | Sheet Metal / HVAC [56 h] |
| A29550 |  | Remove & tag supply trunk 7B — AC Plant No. 2 | 0d | 2026-08-13 | 2026-08-22 | A29540 |  |  | Sheet Metal / HVAC [136 h] |
| A38700 |  | Remove & tag vent branch 5A — Cable Trunk & IC Space | 0d | 2026-08-14 | 2026-08-23 | A38690 |  |  | Sheet Metal / HVAC [120 h] |
| A23680 |  | Survey & mark exhaust riser 8B — Second deck passage No. 7 | 0d | 2026-08-14 | 2026-08-16 |  |  |  | Sheet Metal / HVAC [63 h] |
| A46310 |  | Remove & tag vent branch 2E — Seawater service pump room No. 2 | 0d | 2026-08-14 | 2026-08-21 | A46300 FS+2.4d |  |  | Sheet Metal / HVAC [98 h] |
| A29010 |  | Fab replacement duct — supply trunk 7B — Third deck trunk No. 4 | 0d | 2026-08-14 | 2026-08-21 | A29000 |  |  | Sheet Metal / HVAC [47 h] |
| A38850 |  | Survey & mark vent branch 2B (4-166-1-E) | 0d | 2026-08-14 | 2026-08-27 |  |  |  | Sheet Metal / HVAC [326 h] |
| A46220 |  | Install vent branch 9C — Seawater service pump room No. 2 | 0d | 2026-08-15 | 2026-08-28 | A46210 FS+0.8d |  |  | Sheet Metal / HVAC [420 h] |
| A28440 |  | Survey & mark exhaust riser 7C — Supply department office | 0d | 2026-08-15 | 2026-08-26 |  |  |  | Sheet Metal / HVAC [73 h] |
| A39560 |  | Survey & mark vent branch 4C — Ship's service turbine generator room No. 3 | 0d | 2026-08-16 | 2026-08-26 |  |  |  | Sheet Metal / HVAC [86 h] |
| A45150 |  | Remove & tag exhaust riser 7A — Main Machinery Room No. 1 – lower level | 0d | 2026-08-16 | 2026-08-24 | A45140 FS+0.8d |  |  | Sheet Metal / HVAC [63 h] |
| A37630 |  | Fab replacement duct — exhaust riser 9E — Main Machinery Room No. 2 – upper level | 0d | 2026-08-16 | 2026-08-24 | A37620 FS+2.4d |  |  | Sheet Metal / HVAC [130 h] |
| A45360 |  | Survey & mark vent branch 4E (5-96-0-E) | 0d | 2026-08-16 | 2026-08-24 |  |  |  | Sheet Metal / HVAC [55 h] |
| A39240 |  | Survey & mark supply trunk 2E — Main Machinery Room No. 3 – upper level | 0d | 2026-08-17 | 2026-08-27 |  |  |  | Sheet Metal / HVAC [241 h] |
| A37510 |  | Remove & tag exhaust riser 6C — Main Machinery Room No. 2 – upper level | 0d | 2026-08-17 | 2026-08-28 | A37500 |  |  | Sheet Metal / HVAC [92 h] |
| A23690 |  | Remove & tag exhaust riser 8B — Second deck passage No. 7 | 0d | 2026-08-17 | 2026-08-30 | A23680 |  |  | Sheet Metal / HVAC [335 h] |
| A24120 |  | Survey & mark exhaust riser 9B — Crew berthing No. 2 | 0d | 2026-08-18 | 2026-08-26 |  |  |  | Sheet Metal / HVAC [198 h]; Rigging & Weight Handling [50 h] |
| A45440 |  | Fab replacement duct — vent branch 7F — Main Machinery Room No. 1 – lower level | 0d | 2026-08-18 | 2026-08-21 | A45430 FS+2.4d |  |  | Sheet Metal / HVAC [24 h] |
| A22130 |  | Survey & mark exhaust riser 2A — Damage control repair locker No. 3 | 0d | 2026-08-18 | 2026-08-23 |  |  |  | Sheet Metal / HVAC [110 h] |
| A22560 |  | Survey & mark supply trunk 1A — Sick bay | 0d | 2026-08-19 | 2026-08-29 |  |  |  | Sheet Metal / HVAC [62 h] |
| A30430 |  | Survey & mark exhaust riser 6B — Third deck trunk No. 5 | 0d | 2026-08-19 | 2026-08-28 |  |  |  | Sheet Metal / HVAC [236 h] |
| A29600 |  | Survey & mark exhaust riser 6C — AC Plant No. 2 | 0d | 2026-08-19 | 2026-08-26 |  |  |  | Sheet Metal / HVAC [172 h] |
| A39130 |  | Survey & mark vent branch 1C — Main Machinery Room No. 3 – upper level | 0d | 2026-08-20 | 2026-08-25 |  |  |  | Sheet Metal / HVAC [71 h] |
| A45750 |  | Survey & mark supply trunk 9D — Seawater service pump room No. 1 | 0d | 2026-08-20 | 2026-09-01 |  |  |  | Sheet Metal / HVAC [158 h]; Rigging & Weight Handling [40 h] |
| A28020 |  | Install vent branch 1A — Air conditioning plant No. 1 | 0d | 2026-08-20 | 2026-09-02 | A28010 FS+2.4d |  |  | Sheet Metal / HVAC [306 h] |
| A50510 |  | Survey & mark supply trunk 2D — Sea chest & strainer room No. 3 | 0d | 2026-08-21 | 2026-08-29 |  |  |  | Sheet Metal / HVAC [109 h] |
| A49970 |  | Survey & mark exhaust riser 4A — Sea chest & strainer room No. 2 | 0d | 2026-08-21 | 2026-08-29 |  |  |  | Sheet Metal / HVAC [48 h]; Rigging & Weight Handling [12 h] |
| A46320 |  | Fab replacement duct — vent branch 2E — Seawater service pump room No. 2 | 0d | 2026-08-21 | 2026-08-27 | A46310 |  |  | Sheet Metal / HVAC [88 h] |
| A38410 |  | Fab replacement duct — exhaust riser 5A — Pump Room No. 2 | 0d | 2026-08-22 | 2026-09-04 | A38400 |  |  | Sheet Metal / HVAC [254 h] |
| A22100 |  | Install exhaust riser 5A (2-96-0-T) | 0d | 2026-08-22 | 2026-08-31 | A22090 FS+2.4d |  |  | Sheet Metal / HVAC [83 h] |
| A46150 |  | Fab replacement duct — exhaust riser 7B — Seawater service pump room No. 2 | 0d | 2026-08-22 | 2026-08-25 | A46140 |  |  | Sheet Metal / HVAC [32 h] |
| A29560 |  | Fab replacement duct — supply trunk 7B — AC Plant No. 2 | 0d | 2026-08-22 | 2026-09-04 | A29550 FS+0.8d |  |  | Sheet Metal / HVAC [163 h] |
| A37200 |  | Remove & tag supply trunk 1C — Fan Room | 0d | 2026-08-23 | 2026-08-27 | A37190 |  |  | Sheet Metal / HVAC [33 h] |
| A29020 |  | Install supply trunk 7B — Third deck trunk No. 4 | 0d | 2026-08-23 | 2026-08-26 | A29010 |  |  | Sheet Metal / HVAC [35 h] |
| A45450 |  | Install vent branch 7F — Main Machinery Room No. 1 – lower level | 0d | 2026-08-24 | 2026-09-01 | A45440 FS-4.8d |  |  | Sheet Metal / HVAC [75 h] |
| A23760 |  | Fab replacement duct — vent branch 3A — Chief petty officer mess – aft | 0d | 2026-08-24 | 2026-09-03 | A23750 |  |  | Sheet Metal / HVAC [80 h] |
| A22630 |  | Remove & tag exhaust riser 2B — Sick bay | 0d | 2026-08-24 | 2026-09-01 | A22620 |  |  | Sheet Metal / HVAC [91 h] |

| ID | Activity | Duration | Start | Finish | Predecessors | Resources |
| --- | --- | --- | --- | --- | --- | --- |
| A38710 | Fab replacement duct — vent branch 5A — Cable Trunk & IC Space | 0d | 2026-08-25 | 2026-09-02 | A38700 FS-1.6d | Sheet Metal / HVAC [65 h] |
| A45370 | Remove & tag vent branch 4E (5-96-0-E) | 0d | 2026-08-25 | 2026-09-02 | A45360 | Sheet Metal / HVAC [257 h] |
| A37640 | Install exhaust riser 9E — Main Machinery Room No. 2 – upper level | 0d | 2026-08-25 | 2026-09-02 | A37630 | Sheet Metal / HVAC [58 h] |
| A46370 | Remove & tag supply trunk 5F — Seawater service pump room No. 2 | 0d | 2026-08-25 | 2026-09-05 | A46360 FS+0.8d | Sheet Metal / HVAC [152 h] |
| A45160 | Fab replacement duct — exhaust riser 7A — Main Machinery Room No. 1 – lower level | 0d | 2026-08-25 | 2026-08-30 | A45150 FS+0.8d | Sheet Metal / HVAC [81 h] |
| A22140 | Remove & tag exhaust riser 2A — Damage control repair locker No. 3 | 0d | 2026-08-26 | 2026-08-30 | A22130 | Sheet Metal / HVAC [26 h] |
| A39140 | Remove & tag vent branch 1C — Main Machinery Room No. 3 – upper level | 0d | 2026-08-26 | 2026-09-07 | A39130 | Sheet Metal / HVAC [137 h] |
| A29030 | Duct leak test supply trunk 7B — Third deck trunk No. 4 | 0d | 2026-08-26 | 2026-09-08 | A29020 | Sheet Metal / HVAC [237 h] |
| A50200 | Remove & tag supply trunk 1E — Sea chest & strainer room No. 2 | 0d | 2026-08-27 | 2026-09-04 | A50190 SS+4.8d | Sheet Metal / HVAC [46 h] |
| A39570 | Remove & tag vent branch 4C — Ship's service turbine generator room No. 3 | 0d | 2026-08-27 | 2026-09-04 | A39560 FS+0.8d | Sheet Metal / HVAC [62 h] |
| A38860 | Remove & tag vent branch 2B (4-166-1-E) | 0d | 2026-08-27 | 2026-08-31 | A38850 FS+0.8d | Sheet Metal / HVAC [86 h] |
| A29610 | Remove & tag exhaust riser 6C — AC Plant No. 2 | 0d | 2026-08-28 | 2026-09-02 | A29600 FS+0.8d | Sheet Metal / HVAC [36 h] |
| A39250 | Remove & tag supply trunk 2E — Main Machinery Room No. 3 – upper level | 0d | 2026-08-28 | 2026-09-07 | A39240 | Sheet Metal / HVAC [129 h] |
| A24130 | Remove & tag exhaust riser 9B — Crew berthing No. 2 | 0d | 2026-08-28 | 2026-09-10 | A24120 FS+0.8d | Sheet Metal / HVAC [182 h] |
| A37210 | Fab replacement duct — supply trunk 1C — Fan Room | 0d | 2026-08-28 | 2026-08-30 | A37200 | Sheet Metal / HVAC [13 h] |
| A46100 | Install supply trunk 4A — Seawater service pump room No. 2 | 0d | 2026-08-28 | 2026-08-30 | A46090 FS+0.8d | Sheet Metal / HVAC [77 h] |
| A46160 | Install exhaust riser 7B — Seawater service pump room No. 2 | 0d | 2026-08-28 | 2026-08-30 | A46150 FS+0.8d | Sheet Metal / HVAC [20 h] |
| A28450 | Remove & tag exhaust riser 7C — Supply department office | 0d | 2026-08-28 | 2026-08-30 | A28440 | Sheet Metal / HVAC [29 h] |
| A46330 | Install vent branch 2E — Seawater service pump room No. 2 | 0d | 2026-08-28 | 2026-09-04 | A46320 | Sheet Metal / HVAC [159 h] |
| A30440 | Remove & tag exhaust riser 6B — Third deck trunk No. 5 | 0d | 2026-08-28 | 2026-09-01 | A30430 | Sheet Metal / HVAC [93 h] |
| A22570 | Remove & tag supply trunk 1A — Sick bay | 0d | 2026-08-29 | 2026-09-07 | A22560 FS+0.8d | Sheet Metal / HVAC [255 h] |
| A46230 | Duct leak test vent branch 9C — Seawater service pump room No. 2 | 0d | 2026-08-29 | 2026-09-05 | A46220 FS+0.8d | Sheet Metal / HVAC [160 h] |
| A46110 | Duct leak test supply trunk 4A — Seawater service pump room No. 2 | 0d | 2026-08-30 | 2026-09-09 | A46100 SS+7.2d | Sheet Metal / HVAC [151 h]; Rigging & Weight Handling [38 h] |
| A49980 | Remove & tag exhaust riser 4A — Sea chest & strainer room No. 2 | 0d | 2026-08-30 | 2026-09-02 | A49970 | Sheet Metal / HVAC [70 h] |
| A37520 | Fab replacement duct — exhaust riser 6C — Main Machinery Room No. 2 – upper level | 0d | 2026-08-30 | 2026-09-12 | A37510 | Sheet Metal / HVAC [112 h] |
| A22150 | Fab replacement duct — exhaust riser 2A — Damage control repair locker No. 3 | 0d | 2026-08-30 | 2026-09-02 | A22140 FS+2.4d | Sheet Metal / HVAC [84 h] |
| A50520 | Remove & tag supply trunk 2D — Sea chest & strainer room No. 3 | 0d | 2026-08-31 | 2026-09-02 | A50510 | Sheet Metal / HVAC [34 h] |
| A22110 | Duct leak test exhaust riser 5A (2-96-0-T) | 0d | 2026-08-31 | 2026-09-13 | A22100 FS+2.4d | Sheet Metal / HVAC [89 h] |
| A37220 | Install supply trunk 1C — Fan Room | 0d | 2026-08-31 | 2026-09-06 | A37210 FS+0.8d | Sheet Metal / HVAC [157 h] |
| A38870 | Fab replacement duct — vent branch 2B (4-166-1-E) | 0d | 2026-09-01 | 2026-09-09 | A38860 FS+2.4d | Sheet Metal / HVAC [211 h] |
| A23700 | Fab replacement duct — exhaust riser 8B — Second deck passage No. 7 | 0d | 2026-09-01 | 2026-09-12 | A23690 | Sheet Metal / HVAC [207 h] |
| A46170 | Duct leak test exhaust riser 7B — Seawater service pump room No. 2 | 0d | 2026-09-02 | 2026-09-15 | A46160 FS+0.8d | Sheet Metal / HVAC [108 h] |
| A22640 | Fab replacement duct — exhaust riser 2B — Sick bay | 0d | 2026-09-02 | 2026-09-10 | A22630 | Sheet Metal / HVAC [71 h] |
| A45170 | Install exhaust riser 7A — Main Machinery Room No. 1 – lower level | 0d | 2026-09-02 | 2026-09-08 | A45160 | Sheet Metal / HVAC [177 h] |
| A30450 | Fab replacement duct — exhaust riser 6B — Third deck trunk No. 5 | 0d | 2026-09-02 | 2026-09-10 | A30440 | Sheet Metal / HVAC [217 h] |
| A28460 | Fab replacement duct — exhaust riser 7C — Supply department office | 0d | 2026-09-02 | 2026-09-09 | A28450 | Sheet Metal / HVAC [39 h] |
| A45460 | Duct leak test vent branch 7F — Main Machinery Room No. 1 – lower level | 0d | 2026-09-02 | 2026-09-09 | A45450 | Sheet Metal / HVAC [46 h] |
| A49990 | Fab replacement duct — exhaust riser 4A — Sea chest & strainer room No. 2 | 0d | 2026-09-02 | 2026-09-05 | A49980 | Sheet Metal / HVAC [41 h]; Rigging & Weight Handling [11 h] |
| A29620 | Fab replacement duct — exhaust riser 6C — AC Plant No. 2 | 0d | 2026-09-02 | 2026-09-06 | A29610 FS+0.8d | Sheet Metal / HVAC [29 h] |
| A45760 | Remove & tag supply trunk 9D — Seawater service pump room No. 1 | 0d | 2026-09-03 | 2026-09-10 | A45750 SS+4.8d | Sheet Metal / HVAC [44 h] |
| A38720 | Install vent branch 5A — Cable Trunk & IC Space | 0d | 2026-09-03 | 2026-09-09 | A38710 | Sheet Metal / HVAC [35 h] |
| A28030 | Duct leak test vent branch 1A — Air conditioning plant No. 1 | 0d | 2026-09-04 | 2026-09-10 | A28020 FS+0.8d | Sheet Metal / HVAC [50 h] |
| A37650 | Duct leak test exhaust riser 9E — Main Machinery Room No. 2 – upper level | 0d | 2026-09-04 | 2026-09-14 | A37640 FS+2.4d | Sheet Metal / HVAC [322 h] |
| A22160 | Install exhaust riser 2A — Damage control repair locker No. 3 | 0d | 2026-09-04 | 2026-09-17 | A22150 FS-4.8d | Sheet Metal / HVAC [474 h] |
| A45380 | Fab replacement duct — vent branch 4E (5-96-0-E) | 0d | 2026-09-05 | 2026-09-08 | A45370 FS+2.4d | Sheet Metal / HVAC [92 h] |
| A23770 | Install vent branch 3A — Chief petty officer mess – aft | 0d | 2026-09-05 | 2026-09-17 | A23760 | Sheet Metal / HVAC [149 h] |
| A50530 | Fab replacement duct — supply trunk 2D — Sea chest & strainer room No. 3 | 0d | 2026-09-05 | 2026-09-16 | A50520 | Sheet Metal / HVAC [158 h] |
| A50210 | Fab replacement duct — supply trunk 1E — Sea chest & strainer room No. 2 | 0d | 2026-09-05 | 2026-09-17 | A50200 FS+0.8d | Sheet Metal / HVAC [143 h] |
| A46240 | Close-out & QA vent branch 9C — Seawater service pump room No. 2 | 0d | 2026-09-05 | 2026-09-17 | A46230 | Sheet Metal / HVAC [352 h] |
| A39580 | Fab replacement duct — vent branch 4C — Ship's service turbine generator room No. 3 | 0d | 2026-09-06 | 2026-09-17 | A39570 FS+0.8d | Sheet Metal / HVAC [69 h]; Rigging & Weight Handling [18 h] |
| A29570 | Install supply trunk 7B — AC Plant No. 2 | 0d | 2026-09-06 | 2026-09-12 | A29560 SS+2.4d | Sheet Metal / HVAC [75 h] |
| A46340 | Duct leak test vent branch 2E — Seawater service pump room No. 2 | 0d | 2026-09-06 | 2026-09-13 | A46330 | Sheet Metal / HVAC [124 h] |
| A38420 | Install exhaust riser 5A — Pump Room No. 2 | 0d | 2026-09-06 | 2026-09-11 | A38410 | Sheet Metal / HVAC [98 h] |
| A29630 | Install exhaust riser 6C — AC Plant No. 2 | 0d | 2026-09-06 | 2026-09-13 | A29620 | Sheet Metal / HVAC [179 h] |
| A46380 | Fab replacement duct — supply trunk 5F — Seawater service pump room No. 2 | 0d | 2026-09-07 | 2026-09-20 | A46370 FS+2.4d | Sheet Metal / HVAC [73 h] |
| A22580 | Fab replacement duct — supply trunk 1A — Sick bay | 0d | 2026-09-07 | 2026-09-11 | A22570 | Sheet Metal / HVAC [58 h] |
| A50000 | Install exhaust riser 4A — Sea chest & strainer room No. 2 | 0d | 2026-09-07 | 2026-09-18 | A49990 | Sheet Metal / HVAC [164 h] |
| A39260 | Fab replacement duct — supply trunk 2E — Main Machinery Room No. 3 – upper level | 0d | 2026-09-08 | 2026-09-15 | A39250 | Sheet Metal / HVAC [47 h] |
| A37230 | Duct leak test supply trunk 1C — Fan Room | 0d | 2026-09-08 | 2026-09-13 | A37220 | Sheet Metal / HVAC [107 h] |
| A38730 | Duct leak test vent branch 5A — Cable Trunk & IC Space | 0d | 2026-09-09 | 2026-09-20 | A38720 | Sheet Metal / HVAC [228 h] |
| A29040 | Close-out & QA supply trunk 7B — Third deck trunk No. 4 | 0d | 2026-09-10 | 2026-09-12 | A29030 FS+0.8d | Sheet Metal / HVAC [44 h] |
| A45470 | Close-out & QA vent branch 7F — Main Machinery Room No. 1 – lower level | 0d | 2026-09-10 | 2026-09-20 | A45460 | Sheet Metal / HVAC [167 h] |
| A39150 | Fab replacement duct — vent branch 1C — Main Machinery Room No. 3 – upper level | 0d | 2026-09-10 | 2026-09-24 | A39140 | Sheet Metal / HVAC [261 h] |
| A28040 | Close-out & QA vent branch 1A — Air conditioning plant No. 1 | 0d | 2026-09-10 | 2026-09-14 | A28030 FS+0.8d | Sheet Metal / HVAC [76 h]; Rigging & Weight Handling [20 h] |
| A45390 | Install vent branch 4E (5-96-0-E) | 0d | 2026-09-10 | 2026-09-23 | A45380 FS+0.8d | Sheet Metal / HVAC [455 h] |
| A28470 | Install exhaust riser 7C — Supply department office | 0d | 2026-09-10 | 2026-09-23 | A28460 | Sheet Metal / HVAC [85 h] |
| A46120 | Close-out & QA supply trunk 4A — Seawater service pump room No. 2 | 0d | 2026-09-10 | 2026-09-22 | A46110 FS+0.8d | Sheet Metal / HVAC [180 h] |
| A45180 | Duct leak test exhaust riser 7A — Main Machinery Room No. 1 – lower level | 0d | 2026-09-11 | 2026-09-13 | A45170 | Sheet Metal / HVAC [38 h] |
| A38880 | Install vent branch 2B (4-166-1-E) | 0d | 2026-09-11 | 2026-09-21 | A38870 | Sheet Metal / HVAC [166 h] |
| A22650 | Install exhaust riser 2B — Sick bay | 0d | 2026-09-12 | 2026-09-15 | A22640 FS+0.8d | Sheet Metal / HVAC [58 h] |

| ID | Activity | Duration | Start | Finish | Predecessors | Resources |
| --- | --- | --- | --- | --- | --- | --- |
| A45770 | Fab replacement duct — supply trunk 9D — Seawater service pump room No. 1 | 0d | 2026-09-12 | 2026-09-16 | A45760 FS+0.8d | Sheet Metal / HVAC [31 h] |
| A30460 | Install exhaust riser 6B — Third deck trunk No. 5 | 0d | 2026-09-12 | 2026-09-23 | A30450 FS+2.4d | Sheet Metal / HVAC [78 h] |
| A22590 | Install supply trunk 1A — Sick bay | 0d | 2026-09-12 | 2026-09-23 | A22580 FS+2.4d | Sheet Metal / HVAC [300 h] |
| A37530 | Install exhaust riser 6C — Main Machinery Room No. 2 – upper level | 0d | 2026-09-13 | 2026-09-18 | A37520 | Sheet Metal / HVAC [72 h] |
| A29640 | Duct leak test exhaust riser 6C — AC Plant No. 2 | 0d | 2026-09-13 | 2026-09-22 | A29630 FS-4.8d | Sheet Metal / HVAC [69 h] |
| A37240 | Close-out & QA supply trunk 1C — Fan Room | 0d | 2026-09-13 | 2026-09-23 | A37230 FS+0.8d | Sheet Metal / HVAC [337 h] |
| A24140 | Fab replacement duct — exhaust riser 9B — Crew berthing No. 2 | 0d | 2026-09-13 | 2026-09-22 | A24130 FS+2.4d | Sheet Metal / HVAC [59 h] |
| A38430 | Duct leak test exhaust riser 5A — Pump Room No. 2 | 0d | 2026-09-13 | 2026-09-21 | A38420 | Sheet Metal / HVAC [140 h] |
| A22120 | Close-out & QA exhaust riser 5A (2-96-0-T) | 0d | 2026-09-13 | 2026-09-26 | A22110 | Sheet Metal / HVAC [67 h]; Rigging & Weight Handling [17 h] |
| A46350 | Close-out & QA vent branch 2E — Seawater service pump room No. 2 | 0d | 2026-09-14 | 2026-09-17 | A46340 FS+2.4d | Sheet Metal / HVAC [73 h] |
| A29580 | Duct leak test supply trunk 7B — AC Plant No. 2 | 0d | 2026-09-14 | 2026-09-22 | A29570 | Sheet Metal / HVAC [108 h]; Rigging & Weight Handling [28 h] |
| A23710 | Install exhaust riser 8B — Second deck passage No. 7 | 0d | 2026-09-14 | 2026-09-27 | A23700 | Sheet Metal / HVAC [156 h] |
| A37660 | Close-out & QA exhaust riser 9E — Main Machinery Room No. 2 – upper level | 0d | 2026-09-15 | 2026-09-18 | A37650 FS+2.4d | Sheet Metal / HVAC [46 h] |
| A45780 | Install supply trunk 9D — Seawater service pump room No. 1 | 0d | 2026-09-16 | 2026-09-18 | A45770 | Sheet Metal / HVAC [12 h] |
| A45190 | Close-out & QA exhaust riser 7A — Main Machinery Room No. 1 – lower level | 0d | 2026-09-16 | 2026-09-27 | A45180 | Sheet Metal / HVAC [97 h] |
| A39270 | Install supply trunk 2E — Main Machinery Room No. 3 – upper level | 0d | 2026-09-16 | 2026-09-27 | A39260 | Sheet Metal / HVAC [167 h] |
| A22660 | Duct leak test exhaust riser 2B — Sick bay | 0d | 2026-09-16 | 2026-09-23 | A22650 | Sheet Metal / HVAC [224 h] |
| A50540 | Install supply trunk 2D — Sea chest & strainer room No. 3 | 0d | 2026-09-17 | 2026-09-30 | A50530 | Sheet Metal / HVAC [344 h]; Rigging & Weight Handling [86 h] |
| A46180 | Close-out & QA exhaust riser 7B — Seawater service pump room No. 2 | 0d | 2026-09-17 | 2026-09-25 | A46170 | Sheet Metal / HVAC [110 h] |
| A37540 | Duct leak test exhaust riser 6C — Main Machinery Room No. 2 – upper level | 0d | 2026-09-18 | 2026-09-27 | A37530 FS+2.4d | Sheet Metal / HVAC [56 h] |
| A50220 | Install supply trunk 1E — Sea chest & strainer room No. 2 | 0d | 2026-09-18 | 2026-09-24 | A50210 FS+0.8d | Sheet Metal / HVAC [131 h] |
| A50010 | Duct leak test exhaust riser 4A — Sea chest & strainer room No. 2 | 0d | 2026-09-19 | 2026-09-28 | A50000 FS+0.8d | Sheet Metal / HVAC [175 h] |
| A45790 | Duct leak test supply trunk 9D — Seawater service pump room No. 1 | 0d | 2026-09-19 | 2026-09-26 | A45780 | Sheet Metal / HVAC [113 h] |
| A22170 | Duct leak test exhaust riser 2A — Damage control repair locker No. 3 | 0d | 2026-09-20 | 2026-09-23 | A22160 | Sheet Metal / HVAC [78 h] |
| A23780 | Duct leak test vent branch 3A — Chief petty officer mess – aft | 0d | 2026-09-20 | 2026-09-27 | A23770 FS+0.8d | Sheet Metal / HVAC [52 h] |
| A39590 | Install vent branch 4C — Ship's service turbine generator room No. 3 | 0d | 2026-09-20 | 2026-10-01 | A39580 | Sheet Metal / HVAC [70 h] |
| A46390 | Install supply trunk 5F — Seawater service pump room No. 2 | 0d | 2026-09-21 | 2026-09-24 | A46380 FS+2.4d | Sheet Metal / HVAC [75 h] |
| A38440 | Close-out & QA exhaust riser 5A — Pump Room No. 2 | 0d | 2026-09-22 | 2026-09-25 | A38430 | Sheet Metal / HVAC [52 h] |
| A29650 | Close-out & QA exhaust riser 6C — AC Plant No. 2 | 0d | 2026-09-22 | 2026-09-25 | A29640 | Sheet Metal / HVAC [46 h] |
| A29590 | Close-out & QA supply trunk 7B — AC Plant No. 2 | 0d | 2026-09-22 | 2026-10-01 | A29580 | Sheet Metal / HVAC [187 h]; Rigging & Weight Handling [47 h] |
| A38740 | Close-out & QA vent branch 5A — Cable Trunk & IC Space | 0d | 2026-09-22 | 2026-10-04 | A38730 FS+0.8d | Sheet Metal / HVAC [76 h] |
| A38890 | Duct leak test vent branch 2B (4-166-1-E) | 0d | 2026-09-23 | 2026-09-28 | A38880 FS+0.8d | Sheet Metal / HVAC [92 h] |
| A22180 | Close-out & QA exhaust riser 2A — Damage control repair locker No. 3 | 0d | 2026-09-23 | 2026-09-25 | A22170 | Sheet Metal / HVAC [32 h] |
| A24150 | Install exhaust riser 9B — Crew berthing No. 2 | 0d | 2026-09-23 | 2026-09-28 | A24140 | Sheet Metal / HVAC [45 h] |
| A28480 | Duct leak test exhaust riser 7C — Supply department office | 0d | 2026-09-24 | 2026-09-29 | A28470 FS+0.8d | Sheet Metal / HVAC [35 h] |
| A22670 | Close-out & QA exhaust riser 2B — Sick bay | 0d | 2026-09-24 | 2026-09-30 | A22660 | Sheet Metal / HVAC [89 h] |
| A39160 | Install vent branch 1C — Main Machinery Room No. 3 – upper level | 0d | 2026-09-24 | 2026-10-08 | A39150 | Sheet Metal / HVAC [200 h]; Rigging & Weight Handling [50 h] |
| A46400 | Duct leak test supply trunk 5F — Seawater service pump room No. 2 | 0d | 2026-09-25 | 2026-10-01 | A46390 | Sheet Metal / HVAC [50 h] |
| A30470 | Duct leak test exhaust riser 6B — Third deck trunk No. 5 | 0d | 2026-09-25 | 2026-10-04 | A30460 | Sheet Metal / HVAC [237 h] |
| A22600 | Duct leak test supply trunk 1A — Sick bay | 0d | 2026-09-25 | 2026-10-04 | A22590 | Sheet Metal / HVAC [134 h] |
| A50230 | Duct leak test supply trunk 1E — Sea chest & strainer room No. 2 | 0d | 2026-09-26 | 2026-09-28 | A50220 FS+0.8d | Sheet Metal / HVAC [78 h] |
| A45400 | Duct leak test vent branch 4E (5-96-0-E) | 0d | 2026-09-26 | 2026-10-05 | A45390 | Sheet Metal / HVAC [107 h] |
| A23790 | Close-out & QA vent branch 3A — Chief petty officer mess – aft | 0d | 2026-09-27 | 2026-10-07 | A23780 | Sheet Metal / HVAC [352 h] |
| A45800 | Close-out & QA supply trunk 9D — Seawater service pump room No. 1 | 0d | 2026-09-28 | 2026-10-07 | A45790 FS+2.4d | Sheet Metal / HVAC [223 h] |
| A23720 | Duct leak test exhaust riser 8B — Second deck passage No. 7 | 0d | 2026-09-28 | 2026-10-04 | A23710 FS+0.8d | Sheet Metal / HVAC [162 h] |
| A28490 | Close-out & QA exhaust riser 7C — Supply department office | 0d | 2026-09-29 | 2026-10-08 | A28480 | Sheet Metal / HVAC [117 h] |
| A39280 | Duct leak test supply trunk 2E — Main Machinery Room No. 3 – upper level | 0d | 2026-09-29 | 2026-10-03 | A39270 | Sheet Metal / HVAC [72 h] |
| A50240 | Close-out & QA supply trunk 1E — Sea chest & strainer room No. 2 | 0d | 2026-09-29 | 2026-10-11 | A50230 FS+0.8d | Sheet Metal / HVAC [201 h] |
| A37550 | Close-out & QA exhaust riser 6C — Main Machinery Room No. 2 – upper level | 0d | 2026-09-30 | 2026-10-06 | A37540 FS+2.4d | Sheet Metal / HVAC [139 h] |
| A38900 | Close-out & QA vent branch 2B (4-166-1-E) | 0d | 2026-09-30 | 2026-10-10 | A38890 FS+0.8d | Sheet Metal / HVAC [174 h] |
| A50020 | Close-out & QA exhaust riser 4A — Sea chest & strainer room No. 2 | 0d | 2026-09-30 | 2026-10-06 | A50010 | Sheet Metal / HVAC [162 h] |
| A46410 | Close-out & QA supply trunk 5F — Seawater service pump room No. 2 | 0d | 2026-10-01 | 2026-10-05 | A46400 FS+2.4d | Sheet Metal / HVAC [102 h] |
| A24160 | Duct leak test exhaust riser 9B — Crew berthing No. 2 | 0d | 2026-10-01 | 2026-10-09 | A24150 | Sheet Metal / HVAC [106 h] |
| A50550 | Duct leak test supply trunk 2D — Sea chest & strainer room No. 3 | 0d | 2026-10-01 | 2026-10-05 | A50540 FS+0.8d | Sheet Metal / HVAC [66 h] |
| A39600 | Duct leak test vent branch 4C — Ship's service turbine generator room No. 3 | 0d | 2026-10-01 | 2026-10-07 | A39590 SS+2.4d | Sheet Metal / HVAC [43 h] |
| A39290 | Close-out & QA supply trunk 2E — Main Machinery Room No. 3 – upper level | 0d | 2026-10-04 | 2026-10-08 | A39280 FS+0.8d | Sheet Metal / HVAC [28 h] |
| A23730 | Close-out & QA exhaust riser 8B — Second deck passage No. 7 | 0d | 2026-10-04 | 2026-10-08 | A23720 FS+0.8d | Sheet Metal / HVAC [52 h] |
| A30480 | Close-out & QA exhaust riser 6B — Third deck trunk No. 5 | 0d | 2026-10-05 | 2026-10-07 | A30470 | Sheet Metal / HVAC [43 h] |
| A22610 | Close-out & QA supply trunk 1A — Sick bay | 0d | 2026-10-05 | 2026-10-10 | A22600 | Sheet Metal / HVAC [57 h] |
| A45410 | Close-out & QA vent branch 4E (5-96-0-E) | 0d | 2026-10-05 | 2026-10-12 | A45400 SS+7.2d | Sheet Metal / HVAC [169 h] |
| A50560 | Close-out & QA supply trunk 2D — Sea chest & strainer room No. 3 | 0d | 2026-10-06 | 2026-10-17 | A50550 | Sheet Metal / HVAC [91 h] |
| A39170 | Duct leak test vent branch 1C — Main Machinery Room No. 3 – upper level | 0d | 2026-10-09 | 2026-10-17 | A39160 FS+0.8d | Sheet Metal / HVAC [174 h] |
| A39610 | Close-out & QA vent branch 4C — Ship's service turbine generator room No. 3 | 0d | 2026-10-10 | 2026-10-21 | A39600 SS+7.2d | Sheet Metal / HVAC [83 h] |
| A24170 | Close-out & QA exhaust riser 9B — Crew berthing No. 2 | 0d | 2026-10-10 | 2026-10-20 | A24160 | Sheet Metal / HVAC [140 h] |
| A39180 | Close-out & QA vent branch 1C — Main Machinery Room No. 3 – upper level | 0d | 2026-10-19 | 2026-10-23 | A39170 | Sheet Metal / HVAC [70 h] |

| ID | WBS | Activity | Duration | Start | Finish | Predecessors | Complete | Remaining | Resources |
| --- | --- | --- | --- | --- | --- | --- | --- | --- | --- |
|  | 560 | **560 Aux Machinery** |  | 2026-07-27 | 2026-10-23 |  |  |  |  |
| A53080 |  | Open & inspect compressor 4A — Reactor Compartment No. 2 – hold level | 0d | 2026-07-27 A | 2026-08-05 A |  | 100% |  | Mechanical [70 h] |
| A38180 |  | Open & inspect compressor 3C — Reactor Compartment No. 2 – upper level | 0d | 2026-07-29 A | 2026-08-06 A |  | 100% |  | Mechanical [144 h] |
| A49800 |  | Open & inspect compressor 9A — Sea chest & strainer room No. 1 | 0d | 2026-07-31 A | 2026-08-10 A |  | 100% |  | Mechanical [77 h] |
| A46250 |  | Open & inspect pump set 3D — Seawater service pump room No. 2 | 0d | 2026-07-31 A | 2026-08-07 A |  | 100% |  | Mechanical [117 h] |
| A37670 |  | Open & inspect compressor 1F (4-140-0-E) | 0d | 2026-08-02 A | 2026-08-08 A |  | 100% |  | Mechanical [204 h] |
| A29810 |  | Open & inspect compressor 1A — Air conditioning plant No. 3 | 0d | 2026-08-02 A | 2026-08-12 |  | 46% | 0d | Mechanical [89 h] |
| A45910 |  | Open & inspect motor group 2B — Main Machinery Room No. 2 – lower level | 0d | 2026-08-04 A | 2026-08-10 |  | 87% | 0d | Mechanical [108 h] |
| A36300 |  | Open & inspect motor group 4E — Main Machinery Room No. 1 – upper level | 0d | 2026-08-05 A | 2026-08-07 A |  | 100% |  | Mechanical [55 h] |
| A50720 |  | Open & inspect motor group 3C — Sea chest & strainer room No. 4 | 0d | 2026-08-06 A | 2026-08-14 |  | 44% | 0d | Mechanical [59 h] |
| A38230 |  | Open & inspect compressor 3A — Reactor auxiliaries room No. 2 | 0d | 2026-08-06 A | 2026-08-10 |  | 87% | 0d | Mechanical [85 h] |
| A30150 |  | Open & inspect compressor 8B — AC Plant No. 2 Machinery Room | 0d | 2026-08-06 A | 2026-08-18 |  | 30% | 0d | Mechanical [168 h] |
| A38280 |  | Open & inspect pump set 8B — Reactor auxiliaries room No. 2 | 0d | 2026-08-06 A | 2026-08-17 |  | 33% | 0d | Mechanical [132 h]; Rigging & Weight Handling [33 h] |
| A28700 |  | Open & inspect motor group 7E — Air conditioning plant No. 2 | 0d | 2026-08-07 A | 2026-08-09 A |  | 100% |  | Mechanical [75 h] |
| A38190 |  | Remove compressor 3C for shop — Reactor Compartment No. 2 – upper level | 0d | 2026-08-07 A | 2026-08-14 | A38180 FS+2.4d | 35% | 0d | Mechanical [120 h] |
| A39510 |  | Open & inspect pump set 8B (4-184-1-E) | 0d | 2026-08-07 A | 2026-08-15 |  | 31% | 0d | Mechanical [147 h] |
| A50080 |  | Open & inspect motor group 8C — Sea chest & strainer room No. 2 | 0d | 2026-08-07 A | 2026-08-20 |  | 19% | 0d | Mechanical [154 h] |
| A53090 |  | Remove compressor 4A for shop — Reactor Compartment No. 2 – hold level | 0d | 2026-08-07 A | 2026-08-10 | A53080 | 84% | 0d | Mechanical [85 h] |
| A52930 |  | Open & inspect pump set 9A — Reactor Compartment No. 1 – hold level | 0d | 2026-08-08 A | 2026-08-18 |  | 18% | 0d | Mechanical [82 h] |
| A29290 |  | Open & inspect compressor 8D — Auxiliary Machinery Room No. 4 | 0d | 2026-08-08 A | 2026-08-18 |  | 18% | 0d | Mechanical [72 h] |
| A46260 |  | Remove pump set 3D for shop — Seawater service pump room No. 2 | 0d | 2026-08-09 A | 2026-08-19 | A46250 | 11% | 0d | Mechanical [66 h] |
| A36310 |  | Remove motor group 4E for shop — Main Machinery Room No. 1 – upper level | 0d | 2026-08-09 A | 2026-08-21 | A36300 | 5% | 0d | Mechanical [95 h] |
| A38590 |  | Open & inspect compressor 9E (4-160-2-Q) | 0d | 2026-08-09 A | 2026-08-11 |  | 43% | 0d | Mechanical [14 h] |
| A46530 |  | Open & inspect motor group 5C — Main Machinery Room No. 3 – lower level | 0d | 2026-08-09 A | 2026-08-12 |  | 13% | 0d | Mechanical [15 h] |
| A37300 |  | Open & inspect compressor 7B — Evaporator room No. 1 | 0d | 2026-08-10 | 2026-08-14 |  |  |  | Mechanical [43 h] |
| A50670 |  | Open & inspect compressor 5B — Sea chest & strainer room No. 4 | 0d | 2026-08-11 | 2026-08-14 |  |  |  | Mechanical [58 h] |
| A45920 |  | Remove motor group 2B for shop — Main Machinery Room No. 2 – lower level | 0d | 2026-08-11 | 2026-08-24 | A45910 |  |  | Mechanical [236 h] |
| A45310 |  | Open & inspect compressor 1D — Main Machinery Room No. 1 – lower level | 0d | 2026-08-11 | 2026-08-19 |  |  |  | Mechanical [128 h] |
| A28710 |  | Remove motor group 7E for shop — Air conditioning plant No. 2 | 0d | 2026-08-11 | 2026-08-24 | A28700 FS+2.4d |  |  | Mechanical [107 h] |
| A37680 |  | Remove compressor 1F for shop (4-140-0-E) | 0d | 2026-08-11 | 2026-08-14 | A37670 |  |  | Mechanical [55 h] |
| A29710 |  | Open & inspect compressor 5E — AC Plant No. 2 | 0d | 2026-08-11 | 2026-08-23 |  |  |  | Mechanical [107 h] |
| A53100 |  | Shop overhaul — compressor 4A — Reactor Compartment No. 2 – hold level | 0d | 2026-08-11 | 2026-08-24 | A53090 FS+0.8d |  |  | Mechanical [115 h] |
| A49810 |  | Remove compressor 9A for shop — Sea chest & strainer room No. 1 | 0d | 2026-08-11 | 2026-08-20 | A49800 |  |  | Mechanical [188 h] |
| A38240 |  | Remove compressor 3A for shop — Reactor auxiliaries room No. 2 | 0d | 2026-08-11 | 2026-08-15 | A38230 |  |  | Mechanical [26 h] |
| A38600 |  | Remove compressor 9E for shop (4-160-2-Q) | 0d | 2026-08-12 | 2026-08-25 | A38590 FS+0.8d |  |  | Mechanical [302 h] |
| A23300 |  | Open & inspect pump set 3A — Uptake Space No. 3 | 0d | 2026-08-12 | 2026-08-20 |  |  |  | Mechanical [241 h] |
| A46540 |  | Remove motor group 5C for shop — Main Machinery Room No. 3 – lower level | 0d | 2026-08-12 | 2026-08-21 | A46530 FS+0.8d |  |  | Mechanical [63 h] |
| A29860 |  | Open & inspect pump set 4B — Air conditioning plant No. 3 | 0d | 2026-08-13 | 2026-08-25 |  |  |  | Mechanical [96 h] |
| A37250 |  | Open & inspect pump set 3A — Evaporator room No. 1 | 0d | 2026-08-13 | 2026-08-24 |  |  |  | Mechanical [164 h] |
| A39190 |  | Open & inspect pump set 3D — Main Machinery Room No. 3 – upper level | 0d | 2026-08-14 | 2026-08-24 |  |  |  | Mechanical [315 h] |
| A29820 |  | Remove compressor 1A for shop — Air conditioning plant No. 3 | 0d | 2026-08-14 | 2026-08-16 | A29810 |  |  | Mechanical [81 h] |
| A50460 |  | Open & inspect compressor 3C — Sea chest & strainer room No. 3 | 0d | 2026-08-14 | 2026-08-20 |  |  |  | Mechanical [92 h] |
| A37310 |  | Remove compressor 7B for shop — Evaporator room No. 1 | 0d | 2026-08-15 | 2026-08-18 | A37300 |  |  | Mechanical [95 h] |
| A38200 |  | Shop overhaul — compressor 3C — Reactor Compartment No. 2 – upper level | 0d | 2026-08-15 | 2026-08-19 | A38190 |  |  | Mechanical [20 h]; Rigging & Weight Handling [6 h] |
| A45640 |  | Open & inspect compressor 5B — Seawater service pump room No. 1 | 0d | 2026-08-15 | 2026-08-22 |  |  |  | Mechanical [110 h] |
| A29490 |  | Open & inspect pump set 6A — AC Plant No. 2 | 0d | 2026-08-15 | 2026-08-18 |  |  |  | Mechanical [65 h] |
| A23400 |  | Open & inspect compressor 1C — Uptake Space No. 3 | 0d | 2026-08-15 | 2026-08-26 |  |  |  | Mechanical [78 h] |
| A37690 |  | Shop overhaul — compressor 1F (4-140-0-E) | 0d | 2026-08-16 | 2026-08-29 | A37680 |  |  | Mechanical [170 h] |
| A28610 |  | Open & inspect compressor 8C (3-128-2-E) | 0d | 2026-08-16 | 2026-08-22 |  |  |  | Mechanical [140 h] |
| A39520 |  | Remove pump set 8B for shop (4-184-1-E) | 0d | 2026-08-16 | 2026-08-24 | A39510 FS+0.8d |  |  | Mechanical [115 h] |
| A50680 |  | Remove compressor 5B for shop — Sea chest & strainer room No. 4 | 0d | 2026-08-17 | 2026-08-22 | A50670 |  |  | Mechanical [41 h] |
| A29190 |  | Open & inspect motor group 9B — Auxiliary Machinery Room No. 4 | 0d | 2026-08-17 | 2026-08-29 |  |  |  | Mechanical [182 h] |
| A29660 |  | Open & inspect compressor 5D — AC Plant No. 2 | 0d | 2026-08-17 | 2026-08-22 |  |  |  | Mechanical [31 h] |
| A50730 |  | Remove motor group 3C for shop — Sea chest & strainer room No. 4 | 0d | 2026-08-17 | 2026-08-19 | A50720 |  |  | Mechanical [30 h] |
| A38010 |  | Open & inspect motor group 2E — Forced Draft Blower Room No. 3 | 0d | 2026-08-17 | 2026-08-28 |  |  |  | Mechanical [74 h] |
| A38250 |  | Shop overhaul — compressor 3A — Reactor auxiliaries room No. 2 | 0d | 2026-08-17 | 2026-08-29 | A38240 |  |  | Mechanical [73 h] |
| A29830 |  | Shop overhaul — compressor 1A — Air conditioning plant No. 3 | 0d | 2026-08-17 | 2026-08-26 | A29820 |  |  | Mechanical [80 h] |
| A23450 |  | Open & inspect compressor 7D — Uptake Space No. 3 | 0d | 2026-08-18 | 2026-08-23 |  |  |  | Mechanical [56 h] |
| A38290 |  | Remove pump set 8B for shop — Reactor auxiliaries room No. 2 | 0d | 2026-08-19 | 2026-08-24 | A38280 |  |  | Mechanical [80 h] |
| A38210 |  | Reinstall & align compressor 3C — Reactor Compartment No. 2 – upper level | 0d | 2026-08-20 | 2026-08-25 | A38200 |  |  | Mechanical [129 h] |
| A37320 |  | Shop overhaul — compressor 7B — Evaporator room No. 1 | 0d | 2026-08-20 | 2026-08-30 | A37310 |  |  | Mechanical [117 h] |
| A29300 |  | Remove compressor 8D for shop — Auxiliary Machinery Room No. 4 | 0d | 2026-08-20 | 2026-09-03 | A29290 |  |  | Mechanical [431 h] |
| A37560 |  | Open & inspect motor group 8D — Main Machinery Room No. 2 – upper level | 0d | 2026-08-20 | 2026-08-27 |  |  |  | Mechanical [30 h]; Rigging & Weight Handling [8 h] |
| A30160 |  | Remove compressor 8B for shop — AC Plant No. 2 Machinery Room | 0d | 2026-08-20 | 2026-08-31 | A30150 FS+0.8d |  |  | Mechanical [131 h]; Rigging & Weight Handling [33 h] |
| A37910 |  | Open & inspect pump set 3C — Forced Draft Blower Room No. 3 | 0d | 2026-08-20 | 2026-08-23 |  |  |  | Mechanical [12 h]; Rigging & Weight Handling [4 h] |
| A52940 |  | Remove pump set 9A for shop — Reactor Compartment No. 1 – hold level | 0d | 2026-08-20 | 2026-08-26 | A52930 FS+0.8d |  |  | Mechanical [101 h] |
| A49820 |  | Shop overhaul — compressor 9A — Sea chest & strainer room No. 1 | 0d | 2026-08-21 | 2026-08-30 | A49810 FS+2.4d |  |  | Mechanical [238 h] |
| A45320 |  | Remove compressor 1D for shop — Main Machinery Room No. 1 – lower level | 0d | 2026-08-21 | 2026-08-25 | A45310 FS-2.4d |  |  | Mechanical [76 h] |
| A29500 |  | Remove pump set 6A for shop — AC Plant No. 2 | 0d | 2026-08-21 | 2026-08-31 | A29490 |  |  | Mechanical [57 h] |
| A50470 |  | Remove compressor 3C for shop — Sea chest & strainer room No. 3 | 0d | 2026-08-21 | 2026-08-23 | A50460 |  |  | Mechanical [28 h] |

| ID | Activity | Duration | Start | Finish | Predecessors | Resources |
| --- | --- | --- | --- | --- | --- | --- |
| A46270 | Shop overhaul — pump set 3D — Seawater service pump room No. 2 | 0d | 2026-08-21 | 2026-09-04 | A46260 | Mechanical [365 h] |
| A46550 | Shop overhaul — motor group 5C — Main Machinery Room No. 3 – lower level | 0d | 2026-08-22 | 2026-08-29 | A46540 | Mechanical [119 h] |
| A50740 | Shop overhaul — motor group 3C — Sea chest & strainer room No. 4 | 0d | 2026-08-22 | 2026-08-27 | A50730 | Mechanical [127 h] |
| A36320 | Shop overhaul — motor group 4E — Main Machinery Room No. 1 – upper level | 0d | 2026-08-22 | 2026-09-02 | A36310 FS+0.8d | Mechanical [287 h] |
| A50090 | Remove motor group 8C for shop — Sea chest & strainer room No. 2 | 0d | 2026-08-22 | 2026-09-03 | A50080 | Mechanical [208 h] |
| A45650 | Remove compressor 5B for shop — Seawater service pump room No. 1 | 0d | 2026-08-22 | 2026-08-30 | A45640 | Mechanical [109 h] |
| A23310 | Remove pump set 3A for shop — Uptake Space No. 3 | 0d | 2026-08-23 | 2026-09-03 | A23300 | Mechanical [148 h]; Rigging & Weight Handling [38 h] |
| A28620 | Remove compressor 8C for shop (3-128-2-E) | 0d | 2026-08-23 | 2026-08-27 | A28610 SS+2.4d | Mechanical [31 h] |
| A50690 | Shop overhaul — compressor 5B — Sea chest & strainer room No. 4 | 0d | 2026-08-23 | 2026-08-30 | A50680 | Mechanical [128 h]; Rigging & Weight Handling [33 h] |
| A37920 | Remove pump set 3C for shop — Forced Draft Blower Room No. 3 | 0d | 2026-08-24 | 2026-08-26 | A37910 | Mechanical [94 h] |
| A39200 | Remove pump set 3D for shop — Main Machinery Room No. 3 – upper level | 0d | 2026-08-24 | 2026-09-06 | A39190 | Mechanical [489 h] |
| A23460 | Remove compressor 7D for shop — Uptake Space No. 3 | 0d | 2026-08-24 | 2026-08-27 | A23450 FS+2.4d | Mechanical [23 h] |
| A53110 | Reinstall & align compressor 4A — Reactor Compartment No. 2 – hold level | 0d | 2026-08-25 | 2026-09-04 | A53100 | Mechanical [117 h] |
| A50480 | Shop overhaul — compressor 3C — Sea chest & strainer room No. 3 | 0d | 2026-08-25 | 2026-09-04 | A50470 FS+0.8d | Mechanical [284 h] |
| A38300 | Shop overhaul — pump set 8B — Reactor auxiliaries room No. 2 | 0d | 2026-08-25 | 2026-09-02 | A38290 | Mechanical [240 h] |
| A37260 | Remove pump set 3A for shop — Evaporator room No. 1 | 0d | 2026-08-25 | 2026-08-28 | A37250 | Mechanical [42 h] |
| A29670 | Remove compressor 5D for shop — AC Plant No. 2 | 0d | 2026-08-25 | 2026-09-03 | A29660 | Mechanical [63 h] |
| A28720 | Shop overhaul — motor group 7E — Air conditioning plant No. 2 | 0d | 2026-08-25 | 2026-09-05 | A28710 FS+2.4d | Mechanical [60 h] |
| A39530 | Shop overhaul — pump set 8B (4-184-1-E) | 0d | 2026-08-26 | 2026-09-04 | A39520 FS+2.4d | Mechanical [57 h] |
| A29720 | Remove compressor 5E for shop — AC Plant No. 2 | 0d | 2026-08-26 | 2026-09-08 | A29710 | Mechanical [233 h] |
| A45930 | Shop overhaul — motor group 2B — Main Machinery Room No. 2 – lower level | 0d | 2026-08-26 | 2026-09-07 | A45920 | Mechanical [83 h] |
| A29870 | Remove pump set 4B for shop — Air conditioning plant No. 3 | 0d | 2026-08-26 | 2026-09-04 | A29860 | Mechanical [72 h] |
| A38610 | Shop overhaul — compressor 9E (4-160-2-Q) | 0d | 2026-08-26 | 2026-09-08 | A38600 | Mechanical [92 h] |
| A37930 | Shop overhaul — pump set 3C — Forced Draft Blower Room No. 3 | 0d | 2026-08-27 | 2026-09-08 | A37920 | Mechanical [198 h] |
| A52950 | Shop overhaul — pump set 9A — Reactor Compartment No. 1 – hold level | 0d | 2026-08-27 | 2026-09-09 | A52940 | Mechanical [232 h] |
| A38220 | Operational test compressor 3C — Reactor Compartment No. 2 – upper level | 0d | 2026-08-27 | 2026-09-09 | A38210 | Mechanical [110 h] |
| A50750 | Reinstall & align motor group 3C — Sea chest & strainer room No. 4 | 0d | 2026-08-27 | 2026-09-07 | A50740 | Mechanical [182 h] |
| A45330 | Shop overhaul — compressor 1D — Main Machinery Room No. 1 – lower level | 0d | 2026-08-28 | 2026-09-01 | A45320 | Mechanical [62 h] |
| A28630 | Shop overhaul — compressor 8C (3-128-2-E) | 0d | 2026-08-28 | 2026-09-05 | A28620 FS+2.4d | Mechanical [170 h] |
| A37570 | Remove motor group 8D for shop — Main Machinery Room No. 2 – upper level | 0d | 2026-08-28 | 2026-09-11 | A37560 | Mechanical [363 h] |
| A23410 | Remove compressor 1C for shop — Uptake Space No. 3 | 0d | 2026-08-28 | 2026-09-10 | A23400 FS+0.8d | Mechanical [445 h] |
| A29840 | Reinstall & align compressor 1A — Air conditioning plant No. 3 | 0d | 2026-08-29 | 2026-09-05 | A29830 FS+2.4d | Mechanical [205 h] |
| A23470 | Shop overhaul — compressor 7D — Uptake Space No. 3 | 0d | 2026-08-29 | 2026-09-10 | A23460 | Mechanical [101 h] |
| A37270 | Shop overhaul — pump set 3A — Evaporator room No. 1 | 0d | 2026-08-29 | 2026-09-04 | A37260 | Mechanical [97 h] |
| A38020 | Remove motor group 2E for shop — Forced Draft Blower Room No. 3 | 0d | 2026-08-30 | 2026-09-12 | A38010 FS+0.8d | Mechanical [191 h] |
| A46560 | Reinstall & align motor group 5C — Main Machinery Room No. 3 – lower level | 0d | 2026-08-30 | 2026-09-04 | A46550 FS+2.4d | Mechanical [31 h] |
| A38260 | Reinstall & align compressor 3A — Reactor auxiliaries room No. 2 | 0d | 2026-08-31 | 2026-09-05 | A38250 | Mechanical [34 h] |
| A50700 | Reinstall & align compressor 5B — Sea chest & strainer room No. 4 | 0d | 2026-08-31 | 2026-09-07 | A50690 | Mechanical [245 h] |
| A37330 | Reinstall & align compressor 7B — Evaporator room No. 1 | 0d | 2026-08-31 | 2026-09-03 | A37320 FS+2.4d | Mechanical [28 h] |
| A37700 | Reinstall & align compressor 1F (4-140-0-E) | 0d | 2026-09-01 | 2026-09-03 | A37690 | Mechanical [19 h] |
| A29200 | Remove motor group 9B for shop — Auxiliary Machinery Room No. 4 | 0d | 2026-09-01 | 2026-09-13 | A29190 FS+0.8d | Mechanical [84 h] |
| A30170 | Shop overhaul — compressor 8B — AC Plant No. 2 Machinery Room | 0d | 2026-09-01 | 2026-09-11 | A30160 FS+0.8d | Mechanical [182 h] |
| A49830 | Reinstall & align compressor 9A — Sea chest & strainer room No. 1 | 0d | 2026-09-01 | 2026-09-13 | A49820 | Mechanical [257 h]; Rigging & Weight Handling [65 h] |
| A45660 | Shop overhaul — compressor 5B — Seawater service pump room No. 1 | 0d | 2026-09-02 | 2026-09-05 | A45650 FS-0.8d | Mechanical [100 h] |
| A29510 | Shop overhaul — pump set 6A — AC Plant No. 2 | 0d | 2026-09-02 | 2026-09-07 | A29500 | Mechanical [85 h] |
| A36330 | Reinstall & align motor group 4E — Main Machinery Room No. 1 – upper level | 0d | 2026-09-03 | 2026-09-09 | A36320 | Mechanical [120 h] |
| A45340 | Reinstall & align compressor 1D — Main Machinery Room No. 1 – lower level | 0d | 2026-09-03 | 2026-09-09 | A45330 | Mechanical [42 h] |
| A37340 | Operational test compressor 7B — Evaporator room No. 1 | 0d | 2026-09-04 | 2026-09-07 | A37330 | Mechanical [105 h] |
| A23320 | Shop overhaul — pump set 3A — Uptake Space No. 3 | 0d | 2026-09-04 | 2026-09-06 | A23310 | Mechanical [21 h] |
| A37710 | Operational test compressor 1F (4-140-0-E) | 0d | 2026-09-04 | 2026-09-08 | A37700 FS+0.8d | Mechanical [27 h] |
| A53120 | Operational test compressor 4A — Reactor Compartment No. 2 – hold level | 0d | 2026-09-04 | 2026-09-12 | A53110 | Mechanical [122 h] |
| A38310 | Reinstall & align pump set 8B — Reactor auxiliaries room No. 2 | 0d | 2026-09-04 | 2026-09-12 | A38300 | Mechanical [38 h]; Rigging & Weight Handling [10 h] |
| A39540 | Reinstall & align pump set 8B (4-184-1-E) | 0d | 2026-09-04 | 2026-09-14 | A39530 | Mechanical [121 h] |
| A29310 | Shop overhaul — compressor 8D — Auxiliary Machinery Room No. 4 | 0d | 2026-09-05 | 2026-09-18 | A29300 | Mechanical [78 h] |
| A38270 | Operational test compressor 3A — Reactor auxiliaries room No. 2 | 0d | 2026-09-05 | 2026-09-12 | A38260 FS+0.8d | Mechanical [122 h] |
| A29880 | Shop overhaul — pump set 4B — Air conditioning plant No. 3 | 0d | 2026-09-05 | 2026-09-18 | A29870 | Mechanical [338 h] |
| A46570 | Operational test motor group 5C — Main Machinery Room No. 3 – lower level | 0d | 2026-09-05 | 2026-09-10 | A46560 FS+0.8d | Mechanical [111 h] |
| A37280 | Reinstall & align pump set 3A — Evaporator room No. 1 | 0d | 2026-09-05 | 2026-09-17 | A37270 SS+4.8d | Mechanical [103 h] |
| A50100 | Shop overhaul — motor group 8C — Sea chest & strainer room No. 2 | 0d | 2026-09-05 | 2026-09-08 | A50090 | Mechanical [18 h] |
| A29680 | Shop overhaul — compressor 5D — AC Plant No. 2 | 0d | 2026-09-06 | 2026-09-09 | A29670 FS+2.4d | Mechanical [61 h] |
| A28730 | Reinstall & align motor group 7E — Air conditioning plant No. 2 | 0d | 2026-09-06 | 2026-09-17 | A28720 | Mechanical [147 h] |
| A46280 | Reinstall & align pump set 3D — Seawater service pump room No. 2 | 0d | 2026-09-07 | 2026-09-17 | A46270 SS+7.2d | Mechanical [60 h] |
| A50490 | Reinstall & align compressor 3C — Sea chest & strainer room No. 3 | 0d | 2026-09-07 | 2026-09-13 | A50480 FS+0.8d | Mechanical [159 h] |
| A23330 | Reinstall & align pump set 3A — Uptake Space No. 3 | 0d | 2026-09-07 | 2026-09-19 | A23320 | Mechanical [72 h]; Rigging & Weight Handling [19 h] |
| A50760 | Operational test motor group 3C — Sea chest & strainer room No. 4 | 0d | 2026-09-07 | 2026-09-11 | A50750 FS+0.8d | Mechanical [24 h] |
| A50710 | Operational test compressor 5B — Sea chest & strainer room No. 4 | 0d | 2026-09-07 | 2026-09-12 | A50700 FS+0.8d | Mechanical [37 h] |
| A45670 | Reinstall & align compressor 5B — Seawater service pump room No. 1 | 0d | 2026-09-08 | 2026-09-20 | A45660 FS+2.4d | Mechanical [219 h] |
| A29850 | Operational test compressor 1A — Air conditioning plant No. 3 | 0d | 2026-09-08 | 2026-09-13 | A29840 FS+0.8d | Mechanical [170 h] |
| A29520 | Reinstall & align pump set 6A — AC Plant No. 2 | 0d | 2026-09-08 | 2026-09-17 | A29510 SS+4.8d | Mechanical [317 h] |
| A39210 | Shop overhaul — pump set 3D — Main Machinery Room No. 3 – upper level | 0d | 2026-09-08 | 2026-09-17 | A39200 | Mechanical [198 h] |

| ID | Activity | Duration | Start | Finish | Predecessors | Resources |
| --- | --- | --- | --- | --- | --- | --- |
| A45940 | Reinstall & align motor group 2B — Main Machinery Room No. 2 – lower level | 0d | 2026-09-08 | 2026-09-10 | A45930 | Mechanical [24 h] |
| A28640 | Reinstall & align compressor 8C (3-128-2-E) | 0d | 2026-09-08 | 2026-09-18 | A28630 | Mechanical [126 h] |
| A29730 | Shop overhaul — compressor 5E — AC Plant No. 2 | 0d | 2026-09-10 | 2026-09-13 | A29720 SS+2.4d | Mechanical [26 h] |
| A52960 | Reinstall & align pump set 9A — Reactor Compartment No. 1 – hold level | 0d | 2026-09-10 | 2026-09-13 | A52950 | Mechanical [31 h]; Rigging & Weight Handling [8 h] |
| A38620 | Reinstall & align compressor 9E (4-160-2-Q) | 0d | 2026-09-10 | 2026-09-17 | A38610 | Mechanical [62 h] |
| A29690 | Reinstall & align compressor 5D — AC Plant No. 2 | 0d | 2026-09-10 | 2026-09-20 | A29680 | Mechanical [241 h] |
| A50110 | Reinstall & align motor group 8C — Sea chest & strainer room No. 2 | 0d | 2026-09-11 | 2026-09-15 | A50100 | Mechanical [100 h] |
| A37940 | Reinstall & align pump set 3C — Forced Draft Blower Room No. 3 | 0d | 2026-09-11 | 2026-09-16 | A37930 | Mechanical [111 h] |
| A23480 | Reinstall & align compressor 7D — Uptake Space No. 3 | 0d | 2026-09-11 | 2026-09-16 | A23470 FS+2.4d | Mechanical [28 h] |
| A45350 | Operational test compressor 1D — Main Machinery Room No. 1 – lower level | 0d | 2026-09-11 | 2026-09-16 | A45340 SS+2.4d | Mechanical [60 h] |
| A36340 | Operational test motor group 4E — Main Machinery Room No. 1 – upper level | 0d | 2026-09-12 | 2026-09-24 | A36330 FS+2.4d | Mechanical [99 h] |
| A38320 | Operational test pump set 8B — Reactor auxiliaries room No. 2 | 0d | 2026-09-12 | 2026-09-15 | A38310 | Mechanical [45 h] |
| A37580 | Shop overhaul — motor group 8D — Main Machinery Room No. 2 – upper level | 0d | 2026-09-12 | 2026-09-15 | A37570 | Mechanical [25 h] |
| A30180 | Reinstall & align compressor 8B — AC Plant No. 2 Machinery Room | 0d | 2026-09-12 | 2026-09-21 | A30170 | Mechanical [124 h] |
| A45950 | Operational test motor group 2B — Main Machinery Room No. 2 – lower level | 0d | 2026-09-12 | 2026-09-18 | A45940 | Mechanical [47 h] |
| A23420 | Shop overhaul — compressor 1C — Uptake Space No. 3 | 0d | 2026-09-12 | 2026-09-25 | A23410 FS+0.8d | Mechanical [95 h] |
| A29740 | Reinstall & align compressor 5E — AC Plant No. 2 | 0d | 2026-09-14 | 2026-09-24 | A29730 FS+2.4d | Mechanical [253 h] |
| A38030 | Shop overhaul — motor group 2E — Forced Draft Blower Room No. 3 | 0d | 2026-09-14 | 2026-09-21 | A38020 FS+2.4d | Mechanical [44 h] |
| A49840 | Operational test compressor 9A — Sea chest & strainer room No. 1 | 0d | 2026-09-15 | 2026-09-27 | A49830 | Mechanical [227 h] |
| A39550 | Operational test pump set 8B (4-184-1-E) | 0d | 2026-09-15 | 2026-09-26 | A39540 | Mechanical [164 h] |
| A50500 | Operational test compressor 3C — Sea chest & strainer room No. 3 | 0d | 2026-09-15 | 2026-09-27 | A50490 | Mechanical [159 h] |
| A29210 | Shop overhaul — motor group 9B — Auxiliary Machinery Room No. 4 | 0d | 2026-09-16 | 2026-09-22 | A29200 | Mechanical [57 h] |
| A52970 | Operational test pump set 9A — Reactor Compartment No. 1 – hold level | 0d | 2026-09-16 | 2026-09-20 | A52960 | Mechanical [162 h] |
| A50120 | Operational test motor group 8C — Sea chest & strainer room No. 2 | 0d | 2026-09-17 | 2026-10-01 | A50110 FS+0.8d | Mechanical [212 h] |
| A23490 | Operational test compressor 7D — Uptake Space No. 3 | 0d | 2026-09-17 | 2026-09-20 | A23480 | Mechanical [27 h] |
| A37950 | Operational test pump set 3C — Forced Draft Blower Room No. 3 | 0d | 2026-09-18 | 2026-09-23 | A37940 | Mechanical [49 h] |
| A37290 | Operational test pump set 3A — Evaporator room No. 1 | 0d | 2026-09-18 | 2026-09-22 | A37280 SS+7.2d | Mechanical [27 h] |
| A37590 | Reinstall & align motor group 8D — Main Machinery Room No. 2 – upper level | 0d | 2026-09-18 | 2026-09-30 | A37580 FS+0.8d | Mechanical [88 h] |
| A39220 | Reinstall & align pump set 3D — Main Machinery Room No. 3 – upper level | 0d | 2026-09-18 | 2026-09-26 | A39210 FS+2.4d | Mechanical [137 h] |
| A29320 | Reinstall & align compressor 8D — Auxiliary Machinery Room No. 4 | 0d | 2026-09-19 | 2026-09-25 | A29310 | Mechanical [108 h] |
| A28740 | Operational test motor group 7E — Air conditioning plant No. 2 | 0d | 2026-09-19 | 2026-09-27 | A28730 | Mechanical [156 h] |
| A29530 | Operational test pump set 6A — AC Plant No. 2 | 0d | 2026-09-19 | 2026-10-01 | A29520 FS+2.4d | Mechanical [149 h] |
| A46290 | Operational test pump set 3D — Seawater service pump room No. 2 | 0d | 2026-09-19 | 2026-09-26 | A46280 | Mechanical [44 h]; Rigging & Weight Handling [11 h] |
| A28650 | Operational test compressor 8C (3-128-2-E) | 0d | 2026-09-20 | 2026-09-30 | A28640 | Mechanical [68 h] |
| A29890 | Reinstall & align pump set 4B — Air conditioning plant No. 3 | 0d | 2026-09-20 | 2026-09-28 | A29880 | Mechanical [99 h] |
| A38630 | Operational test compressor 9E (4-160-2-Q) | 0d | 2026-09-20 | 2026-09-28 | A38620 FS+0.8d | Mechanical [233 h] |
| A29700 | Operational test compressor 5D — AC Plant No. 2 | 0d | 2026-09-21 | 2026-09-27 | A29690 | Mechanical [73 h] |
| A23340 | Operational test pump set 3A — Uptake Space No. 3 | 0d | 2026-09-22 | 2026-10-01 | A23330 | Mechanical [269 h] |
| A45680 | Operational test compressor 5B — Seawater service pump room No. 1 | 0d | 2026-09-23 | 2026-09-25 | A45670 | Mechanical [55 h]; Rigging & Weight Handling [14 h] |
| A29220 | Reinstall & align motor group 9B — Auxiliary Machinery Room No. 4 | 0d | 2026-09-23 | 2026-09-26 | A29210 | Mechanical [79 h] |
| A38040 | Reinstall & align motor group 2E — Forced Draft Blower Room No. 3 | 0d | 2026-09-24 | 2026-10-06 | A38030 | Mechanical [381 h] |
| A30190 | Operational test compressor 8B — AC Plant No. 2 Machinery Room | 0d | 2026-09-24 | 2026-09-29 | A30180 | Mechanical [107 h] |
| A29750 | Operational test compressor 5E — AC Plant No. 2 | 0d | 2026-09-25 | 2026-10-09 | A29740 | Mechanical [339 h] |
| A29230 | Operational test motor group 9B — Auxiliary Machinery Room No. 4 | 0d | 2026-09-27 | 2026-10-05 | A29220 FS+2.4d | Mechanical [72 h] |
| A29330 | Operational test compressor 8D — Auxiliary Machinery Room No. 4 | 0d | 2026-09-27 | 2026-10-10 | A29320 FS+2.4d | Mechanical [204 h] |
| A23430 | Reinstall & align compressor 1C — Uptake Space No. 3 | 0d | 2026-09-28 | 2026-10-10 | A23420 | Mechanical [127 h]; Rigging & Weight Handling [32 h] |
| A39230 | Operational test pump set 3D — Main Machinery Room No. 3 – upper level | 0d | 2026-09-29 | 2026-10-10 | A39220 | Mechanical [231 h]; Rigging & Weight Handling [58 h] |
| A29900 | Operational test pump set 4B — Air conditioning plant No. 3 | 0d | 2026-09-29 | 2026-10-05 | A29890 | Mechanical [66 h] |
| A37600 | Operational test motor group 8D — Main Machinery Room No. 2 – upper level | 0d | 2026-10-01 | 2026-10-11 | A37590 FS+2.4d | Mechanical [64 h] |
| A38050 | Operational test motor group 2E — Forced Draft Blower Room No. 3 | 0d | 2026-10-07 | 2026-10-19 | A38040 | Mechanical [77 h] |
| A23440 | Operational test compressor 1C — Uptake Space No. 3 | 0d | 2026-10-12 | 2026-10-23 | A23430 | Mechanical [101 h] |

| ID | WBS | Activity | Duration | Start | Finish | Predecessors | Complete | Remaining | Resources |
| --- | --- | --- | --- | --- | --- | --- | --- | --- | --- |
|  | 631 | **631 Preservation** |  | 2026-07-30 | 2026-10-12 |  |  |  |  |
| A29440 |  | Surface survey — deck coating 1A — Passage & Trunk | 0d | 2026-07-30 A | 2026-08-05 A |  | 100% |  | Preservation / Blast & Coat [159 h] |
| A23350 |  | Surface survey — overhead coating 6B — Uptake Space No. 3 | 0d | 2026-07-31 A | 2026-08-02 A |  | 100% |  | Preservation / Blast & Coat [58 h] |
| A36730 |  | Surface survey — overhead coating 9A — Reserve Feed Water Tank | 0d | 2026-07-31 A | 2026-08-10 |  | 94% | 0d | Preservation / Blast & Coat [164 h] |
| A37350 |  | Surface survey — deck coating 7C — Evaporator room No. 1 | 0d | 2026-08-01 A | 2026-08-10 |  | 94% | 0d | Preservation / Blast & Coat [104 h] |
| A38490 |  | Surface survey — overhead coating 8C — Pump Room No. 2 | 0d | 2026-08-01 A | 2026-08-10 |  | 92% | 0d | Preservation / Blast & Coat [309 h] |
| A22460 |  | Surface survey — bilge preservation 4A — Enlisted mess decks | 0d | 2026-08-02 A | 2026-08-05 A |  | 100% |  | Preservation / Blast & Coat [33 h] |
| A28390 |  | Surface survey — bilge preservation 6B — Supply department office | 0d | 2026-08-02 A | 2026-08-10 |  | 86% | 0d | Preservation / Blast & Coat [51 h] |
| A22730 |  | Surface survey — deck coating 8A — Ship's store | 0d | 2026-08-04 A | 2026-08-15 |  | 30% | 0d | Preservation / Blast & Coat [74 h] |
| A23360 |  | Blast / mechanical prep overhead coating 6B — Uptake Space No. 3 | 0d | 2026-08-04 A | 2026-08-09 A | A23350 FS+0.8d | 100% |  | Preservation / Blast & Coat [56 h]; Rigging & Weight Handling [14 h] |
| A22470 |  | Blast / mechanical prep bilge preservation 4A — Enlisted mess decks | 0d | 2026-08-05 A | 2026-08-18 | A22460 | 30% | 0d | Preservation / Blast & Coat [309 h] |
| A22510 |  | Surface survey — overhead coating 8B — Enlisted mess decks | 0d | 2026-08-06 A | 2026-08-09 A |  | 100% |  | Preservation / Blast & Coat [83 h] |
| A36780 |  | Surface survey — overhead coating 1B — Reserve Feed Water Tank | 0d | 2026-08-06 A | 2026-08-18 |  | 30% | 0d | Preservation / Blast & Coat [407 h] |
| A38540 |  | Surface survey — deck coating 1D — Pump Room No. 2 | 0d | 2026-08-07 A | 2026-08-16 |  | 31% | 0d | Preservation / Blast & Coat [147 h] |
| A29450 |  | Blast / mechanical prep deck coating 1A — Passage & Trunk | 0d | 2026-08-07 A | 2026-08-15 | A29440 | 27% | 0d | Preservation / Blast & Coat [131 h] |
| A23250 |  | Surface survey — deck coating 2C — Mess Decks – starboard | 0d | 2026-08-08 A | 2026-08-16 |  | 22% | 0d | Preservation / Blast & Coat [88 h] |
| A36210 |  | Surface survey — deck coating 1C — Main Machinery Room No. 1 – upper level | 0d | 2026-08-08 A | 2026-08-22 |  | 14% | 0d | Preservation / Blast & Coat [466 h] |
| A29050 |  | Surface survey — bilge preservation 5A (3-152-0-Q) | 0d | 2026-08-09 A | 2026-08-13 |  | 26% | 0d | Preservation / Blast & Coat [91 h] |
| A22520 |  | Blast / mechanical prep overhead coating 8B — Enlisted mess decks | 0d | 2026-08-10 A | 2026-08-24 | A22510 FS+2.4d | 1% | 0d | Preservation / Blast & Coat [495 h] |
| A29340 |  | Surface survey — overhead coating 4E — Auxiliary Machinery Room No. 4 | 0d | 2026-08-10 A | 2026-08-21 |  |  | 0d | Preservation / Blast & Coat [96 h] |
| A36740 |  | Blast / mechanical prep overhead coating 9A — Reserve Feed Water Tank | 0d | 2026-08-10 | 2026-08-17 | A36730 FS+2.4d |  |  | Preservation / Blast & Coat [31 h]; Rigging & Weight Handling [8 h] |
| A22820 |  | Surface survey — deck coating 2A — Scullery No. 2 | 0d | 2026-08-10 | 2026-08-13 |  |  |  | Preservation / Blast & Coat [70 h] |
| A37360 |  | Blast / mechanical prep deck coating 7C — Evaporator room No. 1 | 0d | 2026-08-11 | 2026-08-17 | A37350 FS+2.4d |  |  | Preservation / Blast & Coat [219 h] |
| A23370 |  | Prime coat overhead coating 6B — Uptake Space No. 3 | 0d | 2026-08-11 | 2026-08-14 | A23360 |  |  | Preservation / Blast & Coat [113 h] |
| A38500 |  | Blast / mechanical prep overhead coating 8C — Pump Room No. 2 | 0d | 2026-08-12 | 2026-08-17 | A38490 FS+2.4d |  |  | Preservation / Blast & Coat [85 h] |
| A28400 |  | Blast / mechanical prep bilge preservation 6B — Supply department office | 0d | 2026-08-12 | 2026-08-17 | A28390 |  |  | Preservation / Blast & Coat [66 h] |
| A28800 |  | Surface survey — bilge preservation 3B — Chief Petty Officer Berthing | 0d | 2026-08-13 | 2026-08-16 |  |  |  | Preservation / Blast & Coat [58 h]; Rigging & Weight Handling [15 h] |
| A22410 |  | Surface survey — bilge preservation 4B — Scullery | 0d | 2026-08-14 | 2026-08-24 |  |  |  | Preservation / Blast & Coat [260 h] |
| A23200 |  | Surface survey — overhead coating 5B (2-160-1-Q) | 0d | 2026-08-14 | 2026-08-23 |  |  |  | Preservation / Blast & Coat [117 h] |
| A22830 |  | Blast / mechanical prep deck coating 2A — Scullery No. 2 | 0d | 2026-08-14 | 2026-08-20 | A22820 |  |  | Preservation / Blast & Coat [159 h] |
| A50980 |  | Surface survey — deck coating 5A — Void No. 2 | 0d | 2026-08-15 | 2026-08-24 |  |  |  | Preservation / Blast & Coat [69 h] |
| A22740 |  | Blast / mechanical prep deck coating 8A — Ship's store | 0d | 2026-08-15 | 2026-08-23 | A22730 |  |  | Preservation / Blast & Coat [113 h] |
| A39400 |  | Surface survey — overhead coating 6C — Switchgear Room No. 3 | 0d | 2026-08-15 | 2026-08-23 |  |  |  | Preservation / Blast & Coat [57 h] |
| A29140 |  | Surface survey — bilge preservation 6A — Auxiliary Machinery Room No. 4 | 0d | 2026-08-16 | 2026-08-18 |  |  |  | Preservation / Blast & Coat [37 h] |
| A23630 |  | Surface survey — deck coating 4A — Second deck passage No. 7 | 0d | 2026-08-16 | 2026-08-28 |  |  |  | Preservation / Blast & Coat [99 h] |
| A29060 |  | Blast / mechanical prep bilge preservation 5A (3-152-0-Q) | 0d | 2026-08-16 | 2026-08-23 | A29050 FS+2.4d |  |  | Preservation / Blast & Coat [139 h] |
| A22910 |  | Surface survey — bilge preservation 4A — Disbursing & personnel office | 0d | 2026-08-16 | 2026-08-25 |  |  |  | Preservation / Blast & Coat [250 h] |
| A23380 |  | Top coat overhead coating 6B — Uptake Space No. 3 | 0d | 2026-08-16 | 2026-08-20 | A23370 |  |  | Preservation / Blast & Coat [114 h] |
| A28810 |  | Blast / mechanical prep bilge preservation 3B — Chief Petty Officer Berthing | 0d | 2026-08-16 | 2026-08-25 | A28800 |  |  | Preservation / Blast & Coat [147 h] |
| A23580 |  | Surface survey — overhead coating 8B — Barber shop | 0d | 2026-08-16 | 2026-08-25 |  |  |  | Preservation / Blast & Coat [139 h] |
| A38750 |  | Surface survey — bilge preservation 6B — Cable Trunk & IC Space | 0d | 2026-08-17 | 2026-08-20 |  |  |  | Preservation / Blast & Coat [49 h]; Rigging & Weight Handling [13 h] |
| A22360 |  | Surface survey — bilge preservation 7A — Scullery | 0d | 2026-08-17 | 2026-08-25 |  |  |  | Preservation / Blast & Coat [101 h]; Rigging & Weight Handling [26 h] |
| A38550 |  | Blast / mechanical prep deck coating 1D — Pump Room No. 2 | 0d | 2026-08-17 | 2026-08-23 | A38540 |  |  | Preservation / Blast & Coat [97 h] |
| A29460 |  | Prime coat deck coating 1A — Passage & Trunk | 0d | 2026-08-18 | 2026-08-24 | A29450 |  |  | Preservation / Blast & Coat [48 h] |
| A23930 |  | Surface survey — overhead coating 7B — Wardroom Terminal Space | 0d | 2026-08-18 | 2026-08-26 |  |  |  | Preservation / Blast & Coat [54 h] |
| A36750 |  | Prime coat overhead coating 9A — Reserve Feed Water Tank | 0d | 2026-08-18 | 2026-08-31 | A36740 SS+2.4d |  |  | Preservation / Blast & Coat [73 h] |
| A23260 |  | Blast / mechanical prep deck coating 2C — Mess Decks – starboard | 0d | 2026-08-18 | 2026-08-22 | A23250 |  |  | Preservation / Blast & Coat [66 h] |
| A28410 |  | Prime coat bilge preservation 6B — Supply department office | 0d | 2026-08-18 | 2026-08-23 | A28400 FS+0.8d |  |  | Preservation / Blast & Coat [21 h]; Rigging & Weight Handling [6 h] |
| A38510 |  | Prime coat overhead coating 8C — Pump Room No. 2 | 0d | 2026-08-18 | 2026-08-24 | A38500 |  |  | Preservation / Blast & Coat [97 h] |
| A28300 |  | Surface survey — overhead coating 3B — Third deck trunk No. 3 | 0d | 2026-08-19 | 2026-09-02 |  |  |  | Preservation / Blast & Coat [205 h] |
| A23980 |  | Surface survey — bilge preservation 8A — Crew berthing No. 1 | 0d | 2026-08-19 | 2026-08-27 |  |  |  | Preservation / Blast & Coat [142 h] |
| A37370 |  | Prime coat deck coating 7C — Evaporator room No. 1 | 0d | 2026-08-19 | 2026-09-02 | A37360 SS+7.2d |  |  | Preservation / Blast & Coat [94 h] |
| A36790 |  | Blast / mechanical prep overhead coating 1B — Reserve Feed Water Tank | 0d | 2026-08-20 | 2026-09-03 | A36780 |  |  | Preservation / Blast & Coat [106 h] |
| A53030 |  | Surface survey — deck coating 6B — Void between reactor compartments | 0d | 2026-08-20 | 2026-08-23 |  |  |  | Preservation / Blast & Coat [78 h] |
| A29150 |  | Blast / mechanical prep bilge preservation 6A — Auxiliary Machinery Room No. 4 | 0d | 2026-08-20 | 2026-08-23 | A29140 FS+0.8d |  |  | Preservation / Blast & Coat [44 h] |
| A23390 |  | Cure & inspect overhead coating 6B — Uptake Space No. 3 | 0d | 2026-08-21 | 2026-09-02 | A23380 |  |  | Preservation / Blast & Coat [80 h] |
| A22480 |  | Prime coat bilge preservation 4A — Enlisted mess decks | 0d | 2026-08-21 | 2026-08-31 | A22470 |  |  | Preservation / Blast & Coat [87 h] |
| A29350 |  | Blast / mechanical prep overhead coating 4E — Auxiliary Machinery Room No. 4 | 0d | 2026-08-21 | 2026-08-31 | A29340 |  |  | Preservation / Blast & Coat [332 h] |
| A22840 |  | Prime coat deck coating 2A — Scullery No. 2 | 0d | 2026-08-22 | 2026-09-04 | A22830 |  |  | Preservation / Blast & Coat [77 h] |
| A38760 |  | Blast / mechanical prep bilge preservation 6B — Cable Trunk & IC Space | 0d | 2026-08-22 | 2026-08-29 | A38750 FS+0.8d |  |  | Preservation / Blast & Coat [55 h] |
| A23270 |  | Prime coat deck coating 2C — Mess Decks – starboard | 0d | 2026-08-23 | 2026-09-01 | A23260 |  |  | Preservation / Blast & Coat [74 h] |
| A29070 |  | Prime coat bilge preservation 5A (3-152-0-Q) | 0d | 2026-08-23 | 2026-08-29 | A29060 |  |  | Preservation / Blast & Coat [49 h] |
| A36220 |  | Blast / mechanical prep deck coating 1C — Main Machinery Room No. 1 – upper level | 0d | 2026-08-24 | 2026-09-05 | A36210 |  |  | Preservation / Blast & Coat [70 h] |
| A29160 |  | Prime coat bilge preservation 6A — Auxiliary Machinery Room No. 4 | 0d | 2026-08-24 | 2026-09-02 | A29150 |  |  | Preservation / Blast & Coat [254 h] |
| A23210 |  | Blast / mechanical prep overhead coating 5B (2-160-1-Q) | 0d | 2026-08-25 | 2026-08-31 | A23200 |  |  | Preservation / Blast & Coat [171 h] |
| A53040 |  | Blast / mechanical prep deck coating 6B — Void between reactor compartments | 0d | 2026-08-25 | 2026-09-05 | A53030 SS+2.4d |  |  | Preservation / Blast & Coat [230 h] |
| A39410 |  | Blast / mechanical prep overhead coating 6C — Switchgear Room No. 3 | 0d | 2026-08-25 | 2026-09-08 | A39400 |  |  | Preservation / Blast & Coat [123 h] |
| A38560 |  | Prime coat deck coating 1D — Pump Room No. 2 | 0d | 2026-08-25 | 2026-08-28 | A38550 |  |  | Preservation / Blast & Coat [35 h] |
| A22420 |  | Blast / mechanical prep bilge preservation 4B — Scullery | 0d | 2026-08-25 | 2026-09-06 | A22410 |  |  | Preservation / Blast & Coat [126 h] |
| A38520 |  | Top coat overhead coating 8C — Pump Room No. 2 | 0d | 2026-08-26 | 2026-08-31 | A38510 |  |  | Preservation / Blast & Coat [38 h] |

| ID | Activity | Duration | Start | Finish | Predecessors | Resources |
| --- | --- | --- | --- | --- | --- | --- |
| A22530 | Prime coat overhead coating 8B — Enlisted mess decks | 0d | 2026-08-26 | 2026-09-08 | A22520 SS+2.4d | Preservation / Blast & Coat [83 h] |
| A22750 | Prime coat deck coating 8A — Ship's store | 0d | 2026-08-26 | 2026-08-28 | A22740 | Preservation / Blast & Coat [70 h] |
| A28420 | Top coat bilge preservation 6B — Supply department office | 0d | 2026-08-26 | 2026-08-31 | A28410 | Preservation / Blast & Coat [43 h] |
| A23940 | Blast / mechanical prep overhead coating 7B — Wardroom Terminal Space | 0d | 2026-08-26 | 2026-09-06 | A23930 SS+7.2d | Preservation / Blast & Coat [192 h] |
| A22920 | Blast / mechanical prep bilge preservation 4A — Disbursing & personnel office | 0d | 2026-08-26 | 2026-08-29 | A22910 | Preservation / Blast & Coat [107 h] |
| A50990 | Blast / mechanical prep deck coating 5A — Void No. 2 | 0d | 2026-08-26 | 2026-09-02 | A50980 | Preservation / Blast & Coat [75 h] |
| A22370 | Blast / mechanical prep bilge preservation 7A — Scullery | 0d | 2026-08-27 | 2026-09-01 | A22360 FS+0.8d | Preservation / Blast & Coat [40 h] |
| A29470 | Top coat deck coating 1A — Passage & Trunk | 0d | 2026-08-27 | 2026-09-08 | A29460 | Preservation / Blast & Coat [181 h] |
| A23590 | Blast / mechanical prep overhead coating 8B — Barber shop | 0d | 2026-08-28 | 2026-09-06 | A23580 | Preservation / Blast & Coat [88 h]; Rigging & Weight Handling [22 h] |
| A28820 | Prime coat bilge preservation 3B — Chief Petty Officer Berthing | 0d | 2026-08-28 | 2026-09-01 | A28810 | Preservation / Blast & Coat [30 h] |
| A23990 | Blast / mechanical prep bilge preservation 8A — Crew berthing No. 1 | 0d | 2026-08-28 | 2026-09-03 | A23980 | Preservation / Blast & Coat [73 h] |
| A38570 | Top coat deck coating 1D — Pump Room No. 2 | 0d | 2026-08-29 | 2026-08-31 | A38560 FS+0.8d | Preservation / Blast & Coat [15 h] |
| A22760 | Top coat deck coating 8A — Ship's store | 0d | 2026-08-29 | 2026-09-11 | A22750 SS+4.8d | Preservation / Blast & Coat [216 h] |
| A23640 | Blast / mechanical prep deck coating 4A — Second deck passage No. 7 | 0d | 2026-08-29 | 2026-09-06 | A23630 | Preservation / Blast & Coat [139 h] |
| A22930 | Prime coat bilge preservation 4A — Disbursing & personnel office | 0d | 2026-08-30 | 2026-09-03 | A22920 | Preservation / Blast & Coat [20 h]; Rigging & Weight Handling [5 h] |
| A29080 | Top coat bilge preservation 5A (3-152-0-Q) | 0d | 2026-08-31 | 2026-09-02 | A29070 | Preservation / Blast & Coat [16 h] |
| A38770 | Prime coat bilge preservation 6B — Cable Trunk & IC Space | 0d | 2026-08-31 | 2026-09-02 | A38760 | Preservation / Blast & Coat [13 h] |
| A36760 | Top coat overhead coating 9A — Reserve Feed Water Tank | 0d | 2026-08-31 | 2026-09-11 | A36750 | Preservation / Blast & Coat [94 h] |
| A23220 | Prime coat overhead coating 5B (2-160-1-Q) | 0d | 2026-08-31 | 2026-09-10 | A23210 FS+0.8d | Preservation / Blast & Coat [215 h] |
| A28430 | Cure & inspect bilge preservation 6B — Supply department office | 0d | 2026-09-01 | 2026-09-12 | A28420 | Preservation / Blast & Coat [196 h] |
| A38580 | Cure & inspect deck coating 1D — Pump Room No. 2 | 0d | 2026-09-01 | 2026-09-05 | A38570 FS+2.4d | Preservation / Blast & Coat [23 h] |
| A29360 | Prime coat overhead coating 4E — Auxiliary Machinery Room No. 4 | 0d | 2026-09-01 | 2026-09-12 | A29350 FS+2.4d | Preservation / Blast & Coat [69 h] |
| A38530 | Cure & inspect overhead coating 8C — Pump Room No. 2 | 0d | 2026-09-02 | 2026-09-11 | A38520 | Preservation / Blast & Coat [226 h] |
| A22490 | Top coat bilge preservation 4A — Enlisted mess decks | 0d | 2026-09-02 | 2026-09-10 | A22480 | Preservation / Blast & Coat [120 h]; Rigging & Weight Handling [30 h] |
| A51000 | Prime coat deck coating 5A — Void No. 2 | 0d | 2026-09-03 | 2026-09-13 | A50990 FS+2.4d | Preservation / Blast & Coat [120 h] |
| A28830 | Top coat bilge preservation 3B — Chief Petty Officer Berthing | 0d | 2026-09-03 | 2026-09-07 | A28820 | Preservation / Blast & Coat [138 h] |
| A29170 | Top coat bilge preservation 6A — Auxiliary Machinery Room No. 4 | 0d | 2026-09-03 | 2026-09-06 | A29160 FS+0.8d | Preservation / Blast & Coat [39 h]; Rigging & Weight Handling [10 h] |
| A23280 | Top coat deck coating 2C — Mess Decks – starboard | 0d | 2026-09-03 | 2026-09-09 | A23270 | Preservation / Blast & Coat [44 h] |
| A22380 | Prime coat bilge preservation 7A — Scullery | 0d | 2026-09-04 | 2026-09-14 | A22370 | Preservation / Blast & Coat [162 h] |
| A37380 | Top coat deck coating 7C — Evaporator room No. 1 | 0d | 2026-09-04 | 2026-09-11 | A37370 | Preservation / Blast & Coat [106 h] |
| A28310 | Blast / mechanical prep overhead coating 3B — Third deck trunk No. 3 | 0d | 2026-09-04 | 2026-09-16 | A28300 | Preservation / Blast & Coat [78 h] |
| A36800 | Prime coat overhead coating 1B — Reserve Feed Water Tank | 0d | 2026-09-04 | 2026-09-08 | A36790 FS+2.4d | Preservation / Blast & Coat [55 h] |
| A22940 | Top coat bilge preservation 4A — Disbursing & personnel office | 0d | 2026-09-04 | 2026-09-10 | A22930 | Preservation / Blast & Coat [155 h] |
| A29090 | Cure & inspect bilge preservation 5A (3-152-0-Q) | 0d | 2026-09-05 | 2026-09-18 | A29080 FS+2.4d | Preservation / Blast & Coat [429 h] |
| A22850 | Top coat deck coating 2A — Scullery No. 2 | 0d | 2026-09-05 | 2026-09-11 | A22840 | Preservation / Blast & Coat [50 h] |
| A38780 | Top coat bilge preservation 6B — Cable Trunk & IC Space | 0d | 2026-09-05 | 2026-09-08 | A38770 FS+2.4d | Preservation / Blast & Coat [17 h] |
| A53050 | Prime coat deck coating 6B — Void between reactor compartments | 0d | 2026-09-05 | 2026-09-14 | A53040 FS+0.8d | Preservation / Blast & Coat [67 h] |
| A24000 | Prime coat bilge preservation 8A — Crew berthing No. 1 | 0d | 2026-09-05 | 2026-09-13 | A23990 | Preservation / Blast & Coat [56 h] |
| A36230 | Prime coat deck coating 1C — Main Machinery Room No. 1 – upper level | 0d | 2026-09-06 | 2026-09-08 | A36220 FS+2.4d | Preservation / Blast & Coat [16 h]; Rigging & Weight Handling [5 h] |
| A23650 | Prime coat deck coating 4A — Second deck passage No. 7 | 0d | 2026-09-07 | 2026-09-18 | A23640 | Preservation / Blast & Coat [170 h] |
| A29180 | Cure & inspect bilge preservation 6A — Auxiliary Machinery Room No. 4 | 0d | 2026-09-07 | 2026-09-14 | A29170 | Preservation / Blast & Coat [76 h] |
| A22430 | Prime coat bilge preservation 4B — Scullery | 0d | 2026-09-08 | 2026-09-12 | A22420 FS+2.4d | Preservation / Blast & Coat [23 h] |
| A23600 | Prime coat overhead coating 8B — Barber shop | 0d | 2026-09-08 | 2026-09-18 | A23590 FS+0.8d | Preservation / Blast & Coat [163 h] |
| A28840 | Cure & inspect bilge preservation 3B — Chief Petty Officer Berthing | 0d | 2026-09-08 | 2026-09-18 | A28830 FS+2.4d | Preservation / Blast & Coat [173 h]; Rigging & Weight Handling [44 h] |
| A23950 | Prime coat overhead coating 7B — Wardroom Terminal Space | 0d | 2026-09-09 | 2026-09-19 | A23940 FS+0.8d | Preservation / Blast & Coat [335 h] |
| A29480 | Cure & inspect deck coating 1A — Passage & Trunk | 0d | 2026-09-09 | 2026-09-18 | A29470 FS+2.4d | Preservation / Blast & Coat [295 h] |
| A39420 | Prime coat overhead coating 6C — Switchgear Room No. 3 | 0d | 2026-09-09 | 2026-09-13 | A39410 | Preservation / Blast & Coat [21 h] |
| A22540 | Top coat overhead coating 8B — Enlisted mess decks | 0d | 2026-09-09 | 2026-09-16 | A22530 | Preservation / Blast & Coat [51 h] |
| A36240 | Top coat deck coating 1C — Main Machinery Room No. 1 – upper level | 0d | 2026-09-09 | 2026-09-20 | A36230 FS+0.8d | Preservation / Blast & Coat [265 h] |
| A23290 | Cure & inspect deck coating 2C — Mess Decks – starboard | 0d | 2026-09-09 | 2026-09-22 | A23280 | Preservation / Blast & Coat [103 h] |
| A36810 | Top coat overhead coating 1B — Reserve Feed Water Tank | 0d | 2026-09-10 | 2026-09-21 | A36800 | Preservation / Blast & Coat [76 h] |
| A38790 | Cure & inspect bilge preservation 6B — Cable Trunk & IC Space | 0d | 2026-09-10 | 2026-09-14 | A38780 | Preservation / Blast & Coat [46 h] |
| A22950 | Cure & inspect bilge preservation 4A — Disbursing & personnel office | 0d | 2026-09-11 | 2026-09-23 | A22940 FS+0.8d | Preservation / Blast & Coat [240 h]; Rigging & Weight Handling [61 h] |
| A23230 | Top coat overhead coating 5B (2-160-1-Q) | 0d | 2026-09-11 | 2026-09-22 | A23220 | Preservation / Blast & Coat [262 h] |
| A36770 | Cure & inspect overhead coating 9A — Reserve Feed Water Tank | 0d | 2026-09-12 | 2026-09-18 | A36760 FS+0.8d | Preservation / Blast & Coat [98 h] |
| A22860 | Cure & inspect deck coating 2A — Scullery No. 2 | 0d | 2026-09-12 | 2026-09-22 | A22850 FS+0.8d | Preservation / Blast & Coat [88 h] |
| A22770 | Cure & inspect deck coating 8A — Ship's store | 0d | 2026-09-12 | 2026-09-19 | A22760 FS+2.4d | Preservation / Blast & Coat [122 h] |
| A22440 | Top coat bilge preservation 4B — Scullery | 0d | 2026-09-13 | 2026-09-18 | A22430 | Preservation / Blast & Coat [146 h] |
| A22500 | Cure & inspect bilge preservation 4A — Enlisted mess decks | 0d | 2026-09-13 | 2026-09-19 | A22490 | Preservation / Blast & Coat [87 h] |
| A37390 | Cure & inspect deck coating 7C — Evaporator room No. 1 | 0d | 2026-09-13 | 2026-09-27 | A37380 | Preservation / Blast & Coat [120 h] |
| A53060 | Top coat deck coating 6B — Void between reactor compartments | 0d | 2026-09-15 | 2026-09-28 | A53050 | Preservation / Blast & Coat [320 h] |
| A29370 | Top coat overhead coating 4E — Auxiliary Machinery Room No. 4 | 0d | 2026-09-15 | 2026-09-18 | A29360 FS+2.4d | Preservation / Blast & Coat [43 h] |
| A39430 | Top coat overhead coating 6C — Switchgear Room No. 3 | 0d | 2026-09-15 | 2026-09-24 | A39420 | Preservation / Blast & Coat [147 h] |
| A22390 | Top coat bilge preservation 7A — Scullery | 0d | 2026-09-16 | 2026-09-27 | A22380 | Preservation / Blast & Coat [349 h] |
| A24010 | Top coat bilge preservation 8A — Crew berthing No. 1 | 0d | 2026-09-16 | 2026-09-20 | A24000 FS+2.4d | Preservation / Blast & Coat [26 h] |
| A51010 | Top coat deck coating 5A — Void No. 2 | 0d | 2026-09-16 | 2026-09-19 | A51000 | Preservation / Blast & Coat [40 h] |
| A23660 | Top coat deck coating 4A — Second deck passage No. 7 | 0d | 2026-09-18 | 2026-10-01 | A23650 | Preservation / Blast & Coat [327 h] |
| A28320 | Prime coat overhead coating 3B — Third deck trunk No. 3 | 0d | 2026-09-18 | 2026-09-20 | A28310 | Preservation / Blast & Coat [19 h] |
| A23610 | Top coat overhead coating 8B — Barber shop | 0d | 2026-09-18 | 2026-09-21 | A23600 FS+0.8d | Preservation / Blast & Coat [50 h] |
| A22550 | Cure & inspect overhead coating 8B — Enlisted mess decks | 0d | 2026-09-19 | 2026-09-28 | A22540 FS+2.4d | Preservation / Blast & Coat [151 h] |

| ID | WBS | Activity | Duration | Start | Finish | Predecessors | Complete | Remaining | Resources |
| --- | --- | --- | --- | --- | --- | --- | --- | --- | --- |
| A22450 |  | Cure & inspect bilge preservation 4B — Scullery | 0d | 2026-09-20 | 2026-09-27 | A22440 FS+2.4d |  |  | Preservation / Blast & Coat [262 h] |
| A29380 |  | Cure & inspect overhead coating 4E — Auxiliary Machinery Room No. 4 | 0d | 2026-09-20 | 2026-09-29 | A29370 |  |  | Preservation / Blast & Coat [354 h] |
| A23960 |  | Top coat overhead coating 7B — Wardroom Terminal Space | 0d | 2026-09-20 | 2026-10-01 | A23950 |  |  | Preservation / Blast & Coat [145 h] |
| A28330 |  | Top coat overhead coating 3B — Third deck trunk No. 3 | 0d | 2026-09-20 | 2026-09-29 | A28320 FS+2.4d |  |  | Preservation / Blast & Coat [309 h] |
| A51020 |  | Cure & inspect deck coating 5A — Void No. 2 | 0d | 2026-09-21 | 2026-09-27 | A51010 |  |  | Preservation / Blast & Coat [160 h] |
| A36820 |  | Cure & inspect overhead coating 1B — Reserve Feed Water Tank | 0d | 2026-09-22 | 2026-10-01 | A36810 FS+0.8d |  |  | Preservation / Blast & Coat [59 h] |
| A23620 |  | Cure & inspect overhead coating 8B — Barber shop | 0d | 2026-09-23 | 2026-10-02 | A23610 |  |  | Preservation / Blast & Coat [345 h] |
| A36250 |  | Cure & inspect deck coating 1C — Main Machinery Room No. 1 – upper level | 0d | 2026-09-23 | 2026-10-02 | A36240 |  |  | Preservation / Blast & Coat [130 h]; Rigging & Weight Handling [33 h] |
| A24020 |  | Cure & inspect bilge preservation 8A — Crew berthing No. 1 | 0d | 2026-09-23 | 2026-10-04 | A24010 FS+0.8d |  |  | Preservation / Blast & Coat [311 h] |
| A23240 |  | Cure & inspect overhead coating 5B (2-160-1-Q) | 0d | 2026-09-24 | 2026-09-28 | A23230 |  |  | Preservation / Blast & Coat [88 h] |
| A39440 |  | Cure & inspect overhead coating 6C — Switchgear Room No. 3 | 0d | 2026-09-26 | 2026-10-02 | A39430 |  |  | Preservation / Blast & Coat [57 h] |
| A22400 |  | Cure & inspect bilge preservation 7A — Scullery | 0d | 2026-09-29 | 2026-10-12 | A22390 |  |  | Preservation / Blast & Coat [177 h] |
| A23970 |  | Cure & inspect overhead coating 7B — Wardroom Terminal Space | 0d | 2026-10-01 | 2026-10-05 | A23960 FS+2.4d |  |  | Preservation / Blast & Coat [78 h] |
| A28340 |  | Cure & inspect overhead coating 3B — Third deck trunk No. 3 | 0d | 2026-10-01 | 2026-10-06 | A28330 |  |  | Preservation / Blast & Coat [180 h] |
| A53070 |  | Cure & inspect deck coating 6B — Void between reactor compartments | 0d | 2026-10-01 | 2026-10-08 | A53060 FS+2.4d |  |  | Preservation / Blast & Coat [126 h]; Rigging & Weight Handling [32 h] |
| A23670 |  | Cure & inspect deck coating 4A — Second deck passage No. 7 | 0d | 2026-10-03 | 2026-10-10 | A23660 FS+2.4d |  |  | Preservation / Blast & Coat [115 h]; Rigging & Weight Handling [29 h] |
|  | SVC | **Zone Services & Access** |  | 2026-07-28 | 2026-10-12 |  |  |  |  |
| A56130 |  | Clear lay-down 12 — Propulsion Plant & Midships | 0d | 2026-07-28 A | 2026-08-02 A |  | 100% |  | Rigging & Weight Handling [44 h] |
| A56110 |  | Reposition temp vent 11 — Propulsion Plant & Midships | 0d | 2026-07-30 A | 2026-08-02 A |  | 100% |  | Sheet Metal / HVAC [50 h] |
| A55950 |  | Strike scaffolding — Propulsion Plant & Midships band 3 | 0d | 2026-07-30 A | 2026-08-06 A |  | 100% |  | Rigging & Weight Handling [124 h] |
| A55910 |  | Clear lay-down 1 — Propulsion Plant & Midships | 0d | 2026-07-30 A | 2026-08-09 A |  | 100% |  | Rigging & Weight Handling [172 h] |
| A55930 |  | Material staging & lay-down 2 — Propulsion Plant & Midships | 0d | 2026-08-01 A | 2026-08-08 A |  | 100% |  | Rigging & Weight Handling [236 h] |
| A56050 |  | Temp ventilation trunk 8 — Propulsion Plant & Midships | 0d | 2026-08-03 A | 2026-08-08 A |  | 100% |  | Sheet Metal / HVAC [34 h] |
| A56070 |  | Material staging & lay-down 9 — Propulsion Plant & Midships | 0d | 2026-08-07 A | 2026-08-10 |  | 71% | 0d | Rigging & Weight Handling [41 h] |
| A55970 |  | Reposition temp vent 4 — Propulsion Plant & Midships | 0d | 2026-08-11 | 2026-08-13 |  |  |  | Sheet Metal / HVAC [34 h] |
| A55990 |  | Stage scaffolding — Propulsion Plant & Midships band 5 | 0d | 2026-08-15 | 2026-08-22 |  |  |  | Rigging & Weight Handling [49 h] |
| A56010 |  | Material staging & lay-down 6 — Propulsion Plant & Midships | 0d | 2026-08-18 | 2026-08-22 |  |  |  | Rigging & Weight Handling [28 h] |
| A56090 |  | Clear lay-down 10 — Propulsion Plant & Midships | 0d | 2026-08-20 | 2026-08-27 |  |  |  | Rigging & Weight Handling [41 h] |
| A56030 |  | Temp ventilation trunk 7 — Propulsion Plant & Midships | 0d | 2026-08-21 | 2026-08-29 |  |  |  | Sheet Metal / HVAC [122 h] |
| A56080 |  | Clear lay-down 9 — Propulsion Plant & Midships | 0d | 2026-08-22 | 2026-08-24 | A56070 |  |  | Rigging & Weight Handling [17 h] |
| A56140 |  | Material staging & lay-down 12 — Propulsion Plant & Midships | 0d | 2026-08-23 | 2026-09-01 | A56130 |  |  | Rigging & Weight Handling [82 h] |
| A56120 |  | Temp ventilation trunk 11 — Propulsion Plant & Midships | 0d | 2026-08-28 | 2026-09-02 | A56110 |  |  | Sheet Metal / HVAC [77 h] |
| A56020 |  | Clear lay-down 6 — Propulsion Plant & Midships | 0d | 2026-08-29 | 2026-09-06 | A56010 |  |  | Rigging & Weight Handling [187 h] |
| A55980 |  | Temp ventilation trunk 4 — Propulsion Plant & Midships | 0d | 2026-08-30 | 2026-09-08 | A55970 |  |  | Sheet Metal / HVAC [266 h] |
| A55920 |  | Material staging & lay-down 1 — Propulsion Plant & Midships | 0d | 2026-09-01 | 2026-09-03 | A55910 |  |  | Rigging & Weight Handling [41 h] |
| A56040 |  | Reposition temp vent 7 — Propulsion Plant & Midships | 0d | 2026-09-04 | 2026-09-09 | A56030 |  |  | Sheet Metal / HVAC [26 h] |
| A55940 |  | Clear lay-down 2 — Propulsion Plant & Midships | 0d | 2026-09-09 | 2026-09-17 | A55930 |  |  | Rigging & Weight Handling [64 h] |
| A56060 |  | Reposition temp vent 8 — Propulsion Plant & Midships | 0d | 2026-09-14 | 2026-09-17 | A56050 |  |  | Sheet Metal / HVAC [66 h] |
| A55960 |  | Rig access platforms — Propulsion Plant & Midships band 3 | 0d | 2026-09-15 | 2026-09-25 | A55950 |  |  | Rigging & Weight Handling [257 h] |
| A56000 |  | Rig access platforms — Propulsion Plant & Midships band 5 | 0d | 2026-09-18 | 2026-09-21 | A55990 |  |  | Rigging & Weight Handling [22 h] |
| A56100 |  | Material staging & lay-down 10 — Propulsion Plant & Midships | 0d | 2026-10-04 | 2026-10-12 | A56090 |  |  | Rigging & Weight Handling [68 h] |

| ID | WBS | Activity | Duration | Start | Finish | Predecessors | Complete | Remaining | Resources |
| --- | --- | --- | --- | --- | --- | --- | --- | --- | --- |
|  | Z5 | **Zone 5 — Aft Below-Decks** |  | 2026-07-27 | 2026-10-30 |  |  |  |  |
|  | 130 | **130 Hull Structure** |  | 2026-07-27 | 2026-10-10 |  |  |  |  |
| A52090 |  | NDT survey — structural bay 7B — Ballast pump room No. 5 | 0d | 2026-07-27 A | 2026-08-10 |  | 87% | 0d | Structural Welding [245 h] |
| A52040 |  | NDT survey — deck insert 3A — Ballast pump room No. 5 | 0d | 2026-07-27 A | 2026-08-03 A |  | 100% |  | Structural Welding [49 h] |
| A51610 |  | NDT survey — structural bay 9A — Cofferdam No. 2 | 0d | 2026-07-28 A | 2026-08-07 A |  | 100% |  | Structural Welding [72 h] |
| A48230 |  | NDT survey — deck insert 3A — Aft magazine No. 2 – lower level | 0d | 2026-07-31 A | 2026-08-13 |  | 69% | 0d | Structural Welding [164 h] |
| A52050 |  | Crop out deck insert 3A — Ballast pump room No. 5 | 0d | 2026-08-03 A | 2026-08-10 | A52040 | 83% | 0d | Structural Welding [79 h]; Rigging & Weight Handling [20 h] |
| A51880 |  | NDT survey — foundation group 8B — Ballast pump room No. 3 | 0d | 2026-08-03 A | 2026-08-08 A |  | 100% |  | Structural Welding [29 h] |
| A42130 |  | NDT survey — deck insert 1A — Aft magazine No. 1 – upper level | 0d | 2026-08-05 A | 2026-08-13 |  | 56% | 0d | Structural Welding [240 h] |
| A41290 |  | NDT survey — foundation group 7F — Electrical distribution room No. 2 | 0d | 2026-08-06 A | 2026-08-14 |  | 46% | 0d | Structural Welding [218 h] |
| A07010 |  | NDT survey — structural bay 6B — Arresting gear engine room No. 4 | 0d | 2026-08-06 A | 2026-08-19 |  | 28% | 0d | Structural Welding [71 h]; Rigging & Weight Handling [18 h] |
| A07430 |  | NDT survey — foundation group 2B — Arresting gear sheave room – port | 0d | 2026-08-08 A | 2026-08-19 |  | 18% | 0d | Structural Welding [67 h] |
| A14900 |  | NDT survey — foundation group 4A — Aft mooring station – port | 0d | 2026-08-08 A | 2026-08-18 |  | 15% | 0d | Structural Welding [79 h] |
| A47910 |  | NDT survey — foundation group 2A — Void No. 3 | 0d | 2026-08-08 A | 2026-08-13 |  | 28% | 0d | Structural Welding [122 h] |
| A07330 |  | NDT survey — structural bay 4B — Arresting gear sheave room – starboard | 0d | 2026-08-09 A | 2026-08-21 |  | 8% | 0d | Structural Welding [156 h] |
| A51620 |  | Crop out structural bay 9A — Cofferdam No. 2 | 0d | 2026-08-09 A | 2026-08-13 | A51610 FS+2.4d | 25% | 0d | Structural Welding [119 h] |
| A42560 |  | NDT survey — deck insert 5D — Emergency diesel generator room No. 4 | 0d | 2026-08-10 | 2026-08-24 |  |  |  | Structural Welding [228 h] |
| A51890 |  | Crop out foundation group 8B — Ballast pump room No. 3 | 0d | 2026-08-11 | 2026-08-21 | A51880 FS+2.4d |  |  | Structural Welding [131 h] |
| A52100 |  | Crop out structural bay 7B — Ballast pump room No. 5 | 0d | 2026-08-11 | 2026-08-16 | A52090 |  |  | Structural Welding [39 h] |
| A48010 |  | NDT survey — foundation group 3A — Storeroom No. 2 | 0d | 2026-08-12 | 2026-08-20 |  |  |  | Structural Welding [130 h]; Rigging & Weight Handling [33 h] |
| A51130 |  | NDT survey — foundation group 6C — Aft JP-5 transfer pump room | 0d | 2026-08-12 | 2026-08-21 |  |  |  | Structural Welding [78 h] |
| A52060 |  | Fit & weld deck insert 3A — Ballast pump room No. 5 | 0d | 2026-08-13 | 2026-08-17 | A52050 |  |  | Structural Welding [30 h] |
| A42140 |  | Crop out deck insert 1A — Aft magazine No. 1 – upper level | 0d | 2026-08-14 | 2026-08-24 | A42130 FS+2.4d |  |  | Structural Welding [154 h] |
| A51630 |  | Fit & weld structural bay 9A — Cofferdam No. 2 | 0d | 2026-08-14 | 2026-08-22 | A51620 |  |  | Structural Welding [165 h] |
| A47920 |  | Crop out foundation group 2A — Void No. 3 | 0d | 2026-08-15 | 2026-08-24 | A47910 FS+0.8d |  |  | Structural Welding [227 h] |
| A46740 |  | NDT survey — deck insert 7D — Aft fire pump room | 0d | 2026-08-15 | 2026-08-25 |  |  |  | Structural Welding [88 h] |
| A41300 |  | Crop out foundation group 7F — Electrical distribution room No. 2 | 0d | 2026-08-15 | 2026-08-26 | A41290 FS-1.6d |  |  | Structural Welding [202 h] |
| A48240 |  | Crop out deck insert 3A — Aft magazine No. 2 – lower level | 0d | 2026-08-16 | 2026-08-29 | A48230 |  |  | Structural Welding [110 h] |
| A52110 |  | Fit & weld structural bay 7B — Ballast pump room No. 5 | 0d | 2026-08-16 | 2026-08-26 | A52100 SS+2.4d |  |  | Structural Welding [80 h] |
| A52070 |  | NDT acceptance — deck insert 3A — Ballast pump room No. 5 | 0d | 2026-08-18 | 2026-08-24 | A52060 FS+0.8d |  |  | Structural Welding [45 h] |
| A14910 |  | Crop out foundation group 4A — Aft mooring station – port | 0d | 2026-08-19 | 2026-08-25 | A14900 |  |  | Structural Welding [91 h] |
| A19970 |  | NDT survey — foundation group 1A — Aft mooring gear room | 0d | 2026-08-19 | 2026-08-25 |  |  |  | Structural Welding [105 h] |
| A41810 |  | NDT survey — structural bay 8C — Fan room No. 3 | 0d | 2026-08-19 | 2026-08-21 |  |  |  | Structural Welding [58 h] |
| A19710 |  | NDT survey — foundation group 8A — Fantail | 0d | 2026-08-19 | 2026-08-28 |  |  |  | Structural Welding [164 h] |
| A07440 |  | Crop out foundation group 2B — Arresting gear sheave room – port | 0d | 2026-08-20 | 2026-09-01 | A07430 |  |  | Structural Welding [363 h] |
| A07020 |  | Crop out structural bay 6B — Arresting gear engine room No. 4 | 0d | 2026-08-20 | 2026-08-30 | A07010 |  |  | Structural Welding [115 h] |
| A41820 |  | Crop out structural bay 8C — Fan room No. 3 | 0d | 2026-08-21 | 2026-08-28 | A41810 SS+7.2d |  |  | Structural Welding [127 h] |
| A51900 |  | Fit & weld foundation group 8B — Ballast pump room No. 3 | 0d | 2026-08-21 | 2026-08-24 | A51890 |  |  | Structural Welding [80 h] |
| A51140 |  | Crop out foundation group 6C — Aft JP-5 transfer pump room | 0d | 2026-08-22 | 2026-08-28 | A51130 |  |  | Structural Welding [107 h] |
| A07340 |  | Crop out structural bay 4B — Arresting gear sheave room – starboard | 0d | 2026-08-22 | 2026-08-26 | A07330 |  |  | Structural Welding [51 h] |
| A48020 |  | Crop out foundation group 3A — Storeroom No. 2 | 0d | 2026-08-23 | 2026-08-30 | A48010 |  |  | Structural Welding [41 h] |
| A42570 |  | Crop out deck insert 5D — Emergency diesel generator room No. 4 | 0d | 2026-08-24 | 2026-09-03 | A42560 |  |  | Structural Welding [331 h] |
| A51910 |  | NDT acceptance — foundation group 8B — Ballast pump room No. 3 | 0d | 2026-08-25 | 2026-09-05 | A51900 |  |  | Structural Welding [391 h] |
| A52080 |  | Grind & dress deck insert 3A — Ballast pump room No. 5 | 0d | 2026-08-25 | 2026-09-01 | A52070 FS+2.4d |  |  | Structural Welding [118 h] |
| A47930 |  | Fit & weld foundation group 2A — Void No. 3 | 0d | 2026-08-25 | 2026-08-31 | A47920 |  |  | Structural Welding [146 h] |
| A51640 |  | NDT acceptance — structural bay 9A — Cofferdam No. 2 | 0d | 2026-08-25 | 2026-08-30 | A51630 |  |  | Structural Welding [24 h] |
| A19980 |  | Crop out foundation group 1A — Aft mooring gear room | 0d | 2026-08-26 | 2026-09-03 | A19970 |  |  | Structural Welding [69 h] |
| A42150 |  | Fit & weld deck insert 1A — Aft magazine No. 1 – upper level | 0d | 2026-08-26 | 2026-09-01 | A42140 |  |  | Structural Welding [194 h] |
| A46750 |  | Crop out deck insert 7D — Aft fire pump room | 0d | 2026-08-26 | 2026-08-28 | A46740 SS+7.2d |  |  | Structural Welding [51 h] |
| A41310 |  | Fit & weld foundation group 7F — Electrical distribution room No. 2 | 0d | 2026-08-27 | 2026-09-06 | A41300 SS+7.2d |  |  | Structural Welding [62 h] |
| A14920 |  | Fit & weld foundation group 4A — Aft mooring station – port | 0d | 2026-08-27 | 2026-09-06 | A14910 |  |  | Structural Welding [80 h] |
| A07350 |  | Fit & weld structural bay 4B — Arresting gear sheave room – starboard | 0d | 2026-08-28 | 2026-09-09 | A07340 |  |  | Structural Welding [320 h] |
| A52120 |  | NDT acceptance — structural bay 7B — Ballast pump room No. 5 | 0d | 2026-08-28 | 2026-09-05 | A52110 FS+2.4d |  |  | Structural Welding [174 h] |
| A41830 |  | Fit & weld structural bay 8C — Fan room No. 3 | 0d | 2026-08-30 | 2026-09-02 | A41820 |  |  | Structural Welding [102 h] |
| A19720 |  | Crop out foundation group 8A — Fantail | 0d | 2026-08-30 | 2026-09-06 | A19710 |  |  | Structural Welding [93 h] |
| A46760 |  | Fit & weld deck insert 7D — Aft fire pump room | 0d | 2026-08-30 | 2026-09-07 | A46750 FS+2.4d |  |  | Structural Welding [197 h] |
| A48250 |  | Fit & weld deck insert 3A — Aft magazine No. 2 – lower level | 0d | 2026-08-30 | 2026-09-13 | A48240 |  |  | Structural Welding [394 h] |
| A51150 |  | Fit & weld foundation group 6C — Aft JP-5 transfer pump room | 0d | 2026-08-31 | 2026-09-07 | A51140 |  |  | Structural Welding [46 h] |
| A48030 |  | Fit & weld foundation group 3A — Storeroom No. 2 | 0d | 2026-09-01 | 2026-09-04 | A48020 |  |  | Structural Welding [33 h] |
| A51650 |  | Grind & dress structural bay 9A — Cofferdam No. 2 | 0d | 2026-09-01 | 2026-09-07 | A51640 |  |  | Structural Welding [37 h] |
| A07030 |  | Fit & weld structural bay 6B — Arresting gear engine room No. 4 | 0d | 2026-09-02 | 2026-09-07 | A07020 |  |  | Structural Welding [41 h] |
| A47940 |  | NDT acceptance — foundation group 2A — Void No. 3 | 0d | 2026-09-03 | 2026-09-10 | A47930 FS+0.8d |  |  | Structural Welding [87 h] |
| A07450 |  | Fit & weld foundation group 2B — Arresting gear sheave room – port | 0d | 2026-09-03 | 2026-09-09 | A07440 |  |  | Structural Welding [117 h] |
| A42160 |  | NDT acceptance — deck insert 1A — Aft magazine No. 1 – upper level | 0d | 2026-09-03 | 2026-09-13 | A42150 FS+0.8d |  |  | Structural Welding [85 h] |
| A48040 |  | NDT acceptance — foundation group 3A — Storeroom No. 2 | 0d | 2026-09-05 | 2026-09-10 | A48030 |  |  | Structural Welding [100 h] |
| A41840 |  | NDT acceptance — structural bay 8C — Fan room No. 3 | 0d | 2026-09-05 | 2026-09-13 | A41830 |  |  | Structural Welding [59 h] |
| A42580 |  | Fit & weld deck insert 5D — Emergency diesel generator room No. 4 | 0d | 2026-09-05 | 2026-09-16 | A42570 FS+0.8d |  |  | Structural Welding [172 h] |
| A51920 |  | Grind & dress foundation group 8B — Ballast pump room No. 3 | 0d | 2026-09-05 | 2026-09-14 | A51910 FS+2.4d |  |  | Structural Welding [145 h] |
| A19990 |  | Fit & weld foundation group 1A — Aft mooring gear room | 0d | 2026-09-06 | 2026-09-14 | A19980 |  |  | Structural Welding [172 h] |
| A52130 |  | Grind & dress structural bay 7B — Ballast pump room No. 5 | 0d | 2026-09-07 | 2026-09-14 | A52120 FS+0.8d |  |  | Structural Welding [147 h] |

| ID | Activity | Duration | Start | Finish | Predecessors | Resources |
| --- | --- | --- | --- | --- | --- | --- |
| A41320 | NDT acceptance — foundation group 7F — Electrical distribution room No. 2 | 0d | 2026-09-07 | 2026-09-13 | A41310 FS+2.4d | Structural Welding [101 h] |
| A19730 | Fit & weld foundation group 8A — Fantail | 0d | 2026-09-09 | 2026-09-15 | A19720 | Structural Welding [44 h] |
| A46770 | NDT acceptance — deck insert 7D — Aft fire pump room | 0d | 2026-09-09 | 2026-09-17 | A46760 | Structural Welding [184 h]; Rigging & Weight Handling [47 h] |
| A14930 | NDT acceptance — foundation group 4A — Aft mooring station – port | 0d | 2026-09-09 | 2026-09-13 | A14920 | Structural Welding [44 h] |
| A07360 | NDT acceptance — structural bay 4B — Arresting gear sheave room – starboard | 0d | 2026-09-09 | 2026-09-20 | A07350 | Structural Welding [143 h] |
| A07040 | NDT acceptance — structural bay 6B — Arresting gear engine room No. 4 | 0d | 2026-09-09 | 2026-09-13 | A07030 FS+2.4d | Structural Welding [93 h] |
| A51160 | NDT acceptance — foundation group 6C — Aft JP-5 transfer pump room | 0d | 2026-09-09 | 2026-09-13 | A51150 | Structural Welding [100 h] |
| A48050 | Grind & dress foundation group 3A — Storeroom No. 2 | 0d | 2026-09-10 | 2026-09-19 | A48040 FS+0.8d | Structural Welding [209 h] |
| A47950 | Grind & dress foundation group 2A — Void No. 3 | 0d | 2026-09-11 | 2026-09-23 | A47940 | Structural Welding [430 h] |
| A07460 | NDT acceptance — foundation group 2B — Arresting gear sheave room – port | 0d | 2026-09-11 | 2026-09-25 | A07450 | Structural Welding [178 h] |
| A41850 | Grind & dress structural bay 8C — Fan room No. 3 | 0d | 2026-09-13 | 2026-09-21 | A41840 | Structural Welding [138 h] |
| A42170 | Grind & dress deck insert 1A — Aft magazine No. 1 – upper level | 0d | 2026-09-13 | 2026-09-22 | A42160 | Structural Welding [127 h] |
| A48260 | NDT acceptance — deck insert 3A — Aft magazine No. 2 – lower level | 0d | 2026-09-13 | 2026-09-16 | A48250 FS+0.8d | Structural Welding [20 h] |
| A51170 | Grind & dress foundation group 6C — Aft JP-5 transfer pump room | 0d | 2026-09-14 | 2026-09-17 | A51160 FS+2.4d | Structural Welding [25 h] |
| A41330 | Grind & dress foundation group 7F — Electrical distribution room No. 2 | 0d | 2026-09-15 | 2026-09-26 | A41320 SS+2.4d | Structural Welding [256 h] |
| A07050 | Grind & dress structural bay 6B — Arresting gear engine room No. 4 | 0d | 2026-09-15 | 2026-09-28 | A07040 | Structural Welding [111 h] |
| A20000 | NDT acceptance — foundation group 1A — Aft mooring gear room | 0d | 2026-09-15 | 2026-09-24 | A19990 FS+0.8d | Structural Welding [112 h]; Rigging & Weight Handling [29 h] |
| A14940 | Grind & dress foundation group 4A — Aft mooring station – port | 0d | 2026-09-16 | 2026-09-29 | A14930 FS+0.8d | Structural Welding [207 h] |
| A48270 | Grind & dress deck insert 3A — Aft magazine No. 2 – lower level | 0d | 2026-09-17 | 2026-09-23 | A48260 | Structural Welding [85 h] |
| A42590 | NDT acceptance — deck insert 5D — Emergency diesel generator room No. 4 | 0d | 2026-09-17 | 2026-09-22 | A42580 | Structural Welding [78 h] |
| A19740 | NDT acceptance — foundation group 8A — Fantail | 0d | 2026-09-17 | 2026-09-26 | A19730 FS+0.8d | Structural Welding [47 h]; Rigging & Weight Handling [12 h] |
| A46780 | Grind & dress deck insert 7D — Aft fire pump room | 0d | 2026-09-19 | 2026-09-28 | A46770 | Structural Welding [216 h] |
| A07370 | Grind & dress structural bay 4B — Arresting gear sheave room – starboard | 0d | 2026-09-23 | 2026-10-05 | A07360 FS+0.8d | Structural Welding [285 h] |
| A20010 | Grind & dress foundation group 1A — Aft mooring gear room | 0d | 2026-09-25 | 2026-10-04 | A20000 | Structural Welding [171 h] |
| A42600 | Grind & dress deck insert 5D — Emergency diesel generator room No. 4 | 0d | 2026-09-25 | 2026-09-28 | A42590 FS+0.8d | Structural Welding [45 h] |
| A19750 | Grind & dress foundation group 8A — Fantail | 0d | 2026-09-27 | 2026-10-08 | A19740 | Structural Welding [129 h] |
| A07470 | Grind & dress foundation group 2B — Arresting gear sheave room – port | 0d | 2026-09-27 | 2026-10-10 | A07460 FS+2.4d | Structural Welding [425 h] |

| ID | WBS | Activity | Duration | Start | Finish | Predecessors | Complete | Remaining | Resources |
| --- | --- | --- | --- | --- | --- | --- | --- | --- | --- |
|  | 300 | **300 Electrical Distribution** |  | 2026-07-27 | 2026-10-17 |  |  |  |  |
| A30800 |  | Circuit survey — cable run 7D — IC Terminal Room | 0d | 2026-07-27 A | 2026-07-30 A |  | 100% |  | Electrical [15 h] |
| A40210 |  | Circuit survey — cable run 3A — Electrical distribution room No. 1 | 0d | 2026-07-29 A | 2026-08-11 |  | 80% | 0d | Electrical [137 h]; Rigging & Weight Handling [35 h] |
| A40410 |  | Circuit survey — lighting circuit 8A — High-pressure air compressor room – aft | 0d | 2026-07-29 A | 2026-08-02 A |  | 100% |  | Electrical [88 h] |
| A43430 |  | Circuit survey — lighting circuit 9B — Steering gear room – port | 0d | 2026-07-30 A | 2026-08-09 A |  | 100% |  | Electrical [204 h] |
| A30750 |  | Circuit survey — cable run 7C — IC Terminal Room | 0d | 2026-07-30 A | 2026-08-04 A |  | 100% |  | Electrical [112 h] |
| A25270 |  | Circuit survey — cable run 4C — Crew washroom & head No. 2 | 0d | 2026-07-31 A | 2026-08-02 A |  | 100% |  | Electrical [15 h]; Rigging & Weight Handling [4 h] |
| A46950 |  | Circuit survey — cable run 1C — Shaft alley No. 1 | 0d | 2026-07-31 A | 2026-08-03 A |  | 100% |  | Electrical [54 h] |
| A41180 |  | Circuit survey — cable run 8D — Electrical distribution room No. 2 | 0d | 2026-08-01 A | 2026-08-10 |  | 94% | 0d | Electrical [165 h] |
| A30810 |  | De-energize & tag out cable run 7D — IC Terminal Room | 0d | 2026-08-01 A | 2026-08-04 A | A30800 FS+0.8d | 100% |  | Electrical [57 h] |
| A47050 |  | Circuit survey — panel group 4B — Shaft alley No. 2 | 0d | 2026-08-01 A | 2026-08-15 |  | 61% | 0d | Electrical [358 h]; Rigging & Weight Handling [90 h] |
| A43320 |  | Circuit survey — lighting circuit 4E — Steering gear room – starboard | 0d | 2026-08-01 A | 2026-08-07 A |  | 100% |  | Electrical [137 h] |
| A47100 |  | Circuit survey — panel group 4C — Shaft alley No. 2 | 0d | 2026-08-02 A | 2026-08-16 |  | 34% | 0d | Electrical [158 h] |
| A47340 |  | Circuit survey — cable run 6B — Shaft alley No. 3 | 0d | 2026-08-03 A | 2026-08-15 |  | 56% | 0d | Electrical [75 h] |
| A46960 |  | De-energize & tag out cable run 1C — Shaft alley No. 1 | 0d | 2026-08-03 A | 2026-08-10 | A46950 | 92% | 0d | Electrical [40 h]; Rigging & Weight Handling [11 h] |
| A25280 |  | De-energize & tag out cable run 4C — Crew washroom & head No. 2 | 0d | 2026-08-03 A | 2026-08-10 | A25270 | 80% | 0d | Electrical [141 h] |
| A46580 |  | Circuit survey — lighting circuit 2A — Aft fire pump room | 0d | 2026-08-04 A | 2026-08-10 |  | 83% | 0d | Electrical [98 h] |
| A40420 |  | De-energize & tag out lighting circuit 8A — High-pressure air compressor room – aft | 0d | 2026-08-04 A | 2026-08-10 A | A40410 | 100% |  | Electrical [45 h] |
| A24900 |  | Circuit survey — cable run 9A — Second deck passage No. 9 | 0d | 2026-08-05 A | 2026-08-16 |  | 45% | 0d | Electrical [145 h]; Rigging & Weight Handling [37 h] |
| A41010 |  | Circuit survey — cable run 5A — Electrical distribution room No. 2 | 0d | 2026-08-05 A | 2026-08-18 |  | 33% | 0d | Electrical [102 h] |
| A07280 |  | Circuit survey — panel group 4A — Arresting gear sheave room – starboard | 0d | 2026-08-06 A | 2026-08-16 |  | 34% | 0d | Electrical [92 h] |
| A30760 |  | De-energize & tag out cable run 7C — IC Terminal Room | 0d | 2026-08-06 A | 2026-08-19 | A30750 FS+2.4d | 17% | 0d | Electrical [355 h] |
| A30820 |  | Pull & land cable — cable run 7D — IC Terminal Room | 0d | 2026-08-07 A | 2026-08-13 | A30810 FS+2.4d | 42% | 0d | Electrical [233 h] |
| A30590 |  | Circuit survey — lighting circuit 6C — Crew washroom & head No. 1 | 0d | 2026-08-07 A | 2026-08-15 |  | 35% | 0d | Electrical [77 h]; Rigging & Weight Handling [20 h] |
| A32450 |  | Circuit survey — lighting circuit 9B — Aft IC room | 0d | 2026-08-07 A | 2026-08-17 |  | 26% | 0d | Electrical [301 h] |
| A42340 |  | Circuit survey — lighting circuit 8C — Emergency diesel generator room No. 3 | 0d | 2026-08-07 A | 2026-08-14 |  | 35% | 0d | Electrical [46 h] |
| A40460 |  | Circuit survey — panel group 8B — High-pressure air compressor room – aft | 0d | 2026-08-07 A | 2026-08-12 |  | 35% | 0d | Electrical [52 h]; Rigging & Weight Handling [13 h] |
| A48530 |  | Circuit survey — panel group 6B (5-240-0-Q) | 0d | 2026-08-08 A | 2026-08-10 |  | 67% | 0d | Electrical [12 h] |
| A43330 |  | De-energize & tag out lighting circuit 4E — Steering gear room – starboard | 0d | 2026-08-09 A | 2026-08-19 | A43320 FS+2.4d | 10% | 0d | Electrical [132 h] |
| A43080 |  | Circuit survey — lighting circuit 6C (4-237-4-Q) | 0d | 2026-08-09 A | 2026-08-23 |  | 2% | 0d | Electrical [284 h] |
| A24690 |  | Circuit survey — cable run 2B — Electrical repair shop | 0d | 2026-08-10 A | 2026-08-22 |  | 1% | 0d | Electrical [112 h] |
| A40430 |  | Pull & land cable — lighting circuit 8A — High-pressure air compressor room – aft | 0d | 2026-08-11 | 2026-08-16 | A40420 FS+2.4d |  |  | Electrical [40 h] |
| A25290 |  | Pull & land cable — cable run 4C — Crew washroom & head No. 2 | 0d | 2026-08-11 | 2026-08-16 | A25280 FS+2.4d |  |  | Electrical [68 h] |
| A07380 |  | Circuit survey — cable run 8A — Arresting gear sheave room – port | 0d | 2026-08-11 | 2026-08-14 |  |  |  | Electrical [16 h] |
| A40720 |  | Circuit survey — panel group 6D — Low-pressure air compressor room | 0d | 2026-08-11 | 2026-08-23 |  |  |  | Electrical [304 h] |
| A46590 |  | De-energize & tag out lighting circuit 2A — Aft fire pump room | 0d | 2026-08-11 | 2026-08-16 | A46580 FS+0.8d |  |  | Electrical [77 h] |
| A43440 |  | De-energize & tag out lighting circuit 9B — Steering gear room – port | 0d | 2026-08-12 | 2026-08-14 | A43430 |  |  | Electrical [21 h] |
| A46970 |  | Pull & land cable — cable run 1C — Shaft alley No. 1 | 0d | 2026-08-12 | 2026-08-22 | A46960 |  |  | Electrical [170 h] |
| A40220 |  | De-energize & tag out cable run 3A — Electrical distribution room No. 1 | 0d | 2026-08-12 | 2026-08-16 | A40210 |  |  | Electrical [93 h] |
| A48540 |  | De-energize & tag out panel group 6B (5-240-0-Q) | 0d | 2026-08-12 | 2026-08-17 | A48530 FS+0.8d |  |  | Electrical [39 h] |
| A47000 |  | Circuit survey — panel group 1A — Shaft alley No. 2 | 0d | 2026-08-12 | 2026-08-18 |  |  |  | Electrical [36 h]; Rigging & Weight Handling [10 h] |
| A20020 |  | Circuit survey — lighting circuit 5B (1-252-2-Q) | 0d | 2026-08-12 | 2026-08-24 |  |  |  | Electrical [275 h] |
| A46630 |  | Circuit survey — cable run 4B — Aft fire pump room | 0d | 2026-08-12 | 2026-08-17 |  |  |  | Electrical [25 h] |
| A48180 |  | Circuit survey — panel group 5B — Aft magazine No. 1 – lower level | 0d | 2026-08-13 | 2026-08-18 |  |  |  | Electrical [92 h] |
| A41190 |  | De-energize & tag out cable run 8D — Electrical distribution room No. 2 | 0d | 2026-08-13 | 2026-08-22 | A41180 |  |  | Electrical [138 h] |
| A40470 |  | De-energize & tag out panel group 8B — High-pressure air compressor room – aft | 0d | 2026-08-13 | 2026-08-19 | A40460 FS+0.8d |  |  | Electrical [43 h] |
| A19870 |  | Circuit survey — lighting circuit 4D — Fantail | 0d | 2026-08-15 | 2026-08-25 |  |  |  | Electrical [192 h] |
| A47510 |  | Circuit survey — panel group 2E — Shaft alley No. 3 | 0d | 2026-08-15 | 2026-08-17 |  |  |  | Electrical [17 h] |
| A30600 |  | De-energize & tag out lighting circuit 6C — Crew washroom & head No. 1 | 0d | 2026-08-15 | 2026-08-27 | A30590 |  |  | Electrical [353 h] |
| A07390 |  | De-energize & tag out cable run 8A — Arresting gear sheave room – port | 0d | 2026-08-15 | 2026-08-19 | A07380 FS+2.4d |  |  | Electrical [52 h] |
| A32400 |  | Circuit survey — cable run 3A — Aft IC room | 0d | 2026-08-15 | 2026-08-19 |  |  |  | Electrical [134 h] |
| A30830 |  | Megger & continuity test cable run 7D — IC Terminal Room | 0d | 2026-08-15 | 2026-08-28 | A30820 |  |  | Electrical [118 h]; Rigging & Weight Handling [30 h] |
| A43450 |  | Pull & land cable — lighting circuit 9B — Steering gear room – port | 0d | 2026-08-16 | 2026-08-28 | A43440 FS+0.8d |  |  | Electrical [234 h] |
| A42350 |  | De-energize & tag out lighting circuit 8C — Emergency diesel generator room No. 3 | 0d | 2026-08-16 | 2026-08-28 | A42340 FS+2.4d |  |  | Electrical [103 h] |
| A47110 |  | De-energize & tag out panel group 4C — Shaft alley No. 2 | 0d | 2026-08-16 | 2026-08-27 | A47100 FS+0.8d |  |  | Electrical [259 h] |
| A47060 |  | De-energize & tag out panel group 4B — Shaft alley No. 2 | 0d | 2026-08-17 | 2026-08-24 | A47050 |  |  | Electrical [170 h] |
| A24430 |  | Circuit survey — panel group 8B — Crew washroom & head No. 1 | 0d | 2026-08-18 | 2026-08-20 |  |  |  | Electrical [31 h] |
| A46640 |  | De-energize & tag out cable run 4B — Aft fire pump room | 0d | 2026-08-18 | 2026-08-24 | A46630 SS+2.4d |  |  | Electrical [78 h] |
| A46600 |  | Pull & land cable — lighting circuit 2A — Aft fire pump room | 0d | 2026-08-18 | 2026-09-01 | A46590 FS+0.8d |  |  | Electrical [66 h]; Rigging & Weight Handling [17 h] |
| A24910 |  | De-energize & tag out cable run 9A — Second deck passage No. 9 | 0d | 2026-08-18 | 2026-08-21 | A24900 SS+4.8d |  |  | Electrical [19 h] |
| A47350 |  | De-energize & tag out cable run 6B — Shaft alley No. 3 | 0d | 2026-08-18 | 2026-08-31 | A47340 FS+2.4d |  |  | Electrical [154 h] |
| A07290 |  | De-energize & tag out panel group 4A — Arresting gear sheave room – starboard | 0d | 2026-08-18 | 2026-09-01 | A07280 FS+0.8d |  |  | Electrical [442 h] |
| A48550 |  | Pull & land cable — panel group 6B (5-240-0-Q) | 0d | 2026-08-18 | 2026-08-27 | A48540 |  |  | Electrical [98 h] |
| A25300 |  | Megger & continuity test cable run 4C — Crew washroom & head No. 2 | 0d | 2026-08-18 | 2026-08-21 | A25290 FS+0.8d |  |  | Electrical [47 h] |
| A40230 |  | Pull & land cable — cable run 3A — Electrical distribution room No. 1 | 0d | 2026-08-18 | 2026-08-28 | A40220 |  |  | Electrical [117 h] |
| A47520 |  | De-energize & tag out panel group 2E — Shaft alley No. 3 | 0d | 2026-08-19 | 2026-08-25 | A47510 FS+2.4d |  |  | Electrical [41 h] |
| A40440 |  | Megger & continuity test lighting circuit 8A — High-pressure air compressor room – aft | 0d | 2026-08-19 | 2026-08-27 | A40430 |  |  | Electrical [92 h] |
| A41910 |  | Circuit survey — panel group 1E — Fan room No. 3 | 0d | 2026-08-19 | 2026-09-02 |  |  |  | Electrical [366 h] |
| A32460 |  | De-energize & tag out lighting circuit 9B — Aft IC room | 0d | 2026-08-20 | 2026-08-28 | A32450 FS+0.8d |  |  | Electrical [115 h] |
| A07400 |  | Pull & land cable — cable run 8A — Arresting gear sheave room – port | 0d | 2026-08-20 | 2026-08-29 | A07390 |  |  | Electrical [117 h] |

| ID | Activity | Duration | Start | Finish | Predecessors | Resources |
| --- | --- | --- | --- | --- | --- | --- |
| A41020 | De-energize & tag out cable run 5A — Electrical distribution room No. 2 | 0d | 2026-08-20 | 2026-08-31 | A41010 | Electrical [192 h] |
| A47010 | De-energize & tag out panel group 1A — Shaft alley No. 2 | 0d | 2026-08-20 | 2026-08-25 | A47000 FS+2.4d | Electrical [56 h] |
| A24590 | Circuit survey — cable run 2B — Crew berthing No. 5 | 0d | 2026-08-21 | 2026-08-25 |  | Electrical [85 h] |
| A24920 | Pull & land cable — cable run 9A — Second deck passage No. 9 | 0d | 2026-08-21 | 2026-09-02 | A24910 | Electrical [99 h] |
| A30770 | Pull & land cable — cable run 7C — IC Terminal Room | 0d | 2026-08-21 | 2026-09-01 | A30760 | Electrical [271 h] |
| A43340 | Pull & land cable — lighting circuit 4E — Steering gear room – starboard | 0d | 2026-08-21 | 2026-09-01 | A43330 | Electrical [92 h] |
| A32410 | De-energize & tag out cable run 3A — Aft IC room | 0d | 2026-08-21 | 2026-08-31 | A32400 | Electrical [140 h]; Rigging & Weight Handling [36 h] |
| A48190 | De-energize & tag out panel group 5B — Aft magazine No. 1 – lower level | 0d | 2026-08-21 | 2026-09-04 | A48180 FS+0.8d | Electrical [179 h] |
| A40480 | Pull & land cable — panel group 8B — High-pressure air compressor room – aft | 0d | 2026-08-22 | 2026-08-29 | A40470 FS+2.4d | Electrical [49 h] |
| A24440 | De-energize & tag out panel group 8B — Crew washroom & head No. 1 | 0d | 2026-08-22 | 2026-08-27 | A24430 | Electrical [123 h] |
| A46980 | Megger & continuity test cable run 1C — Shaft alley No. 1 | 0d | 2026-08-22 | 2026-08-26 | A46970 FS+2.4d | Electrical [47 h] |
| A25310 | Energize & close-out cable run 4C — Crew washroom & head No. 2 | 0d | 2026-08-23 | 2026-08-31 | A25300 | Electrical [211 h] |
| A24700 | De-energize & tag out cable run 2B — Electrical repair shop | 0d | 2026-08-23 | 2026-09-03 | A24690 | Electrical [72 h] |
| A40730 | De-energize & tag out panel group 6D — Low-pressure air compressor room | 0d | 2026-08-24 | 2026-09-01 | A40720 | Electrical [60 h] |
| A41200 | Pull & land cable — cable run 8D — Electrical distribution room No. 2 | 0d | 2026-08-24 | 2026-09-01 | A41190 FS+2.4d | Electrical [111 h] |
| A43090 | De-energize & tag out lighting circuit 6C (4-237-4-Q) | 0d | 2026-08-24 | 2026-09-01 | A43080 FS+0.8d | Electrical [104 h]; Rigging & Weight Handling [27 h] |
| A46650 | Pull & land cable — cable run 4B — Aft fire pump room | 0d | 2026-08-25 | 2026-09-03 | A46640 | Electrical [146 h] |
| A47070 | Pull & land cable — panel group 4B — Shaft alley No. 2 | 0d | 2026-08-25 | 2026-09-07 | A47060 | Electrical [223 h] |
| A20030 | De-energize & tag out lighting circuit 5B (1-252-2-Q) | 0d | 2026-08-26 | 2026-08-31 | A20020 | Electrical [76 h] |
| A47020 | Pull & land cable — panel group 1A — Shaft alley No. 2 | 0d | 2026-08-26 | 2026-09-06 | A47010 | Electrical [376 h] |
| A46990 | Energize & close-out cable run 1C — Shaft alley No. 1 | 0d | 2026-08-27 | 2026-09-05 | A46980 | Electrical [232 h] |
| A19880 | De-energize & tag out lighting circuit 4D — Fantail | 0d | 2026-08-28 | 2026-09-09 | A19870 | Electrical [173 h] |
| A48560 | Megger & continuity test panel group 6B (5-240-0-Q) | 0d | 2026-08-28 | 2026-09-04 | A48550 | Electrical [80 h]; Rigging & Weight Handling [20 h] |
| A24600 | De-energize & tag out cable run 2B — Crew berthing No. 5 | 0d | 2026-08-28 | 2026-09-05 | A24590 FS+0.8d | Electrical [53 h] |
| A30610 | Pull & land cable — lighting circuit 6C — Crew washroom & head No. 1 | 0d | 2026-08-28 | 2026-09-02 | A30600 FS+2.4d | Electrical [51 h] |
| A47530 | Pull & land cable — panel group 2E — Shaft alley No. 3 | 0d | 2026-08-28 | 2026-09-02 | A47520 | Electrical [42 h] |
| A40240 | Megger & continuity test cable run 3A — Electrical distribution room No. 1 | 0d | 2026-08-28 | 2026-09-08 | A40230 | Electrical [98 h] |
| A47120 | Pull & land cable — panel group 4C — Shaft alley No. 2 | 0d | 2026-08-28 | 2026-08-31 | A47110 SS+4.8d | Electrical [13 h] |
| A24450 | Pull & land cable — panel group 8B — Crew washroom & head No. 1 | 0d | 2026-08-29 | 2026-09-05 | A24440 FS+0.8d | Electrical [121 h] |
| A40450 | Energize & close-out lighting circuit 8A — High-pressure air compressor room – aft | 0d | 2026-08-29 | 2026-09-07 | A40440 FS+0.8d | Electrical [305 h] |
| A30840 | Energize & close-out cable run 7D — IC Terminal Room | 0d | 2026-08-29 | 2026-09-04 | A30830 | Electrical [95 h] |
| A07410 | Megger & continuity test cable run 8A — Arresting gear sheave room – port | 0d | 2026-08-30 | 2026-09-12 | A07400 | Electrical [82 h] |
| A32470 | Pull & land cable — lighting circuit 9B — Aft IC room | 0d | 2026-08-30 | 2026-09-11 | A32460 | Electrical [318 h] |
| A42360 | Pull & land cable — lighting circuit 8C — Emergency diesel generator room No. 3 | 0d | 2026-08-30 | 2026-09-06 | A42350 FS-4.8d | Electrical [45 h] |
| A43460 | Megger & continuity test lighting circuit 9B — Steering gear room – port | 0d | 2026-08-30 | 2026-09-12 | A43450 FS+0.8d | Electrical [249 h] |
| A47130 | Megger & continuity test panel group 4C — Shaft alley No. 2 | 0d | 2026-08-31 | 2026-09-06 | A47120 | Electrical [149 h] |
| A47360 | Pull & land cable — cable run 6B — Shaft alley No. 3 | 0d | 2026-08-31 | 2026-09-12 | A47350 FS+2.4d | Electrical [148 h] |
| A41030 | Pull & land cable — cable run 5A — Electrical distribution room No. 2 | 0d | 2026-08-31 | 2026-09-03 | A41020 | Electrical [39 h] |
| A40490 | Megger & continuity test panel group 8B — High-pressure air compressor room – aft | 0d | 2026-08-31 | 2026-09-13 | A40480 | Electrical [189 h] |
| A43350 | Megger & continuity test lighting circuit 4E — Steering gear room – starboard | 0d | 2026-09-01 | 2026-09-12 | A43340 | Electrical [168 h] |
| A32420 | Pull & land cable — cable run 3A — Aft IC room | 0d | 2026-09-02 | 2026-09-06 | A32410 | Electrical [65 h] |
| A20040 | Pull & land cable — lighting circuit 5B (1-252-2-Q) | 0d | 2026-09-02 | 2026-09-13 | A20030 | Electrical [251 h] |
| A40740 | Pull & land cable — panel group 6D — Low-pressure air compressor room | 0d | 2026-09-03 | 2026-09-10 | A40730 | Electrical [70 h] |
| A30620 | Megger & continuity test lighting circuit 6C — Crew washroom & head No. 1 | 0d | 2026-09-03 | 2026-09-12 | A30610 | Electrical [292 h] |
| A07300 | Pull & land cable — panel group 4A — Arresting gear sheave room – starboard | 0d | 2026-09-03 | 2026-09-05 | A07290 | Electrical [30 h] |
| A24930 | Megger & continuity test cable run 9A — Second deck passage No. 9 | 0d | 2026-09-03 | 2026-09-11 | A24920 | Electrical [179 h] |
| A41210 | Megger & continuity test cable run 8D — Electrical distribution room No. 2 | 0d | 2026-09-03 | 2026-09-10 | A41200 | Electrical [159 h] |
| A46610 | Megger & continuity test lighting circuit 2A — Aft fire pump room | 0d | 2026-09-03 | 2026-09-13 | A46600 FS+0.8d | Electrical [248 h] |
| A47540 | Megger & continuity test panel group 2E — Shaft alley No. 3 | 0d | 2026-09-03 | 2026-09-15 | A47530 | Electrical [225 h] |
| A43100 | Pull & land cable — lighting circuit 6C (4-237-4-Q) | 0d | 2026-09-04 | 2026-09-11 | A43090 FS+2.4d | Electrical [63 h] |
| A30780 | Megger & continuity test cable run 7C — IC Terminal Room | 0d | 2026-09-04 | 2026-09-07 | A30770 SS+2.4d | Electrical [27 h] |
| A24710 | Pull & land cable — cable run 2B — Electrical repair shop | 0d | 2026-09-04 | 2026-09-08 | A24700 | Electrical [91 h] |
| A41920 | De-energize & tag out panel group 1E — Fan room No. 3 | 0d | 2026-09-05 | 2026-09-18 | A41910 FS+0.8d | Electrical [90 h] |
| A46660 | Megger & continuity test cable run 4B — Aft fire pump room | 0d | 2026-09-05 | 2026-09-12 | A46650 FS+2.4d | Electrical [44 h] |
| A41040 | Megger & continuity test cable run 5A — Electrical distribution room No. 2 | 0d | 2026-09-05 | 2026-09-11 | A41030 FS+0.8d | Electrical [32 h] |
| A24460 | Megger & continuity test panel group 8B — Crew washroom & head No. 1 | 0d | 2026-09-05 | 2026-09-19 | A24450 FS+0.8d | Electrical [351 h] |
| A07310 | Megger & continuity test panel group 4A — Arresting gear sheave room – starboard | 0d | 2026-09-06 | 2026-09-18 | A07300 | Electrical [109 h] |
| A47030 | Megger & continuity test panel group 1A — Shaft alley No. 2 | 0d | 2026-09-07 | 2026-09-10 | A47020 | Electrical [38 h] |
| A48200 | Pull & land cable — panel group 5B — Aft magazine No. 1 – lower level | 0d | 2026-09-07 | 2026-09-18 | A48190 SS+2.4d | Electrical [169 h] |
| A48570 | Energize & close-out panel group 6B (5-240-0-Q) | 0d | 2026-09-07 | 2026-09-14 | A48560 FS+2.4d | Electrical [99 h] |
| A47140 | Energize & close-out panel group 4C — Shaft alley No. 2 | 0d | 2026-09-07 | 2026-09-19 | A47130 FS+2.4d | Electrical [277 h] |
| A24610 | Pull & land cable — cable run 2B — Crew berthing No. 5 | 0d | 2026-09-08 | 2026-09-10 | A24600 FS+0.8d | Electrical [29 h] |
| A40250 | Energize & close-out cable run 3A — Electrical distribution room No. 1 | 0d | 2026-09-08 | 2026-09-13 | A40240 FS+2.4d | Electrical [63 h]; Rigging & Weight Handling [16 h] |
| A24720 | Megger & continuity test cable run 2B — Electrical repair shop | 0d | 2026-09-08 | 2026-09-14 | A24710 FS+0.8d | Electrical [50 h] |
| A42370 | Megger & continuity test lighting circuit 8C — Emergency diesel generator room No. 3 | 0d | 2026-09-09 | 2026-09-16 | A42360 | Electrical [172 h]; Rigging & Weight Handling [44 h] |
| A30790 | Energize & close-out cable run 7C — IC Terminal Room | 0d | 2026-09-09 | 2026-09-18 | A30780 | Electrical [51 h]; Rigging & Weight Handling [13 h] |
| A32430 | Megger & continuity test cable run 3A — Aft IC room | 0d | 2026-09-09 | 2026-09-21 | A32420 | Electrical [180 h] |
| A47080 | Megger & continuity test panel group 4B — Shaft alley No. 2 | 0d | 2026-09-10 | 2026-09-15 | A47070 | Electrical [40 h] |
| A47040 | Energize & close-out panel group 1A — Shaft alley No. 2 | 0d | 2026-09-10 | 2026-09-21 | A47030 | Electrical [76 h] |
| A41220 | Energize & close-out cable run 8D — Electrical distribution room No. 2 | 0d | 2026-09-10 | 2026-09-22 | A41210 FS+2.4d | Electrical [73 h] |

| ID | Activity | Duration | Start | Finish | Predecessors | Resources |
| --- | --- | --- | --- | --- | --- | --- |
| A19890 | Pull & land cable — lighting circuit 4D — Fantail | 0d | 2026-09-11 | 2026-09-21 | A19880 | Electrical [160 h] |
| A40750 | Megger & continuity test panel group 6D — Low-pressure air compressor room | 0d | 2026-09-12 | 2026-09-14 | A40740 | Electrical [48 h] |
| A41050 | Energize & close-out cable run 5A — Electrical distribution room No. 2 | 0d | 2026-09-12 | 2026-09-20 | A41040 | Electrical [68 h]; Rigging & Weight Handling [17 h] |
| A47370 | Megger & continuity test cable run 6B — Shaft alley No. 3 | 0d | 2026-09-12 | 2026-09-16 | A47360 | Electrical [91 h] |
| A24620 | Megger & continuity test cable run 2B — Crew berthing No. 5 | 0d | 2026-09-13 | 2026-09-22 | A24610 | Electrical [145 h] |
| A43360 | Energize & close-out lighting circuit 4E — Steering gear room – starboard | 0d | 2026-09-13 | 2026-09-21 | A43350 | Electrical [210 h] |
| A46670 | Energize & close-out cable run 4B — Aft fire pump room | 0d | 2026-09-13 | 2026-09-21 | A46660 SS+7.2d | Electrical [63 h] |
| A07420 | Energize & close-out cable run 8A — Arresting gear sheave room – port | 0d | 2026-09-13 | 2026-09-26 | A07410 SS+4.8d | Electrical [325 h] |
| A24940 | Energize & close-out cable run 9A — Second deck passage No. 9 | 0d | 2026-09-13 | 2026-09-22 | A24930 FS+2.4d | Electrical [216 h] |
| A32480 | Megger & continuity test lighting circuit 9B — Aft IC room | 0d | 2026-09-13 | 2026-09-27 | A32470 | Electrical [159 h] |
| A40500 | Energize & close-out panel group 8B — High-pressure air compressor room – aft | 0d | 2026-09-13 | 2026-09-25 | A40490 SS+2.4d | Electrical [255 h] |
| A43470 | Energize & close-out lighting circuit 9B — Steering gear room – port | 0d | 2026-09-14 | 2026-09-19 | A43460 FS+0.8d | Electrical [193 h] |
| A43110 | Megger & continuity test lighting circuit 6C (4-237-4-Q) | 0d | 2026-09-14 | 2026-09-16 | A43100 | Electrical [69 h] |
| A30630 | Energize & close-out lighting circuit 6C — Crew washroom & head No. 1 | 0d | 2026-09-14 | 2026-09-18 | A30620 | Electrical [28 h] |
| A46620 | Energize & close-out lighting circuit 2A — Aft fire pump room | 0d | 2026-09-14 | 2026-09-26 | A46610 | Electrical [113 h] |
| A20050 | Megger & continuity test lighting circuit 5B (1-252-2-Q) | 0d | 2026-09-15 | 2026-09-27 | A20040 | Electrical [85 h] |
| A24730 | Energize & close-out cable run 2B — Electrical repair shop | 0d | 2026-09-15 | 2026-09-22 | A24720 | Electrical [49 h] |
| A40760 | Energize & close-out panel group 6D — Low-pressure air compressor room | 0d | 2026-09-15 | 2026-09-24 | A40750 | Electrical [176 h]; Rigging & Weight Handling [44 h] |
| A47550 | Energize & close-out panel group 2E — Shaft alley No. 3 | 0d | 2026-09-15 | 2026-09-21 | A47540 | Electrical [94 h] |
| A42380 | Energize & close-out lighting circuit 8C — Emergency diesel generator room No. 3 | 0d | 2026-09-16 | 2026-09-29 | A42370 FS+0.8d | Electrical [418 h] |
| A43120 | Energize & close-out lighting circuit 6C (4-237-4-Q) | 0d | 2026-09-16 | 2026-09-25 | A43110 SS+2.4d | Electrical [246 h] |
| A47090 | Energize & close-out panel group 4B — Shaft alley No. 2 | 0d | 2026-09-17 | 2026-09-22 | A47080 | Electrical [108 h] |
| A48210 | Megger & continuity test panel group 5B — Aft magazine No. 1 – lower level | 0d | 2026-09-18 | 2026-09-21 | A48200 | Electrical [37 h] |
| A47380 | Energize & close-out cable run 6B — Shaft alley No. 3 | 0d | 2026-09-19 | 2026-09-26 | A47370 FS+0.8d | Electrical [58 h] |
| A07320 | Energize & close-out panel group 4A — Arresting gear sheave room – starboard | 0d | 2026-09-19 | 2026-09-28 | A07310 | Electrical [196 h] |
| A41930 | Pull & land cable — panel group 1E — Fan room No. 3 | 0d | 2026-09-20 | 2026-09-24 | A41920 | Electrical [136 h] |
| A24470 | Energize & close-out panel group 8B — Crew washroom & head No. 1 | 0d | 2026-09-20 | 2026-09-29 | A24460 | Electrical [60 h] |
| A32440 | Energize & close-out cable run 3A — Aft IC room | 0d | 2026-09-21 | 2026-09-24 | A32430 | Electrical [23 h] |
| A48220 | Energize & close-out panel group 5B — Aft magazine No. 1 – lower level | 0d | 2026-09-22 | 2026-09-28 | A48210 FS+2.4d | Electrical [77 h] |
| A24630 | Energize & close-out cable run 2B — Crew berthing No. 5 | 0d | 2026-09-22 | 2026-09-25 | A24620 | Electrical [77 h] |
| A19900 | Megger & continuity test lighting circuit 4D — Fantail | 0d | 2026-09-23 | 2026-10-04 | A19890 | Electrical [381 h] |
| A41940 | Megger & continuity test panel group 1E — Fan room No. 3 | 0d | 2026-09-26 | 2026-10-04 | A41930 | Electrical [62 h] |
| A20060 | Energize & close-out lighting circuit 5B (1-252-2-Q) | 0d | 2026-09-27 | 2026-10-08 | A20050 | Electrical [92 h] |
| A32490 | Energize & close-out lighting circuit 9B — Aft IC room | 0d | 2026-09-29 | 2026-10-12 | A32480 | Electrical [355 h] |
| A41950 | Energize & close-out panel group 1E — Fan room No. 3 | 0d | 2026-10-05 | 2026-10-17 | A41940 | Electrical [196 h] |
| A19910 | Energize & close-out lighting circuit 4D — Fantail | 0d | 2026-10-05 | 2026-10-15 | A19900 | Electrical [169 h] |

| ID | WBS | Activity | Duration | Start | Finish | Predecessors | Complete | Remaining | Resources |
| --- | --- | --- | --- | --- | --- | --- | --- | --- | --- |
|  | 430 | **430 Interior Communications** |  | 2026-07-31 | 2026-10-01 |  |  |  |  |
| A25230 |  | Circuit trace — announcing group 4B — Crew washroom & head No. 2 | 0d | 2026-07-31 A | 2026-08-03 A |  | 100% |  | Interior Communications [22 h]; Rigging & Weight Handling [6 h] |
| A25240 |  | Rip out announcing group 4B — Crew washroom & head No. 2 | 0d | 2026-08-03 A | 2026-08-10 | A25230 FS+2.4d | 53% | 0d | Interior Communications [159 h]; Rigging & Weight Handling [40 h] |
| A24950 |  | Circuit trace — announcing group 4A — Damage control repair locker No. 5 | 0d | 2026-08-10 A | 2026-08-16 |  | 2% | 0d | Interior Communications [58 h] |
| A25250 |  | Install & terminate announcing group 4B — Crew washroom & head No. 2 | 0d | 2026-08-13 | 2026-08-22 | A25240 |  |  | Interior Communications [136 h] |
| A31450 |  | Circuit trace — IC circuit 9A — Crew berthing No. 3 | 0d | 2026-08-13 | 2026-08-24 |  |  |  | Interior Communications [292 h] |
| A24960 |  | Rip out announcing group 4A — Damage control repair locker No. 5 | 0d | 2026-08-19 | 2026-08-30 | A24950 FS+0.8d |  |  | Interior Communications [83 h] |
| A32660 |  | Circuit trace — IC circuit 7B — Crew berthing No. 6 | 0d | 2026-08-20 | 2026-08-28 |  |  |  | Interior Communications [259 h] |
| A25260 |  | Ring-out & test announcing group 4B — Crew washroom & head No. 2 | 0d | 2026-08-24 | 2026-09-03 | A25250 FS+0.8d |  |  | Interior Communications [82 h] |
| A31460 |  | Rip out IC circuit 9A — Crew berthing No. 3 | 0d | 2026-08-26 | 2026-08-29 | A31450 |  |  | Interior Communications [99 h] |
| A32670 |  | Rip out IC circuit 7B — Crew berthing No. 6 | 0d | 2026-08-28 | 2026-09-05 | A32660 FS+2.4d |  |  | Interior Communications [107 h] |
| A31470 |  | Install & terminate IC circuit 9A — Crew berthing No. 3 | 0d | 2026-09-01 | 2026-09-14 | A31460 FS+2.4d |  |  | Interior Communications [353 h] |
| A24970 |  | Install & terminate announcing group 4A — Damage control repair locker No. 5 | 0d | 2026-09-02 | 2026-09-12 | A24960 |  |  | Interior Communications [76 h] |
| A32680 |  | Install & terminate IC circuit 7B — Crew berthing No. 6 | 0d | 2026-09-06 | 2026-09-16 | A32670 FS+0.8d |  |  | Interior Communications [78 h] |
| A24980 |  | Ring-out & test announcing group 4A — Damage control repair locker No. 5 | 0d | 2026-09-15 | 2026-09-19 | A24970 |  |  | Interior Communications [46 h] |
| A31480 |  | Ring-out & test IC circuit 9A — Crew berthing No. 3 | 0d | 2026-09-17 | 2026-09-20 | A31470 |  |  | Interior Communications [74 h] |
| A32690 |  | Ring-out & test IC circuit 7B — Crew berthing No. 6 | 0d | 2026-09-17 | 2026-10-01 | A32680 FS+0.8d |  |  | Interior Communications [251 h] |
|  | 505 | **505 Piping Systems** |  | 2026-07-28 | 2026-10-29 |  |  |  |  |
| A40950 |  | Lay-up & drain valve bank 6D — Fan room No. 2 | 0d | 2026-07-28 A | 2026-08-10 |  | 96% | 0d | Pipefitting [77 h] |
| A41570 |  | Lay-up & drain pipe spool group 5B — Aft JP-5 pump room – port | 0d | 2026-07-28 A | 2026-08-06 A |  | 100% |  | Pipefitting [52 h] |
| A12250 |  | Lay-up & drain valve bank 4A — JP-5 filling station – aft port | 0d | 2026-07-28 A | 2026-08-09 A |  | 100% |  | Pipefitting [74 h] |
| A42230 |  | Lay-up & drain pipe spool group 9A — Emergency diesel generator room No. 3 | 0d | 2026-07-29 A | 2026-08-12 |  | 51% | 0d | Pipefitting [80 h] |
| A39620 |  | Lay-up & drain valve bank 9A — Auxiliary Machinery Room No. 5 | 0d | 2026-07-29 A | 2026-08-09 A |  | 100% |  | Pipefitting [193 h] |
| A40350 |  | Lay-up & drain pipe spool group 9D — Electrical distribution room No. 1 | 0d | 2026-07-30 A | 2026-08-11 |  | 93% | 0d | Pipefitting [163 h] |
| A40040 |  | Lay-up & drain pipe spool group 3D — Fan room No. 1 | 0d | 2026-07-31 A | 2026-08-07 A |  | 100% |  | Pipefitting [119 h] |
| A41450 |  | Lay-up & drain pipe spool group 2C — Aft JP-5 pump room – starboard | 0d | 2026-07-31 A | 2026-08-06 A |  | 100% |  | Pipefitting [34 h]; Rigging & Weight Handling [9 h] |
| A41120 |  | Lay-up & drain drain riser 2C — Electrical distribution room No. 2 | 0d | 2026-08-01 A | 2026-08-04 A |  | 100% |  | Pipefitting [35 h] |
| A19810 |  | Lay-up & drain drain riser 3C — Fantail | 0d | 2026-08-01 A | 2026-08-11 |  | 81% | 0d | Pipefitting [174 h] |
| A40150 |  | Lay-up & drain pipe spool group 5F — Fan room No. 1 | 0d | 2026-08-04 A | 2026-08-11 |  | 48% | 0d | Pipefitting [188 h] |
| A41690 |  | Lay-up & drain pipe spool group 7A — Fan room No. 3 | 0d | 2026-08-04 A | 2026-08-12 |  | 67% | 0d | Pipefitting [109 h] |
| A41130 |  | Cut out drain riser 2C — Electrical distribution room No. 2 | 0d | 2026-08-06 A | 2026-08-13 | A41120 FS+0.8d | 53% | 0d | Pipefitting [43 h] |
| A40830 |  | Lay-up & drain valve bank 9B — Fan room No. 2 | 0d | 2026-08-07 A | 2026-08-15 |  | 33% | 0d | Pipefitting [136 h] |
| A41460 |  | Cut out pipe spool group 2C — Aft JP-5 pump room – starboard | 0d | 2026-08-07 A | 2026-08-21 | A41450 FS+2.4d | 17% | 0d | Pipefitting [122 h] |
| A12190 |  | Lay-up & drain valve bank 6C — JP-5 filling station – aft starboard | 0d | 2026-08-07 A | 2026-08-17 |  | 23% | 0d | Pipefitting [178 h] |
| A40050 |  | Cut out pipe spool group 3D — Fan room No. 1 | 0d | 2026-08-07 A | 2026-08-18 | A40040 FS+0.8d | 21% | 0d | Pipefitting [189 h] |
| A41580 |  | Cut out pipe spool group 5B — Aft JP-5 pump room – port | 0d | 2026-08-08 A | 2026-08-21 | A41570 FS+2.4d | 10% | 0d | Pipefitting [126 h] |
| A31210 |  | Lay-up & drain pipe spool group 2B — Air conditioning plant No. 4 | 0d | 2026-08-08 A | 2026-08-16 |  | 24% | 0d | Pipefitting [121 h] |
| A06950 |  | Lay-up & drain drain riser 2A — Arresting gear engine room No. 4 | 0d | 2026-08-08 A | 2026-08-19 |  | 12% | 0d | Pipefitting [90 h] |
| A41390 |  | Lay-up & drain valve bank 5B (4-220-1-J) | 0d | 2026-08-08 A | 2026-08-15 |  | 21% | 0d | Pipefitting [73 h] |
| A07120 |  | Lay-up & drain valve bank 8A — Barricade stanchion machinery room | 0d | 2026-08-08 A | 2026-08-19 |  | 13% | 0d | Pipefitting [93 h] |
| A39680 |  | Lay-up & drain drain riser 8B — Auxiliary Machinery Room No. 5 | 0d | 2026-08-09 A | 2026-08-18 |  | 7% | 0d | Pipefitting [109 h] |
| A46680 |  | Lay-up & drain valve bank 1C — Aft fire pump room | 0d | 2026-08-09 A | 2026-08-21 |  | 2% | 0d | Pipefitting [161 h] |
| A51180 |  | Lay-up & drain drain riser 9A — Ballast pump room No. 1 | 0d | 2026-08-09 A | 2026-08-23 |  | 2% | 0d | Pipefitting [237 h] |
| A42500 |  | Lay-up & drain pipe spool group 6C — Emergency diesel generator room No. 4 | 0d | 2026-08-10 A | 2026-08-17 |  | 2% | 0d | Pipefitting [187 h] |
| A51710 |  | Lay-up & drain valve bank 7B — Ballast pump room No. 2 | 0d | 2026-08-10 | 2026-08-23 |  |  |  | Pipefitting [349 h] |
| A41060 |  | Lay-up & drain valve bank 7B — Electrical distribution room No. 2 | 0d | 2026-08-10 | 2026-08-17 |  |  |  | Pipefitting [52 h] |
| A41510 |  | Lay-up & drain drain riser 7A — Aft JP-5 pump room – port | 0d | 2026-08-11 | 2026-08-13 |  |  |  | Pipefitting [75 h] |
| A40890 |  | Lay-up & drain drain riser 1C — Fan room No. 2 | 0d | 2026-08-11 | 2026-08-16 |  |  |  | Pipefitting [82 h] |
| A39630 |  | Cut out valve bank 9A — Auxiliary Machinery Room No. 5 | 0d | 2026-08-11 | 2026-08-16 | A39620 |  |  | Pipefitting [90 h] |
| A07060 |  | Lay-up & drain drain riser 1C — Arresting gear engine room No. 4 | 0d | 2026-08-11 | 2026-08-25 |  |  |  | Pipefitting [228 h] |
| A51490 |  | Lay-up & drain pipe spool group 1A (6-216-2-J) | 0d | 2026-08-12 | 2026-08-23 |  |  |  | Pipefitting [86 h] |
| A12260 |  | Cut out valve bank 4A — JP-5 filling station – aft port | 0d | 2026-08-12 | 2026-08-18 | A12250 FS+0.8d |  |  | Pipefitting [115 h] |
| A40360 |  | Cut out pipe spool group 9D — Electrical distribution room No. 1 | 0d | 2026-08-12 | 2026-08-17 | A40350 |  |  | Pipefitting [132 h] |
| A12080 |  | Lay-up & drain drain riser 3A — JP-5 filling station – aft starboard | 0d | 2026-08-12 | 2026-08-21 |  |  |  | Pipefitting [152 h] |
| A40960 |  | Cut out valve bank 6D — Fan room No. 2 | 0d | 2026-08-12 | 2026-08-24 | A40950 FS+0.8d |  |  | Pipefitting [279 h] |
| A40160 |  | Cut out pipe spool group 5F — Fan room No. 1 | 0d | 2026-08-12 | 2026-08-25 | A40150 FS+2.4d |  |  | Pipefitting [74 h]; Rigging & Weight Handling [19 h] |
| A19820 |  | Cut out drain riser 3C — Fantail | 0d | 2026-08-13 | 2026-08-18 | A19810 |  |  | Pipefitting [32 h] |
| A51770 |  | Lay-up & drain valve bank 8A — Ballast pump room No. 4 | 0d | 2026-08-13 | 2026-08-16 |  |  |  | Pipefitting [52 h] |
| A42240 |  | Cut out pipe spool group 9A — Emergency diesel generator room No. 3 | 0d | 2026-08-13 | 2026-08-19 | A42230 FS+0.8d |  |  | Pipefitting [37 h] |
| A41140 |  | Fab & fit drain riser 2C — Electrical distribution room No. 2 | 0d | 2026-08-13 | 2026-08-21 | A41130 |  |  | Pipefitting [64 h] |
| A20070 |  | Lay-up & drain pipe spool group 9C — Aft mooring gear room | 0d | 2026-08-14 | 2026-08-27 |  |  |  | Pipefitting [75 h] |
| A41630 |  | Lay-up & drain pipe spool group 5C — Aft JP-5 pump room – port | 0d | 2026-08-14 | 2026-08-24 |  |  |  | Pipefitting [75 h] |
| A41700 |  | Cut out pipe spool group 7A — Fan room No. 3 | 0d | 2026-08-15 | 2026-08-17 | A41690 SS+7.2d |  |  | Pipefitting [100 h] |
| A41520 |  | Cut out drain riser 7A — Aft JP-5 pump room – port | 0d | 2026-08-15 | 2026-08-25 | A41510 |  |  | Pipefitting [242 h] |
| A40610 |  | Lay-up & drain drain riser 1B — Low-pressure air compressor room | 0d | 2026-08-15 | 2026-08-25 |  |  |  | Pipefitting [200 h]; Rigging & Weight Handling [51 h] |
| A51550 |  | Lay-up & drain pipe spool group 8B — JP-5 service tank No. 4 | 0d | 2026-08-15 | 2026-08-28 |  |  |  | Pipefitting [73 h] |
| A47610 |  | Lay-up & drain valve bank 8A (5-212-2-Q) | 0d | 2026-08-15 | 2026-08-22 |  |  |  | Pipefitting [164 h] |
| A40840 |  | Cut out valve bank 9B — Fan room No. 2 | 0d | 2026-08-15 | 2026-08-21 | A40830 SS+4.8d |  |  | Pipefitting [83 h]; Rigging & Weight Handling [21 h] |
| A42010 |  | Lay-up & drain pipe spool group 2B — Electrical distribution room No. 3 | 0d | 2026-08-15 | 2026-08-25 |  |  |  | Pipefitting [241 h] |
| A40770 |  | Lay-up & drain pipe spool group 4A — Fan room No. 2 | 0d | 2026-08-15 | 2026-08-25 |  |  |  | Pipefitting [227 h] |

| ID | Activity | Duration | Start | Finish | Predecessors | Resources |
| --- | --- | --- | --- | --- | --- | --- |
| A47790 | Lay-up & drain pipe spool group 8D — Shaft alley No. 4 | 0d | 2026-08-16 | 2026-08-26 |  | Pipefitting [151 h] |
| A47450 | Lay-up & drain drain riser 7D — Shaft alley No. 3 | 0d | 2026-08-16 | 2026-08-30 |  | Pipefitting [357 h] |
| A42700 | Lay-up & drain drain riser 1B — Fan room No. 4 | 0d | 2026-08-16 | 2026-08-22 |  | Pipefitting [36 h] |
| A41400 | Cut out valve bank 5B (4-220-1-J) | 0d | 2026-08-17 | 2026-08-22 | A41390 | Pipefitting [87 h] |
| A40900 | Cut out drain riser 1C — Fan room No. 2 | 0d | 2026-08-17 | 2026-08-26 | A40890 | Pipefitting [101 h] |
| A39640 | Fab & fit valve bank 9A — Auxiliary Machinery Room No. 5 | 0d | 2026-08-17 | 2026-08-23 | A39630 | Pipefitting [61 h] |
| A51780 | Cut out valve bank 8A — Ballast pump room No. 4 | 0d | 2026-08-17 | 2026-08-31 | A51770 | Pipefitting [92 h] |
| A40370 | Fab & fit pipe spool group 9D — Electrical distribution room No. 1 | 0d | 2026-08-17 | 2026-08-25 | A40360 | Pipefitting [277 h] |
| A48680 | Lay-up & drain drain riser 1E — Aft bilge & ballast pump room | 0d | 2026-08-17 | 2026-08-20 |  | Pipefitting [27 h] |
| A31220 | Cut out pipe spool group 2B — Air conditioning plant No. 4 | 0d | 2026-08-17 | 2026-08-27 | A31210 | Pipefitting [254 h] |
| A19830 | Fab & fit drain riser 3C — Fantail | 0d | 2026-08-18 | 2026-08-25 | A19820 SS+7.2d | Pipefitting [186 h]; Rigging & Weight Handling [47 h] |
| A48060 | Lay-up & drain pipe spool group 4A — Pump room No. 1 | 0d | 2026-08-18 | 2026-08-31 |  | Pipefitting [77 h] |
| A43370 | Lay-up & drain drain riser 8A — Steering gear room – port | 0d | 2026-08-18 | 2026-08-23 |  | Pipefitting [59 h] |
| A12200 | Cut out valve bank 6C — JP-5 filling station – aft starboard | 0d | 2026-08-19 | 2026-08-21 | A12190 | Pipefitting [28 h] |
| A41750 | Lay-up & drain pipe spool group 7B — Fan room No. 3 | 0d | 2026-08-19 | 2026-08-25 |  | Pipefitting [105 h] |
| A39690 | Cut out drain riser 8B — Auxiliary Machinery Room No. 5 | 0d | 2026-08-19 | 2026-08-24 | A39680 | Pipefitting [70 h] |
| A42510 | Cut out pipe spool group 6C — Emergency diesel generator room No. 4 | 0d | 2026-08-19 | 2026-08-31 | A42500 FS+2.4d | Pipefitting [82 h] |
| A12270 | Fab & fit valve bank 4A — JP-5 filling station – aft port | 0d | 2026-08-19 | 2026-08-28 | A12260 | Pipefitting [153 h] |
| A48620 | Lay-up & drain pipe spool group 3D — Aft bilge & ballast pump room | 0d | 2026-08-19 | 2026-08-30 |  | Pipefitting [146 h] |
| A07130 | Cut out valve bank 8A — Barricade stanchion machinery room | 0d | 2026-08-20 | 2026-08-23 | A07120 | Pipefitting [42 h] |
| A06960 | Cut out drain riser 2A — Arresting gear engine room No. 4 | 0d | 2026-08-20 | 2026-08-28 | A06950 FS+0.8d | Pipefitting [209 h] |
| A41070 | Cut out valve bank 7B — Electrical distribution room No. 2 | 0d | 2026-08-20 | 2026-08-24 | A41060 | Pipefitting [52 h] |
| A47390 | Lay-up & drain pipe spool group 6C — Shaft alley No. 3 | 0d | 2026-08-20 | 2026-08-24 |  | Pipefitting [51 h] |
| A40060 | Fab & fit pipe spool group 3D — Fan room No. 1 | 0d | 2026-08-20 | 2026-08-27 | A40050 | Pipefitting [114 h] |
| A41710 | Fab & fit pipe spool group 7A — Fan room No. 3 | 0d | 2026-08-20 | 2026-08-22 | A41700 | Pipefitting [57 h] |
| A42250 | Fab & fit pipe spool group 9A — Emergency diesel generator room No. 3 | 0d | 2026-08-20 | 2026-09-01 | A42240 | Pipefitting [379 h] |
| A48690 | Cut out drain riser 1E — Aft bilge & ballast pump room | 0d | 2026-08-21 | 2026-08-27 | A48680 | Pipefitting [109 h] |
| A47730 | Lay-up & drain pipe spool group 3C — Shaft alley No. 4 | 0d | 2026-08-21 | 2026-08-31 |  | Pipefitting [256 h] |
| A12210 | Fab & fit valve bank 6C — JP-5 filling station – aft starboard | 0d | 2026-08-21 | 2026-08-30 | A12200 | Pipefitting [144 h]; Rigging & Weight Handling [37 h] |
| A41150 | Weld out drain riser 2C — Electrical distribution room No. 2 | 0d | 2026-08-22 | 2026-08-28 | A41140 | Pipefitting [91 h] |
| A41470 | Fab & fit pipe spool group 2C — Aft JP-5 pump room – starboard | 0d | 2026-08-22 | 2026-08-31 | A41460 FS+2.4d | Pipefitting [240 h] |
| A46690 | Cut out valve bank 1C — Aft fire pump room | 0d | 2026-08-22 | 2026-09-02 | A46680 | Pipefitting [100 h] |
| A47620 | Cut out valve bank 8A (5-212-2-Q) | 0d | 2026-08-22 | 2026-08-28 | A47610 | Pipefitting [179 h] |
| A12090 | Cut out drain riser 3A — JP-5 filling station – aft starboard | 0d | 2026-08-23 | 2026-08-27 | A12080 FS+2.4d | Pipefitting [25 h] |
| A40850 | Fab & fit valve bank 9B — Fan room No. 2 | 0d | 2026-08-23 | 2026-09-04 | A40840 | Pipefitting [222 h] |
| A51500 | Cut out pipe spool group 1A (6-216-2-J) | 0d | 2026-08-23 | 2026-08-27 | A51490 | Pipefitting [69 h] |
| A07140 | Fab & fit valve bank 8A — Barricade stanchion machinery room | 0d | 2026-08-24 | 2026-08-28 | A07130 | Pipefitting [69 h] |
| A41720 | Weld out pipe spool group 7A — Fan room No. 3 | 0d | 2026-08-24 | 2026-08-27 | A41710 SS+4.8d | Pipefitting [38 h]; Rigging & Weight Handling [10 h] |
| A41590 | Fab & fit pipe spool group 5B — Aft JP-5 pump room – port | 0d | 2026-08-24 | 2026-09-05 | A41580 FS+0.8d | Pipefitting [79 h] |
| A40970 | Fab & fit valve bank 6D — Fan room No. 2 | 0d | 2026-08-24 | 2026-08-28 | A40960 | Pipefitting [48 h] |
| A39650 | Weld out valve bank 9A — Auxiliary Machinery Room No. 5 | 0d | 2026-08-24 | 2026-09-01 | A39640 | Pipefitting [54 h] |
| A42710 | Cut out drain riser 1B — Fan room No. 4 | 0d | 2026-08-25 | 2026-08-31 | A42700 FS+2.4d | Pipefitting [61 h] |
| A47400 | Cut out pipe spool group 6C — Shaft alley No. 3 | 0d | 2026-08-25 | 2026-08-30 | A47390 FS+2.4d | Pipefitting [32 h] |
| A51190 | Cut out drain riser 9A — Ballast pump room No. 1 | 0d | 2026-08-25 | 2026-08-31 | A51180 | Pipefitting [188 h] |
| A41410 | Fab & fit valve bank 5B (4-220-1-J) | 0d | 2026-08-25 | 2026-09-06 | A41400 FS+2.4d | Pipefitting [259 h] |
| A51720 | Cut out valve bank 7B — Ballast pump room No. 2 | 0d | 2026-08-25 | 2026-09-03 | A51710 | Pipefitting [154 h] |
| A39700 | Fab & fit drain riser 8B — Auxiliary Machinery Room No. 5 | 0d | 2026-08-25 | 2026-08-31 | A39690 | Pipefitting [97 h] |
| A41080 | Fab & fit valve bank 7B — Electrical distribution room No. 2 | 0d | 2026-08-25 | 2026-08-31 | A41070 | Pipefitting [69 h] |
| A43380 | Cut out drain riser 8A — Steering gear room – port | 0d | 2026-08-26 | 2026-08-28 | A43370 SS+2.4d | Pipefitting [35 h] |
| A07070 | Cut out drain riser 1C — Arresting gear engine room No. 4 | 0d | 2026-08-26 | 2026-09-02 | A07060 FS+2.4d | Pipefitting [56 h] |
| A41640 | Cut out pipe spool group 5C — Aft JP-5 pump room – port | 0d | 2026-08-26 | 2026-08-29 | A41630 | Pipefitting [103 h] |
| A40170 | Fab & fit pipe spool group 5F — Fan room No. 1 | 0d | 2026-08-26 | 2026-09-04 | A40160 FS+0.8d | Pipefitting [94 h]; Rigging & Weight Handling [24 h] |
| A40780 | Cut out pipe spool group 4A — Fan room No. 2 | 0d | 2026-08-26 | 2026-09-02 | A40770 | Pipefitting [107 h] |
| A40910 | Fab & fit drain riser 1C — Fan room No. 2 | 0d | 2026-08-26 | 2026-08-31 | A40900 | Pipefitting [86 h] |
| A41760 | Cut out pipe spool group 7B — Fan room No. 3 | 0d | 2026-08-26 | 2026-09-06 | A41750 | Pipefitting [87 h] |
| A42020 | Cut out pipe spool group 2B — Electrical distribution room No. 3 | 0d | 2026-08-27 | 2026-09-05 | A42010 | Pipefitting [129 h] |
| A48700 | Fab & fit drain riser 1E — Aft bilge & ballast pump room | 0d | 2026-08-27 | 2026-09-02 | A48690 SS+7.2d | Pipefitting [126 h] |
| A40380 | Weld out pipe spool group 9D — Electrical distribution room No. 1 | 0d | 2026-08-27 | 2026-09-01 | A40370 SS+4.8d | Pipefitting [89 h] |
| A19840 | Weld out drain riser 3C — Fantail | 0d | 2026-08-27 | 2026-08-30 | A19830 FS+0.8d | Pipefitting [23 h] |
| A41530 | Fab & fit drain riser 7A — Aft JP-5 pump room – port | 0d | 2026-08-27 | 2026-09-09 | A41520 | Pipefitting [77 h] |
| A12100 | Fab & fit drain riser 3A — JP-5 filling station – aft starboard | 0d | 2026-08-27 | 2026-09-10 | A12090 FS+0.8d | Pipefitting [181 h] |
| A40070 | Weld out pipe spool group 3D — Fan room No. 1 | 0d | 2026-08-27 | 2026-09-08 | A40060 | Pipefitting [95 h] |
| A40620 | Cut out drain riser 1B — Low-pressure air compressor room | 0d | 2026-08-28 | 2026-09-08 | A40610 | Pipefitting [182 h] |
| A47800 | Cut out pipe spool group 8D — Shaft alley No. 4 | 0d | 2026-08-28 | 2026-08-31 | A47790 | Pipefitting [57 h] |
| A47630 | Fab & fit valve bank 8A (5-212-2-Q) | 0d | 2026-08-28 | 2026-09-05 | A47620 FS+2.4d | Pipefitting [48 h] |
| A06970 | Fab & fit drain riser 2A — Arresting gear engine room No. 4 | 0d | 2026-08-28 | 2026-09-03 | A06960 | Pipefitting [64 h] |
| A41730 | Hydro test pipe spool group 7A — Fan room No. 3 | 0d | 2026-08-29 | 2026-09-08 | A41720 FS+0.8d | Pipefitting [79 h] |
| A51560 | Cut out pipe spool group 8B — JP-5 service tank No. 4 | 0d | 2026-08-29 | 2026-09-04 | A51550 | Pipefitting [48 h] |
| A43390 | Fab & fit drain riser 8A — Steering gear room – port | 0d | 2026-08-29 | 2026-08-31 | A43380 | Pipefitting [21 h]; Rigging & Weight Handling [6 h] |
| A20080 | Cut out pipe spool group 9C — Aft mooring gear room | 0d | 2026-08-29 | 2026-09-09 | A20070 | Pipefitting [266 h] |

| ID | Activity | Duration | Start | Finish | Predecessors | Resources |
| --- | --- | --- | --- | --- | --- | --- |
| A51510 | Fab & fit pipe spool group 1A (6-216-2-J) | 0d | 2026-08-30 | 2026-09-07 | A51500 FS+0.8d | Pipefitting [156 h] |
| A31230 | Fab & fit pipe spool group 2B — Air conditioning plant No. 4 | 0d | 2026-08-30 | 2026-09-03 | A31220 FS+0.8d | Pipefitting [81 h] |
| A12280 | Weld out valve bank 4A — JP-5 filling station – aft port | 0d | 2026-08-30 | 2026-09-07 | A12270 | Pipefitting [118 h] |
| A40980 | Weld out valve bank 6D — Fan room No. 2 | 0d | 2026-08-30 | 2026-09-06 | A40970 FS+0.8d | Pipefitting [178 h] |
| A07150 | Weld out valve bank 8A — Barricade stanchion machinery room | 0d | 2026-08-30 | 2026-09-09 | A07140 | Pipefitting [64 h] |
| A41650 | Fab & fit pipe spool group 5C — Aft JP-5 pump room – port | 0d | 2026-08-30 | 2026-09-11 | A41640 FS+2.4d | Pipefitting [161 h]; Rigging & Weight Handling [41 h] |
| A42520 | Fab & fit pipe spool group 6C — Emergency diesel generator room No. 4 | 0d | 2026-08-31 | 2026-09-11 | A42510 | Pipefitting [196 h] |
| A41160 | Hydro test drain riser 2C — Electrical distribution room No. 2 | 0d | 2026-08-31 | 2026-09-07 | A41150 | Pipefitting [208 h] |
| A47460 | Cut out drain riser 7D — Shaft alley No. 3 | 0d | 2026-08-31 | 2026-09-07 | A47450 | Pipefitting [50 h] |
| A48630 | Cut out pipe spool group 3D — Aft bilge & ballast pump room | 0d | 2026-08-31 | 2026-09-12 | A48620 | Pipefitting [341 h] |
| A41480 | Weld out pipe spool group 2C — Aft JP-5 pump room – starboard | 0d | 2026-08-31 | 2026-09-14 | A41470 | Pipefitting [98 h]; Rigging & Weight Handling [25 h] |
| A47810 | Fab & fit pipe spool group 8D — Shaft alley No. 4 | 0d | 2026-09-01 | 2026-09-05 | A47800 | Pipefitting [109 h] |
| A42720 | Fab & fit drain riser 1B — Fan room No. 4 | 0d | 2026-09-01 | 2026-09-12 | A42710 SS+7.2d | Pipefitting [166 h] |
| A19850 | Hydro test drain riser 3C — Fantail | 0d | 2026-09-01 | 2026-09-05 | A19840 FS+0.8d | Pipefitting [93 h] |
| A12220 | Weld out valve bank 6C — JP-5 filling station – aft starboard | 0d | 2026-09-01 | 2026-09-12 | A12210 | Pipefitting [149 h] |
| A39710 | Weld out drain riser 8B — Auxiliary Machinery Room No. 5 | 0d | 2026-09-01 | 2026-09-04 | A39700 FS+2.4d | Pipefitting [43 h] |
| A47410 | Fab & fit pipe spool group 6C — Shaft alley No. 3 | 0d | 2026-09-01 | 2026-09-08 | A47400 | Pipefitting [112 h] |
| A47740 | Cut out pipe spool group 3C — Shaft alley No. 4 | 0d | 2026-09-02 | 2026-09-13 | A47730 FS-2.4d | Pipefitting [171 h] |
| A51790 | Fab & fit valve bank 8A — Ballast pump room No. 4 | 0d | 2026-09-02 | 2026-09-13 | A51780 FS+0.8d | Pipefitting [73 h]; Rigging & Weight Handling [19 h] |
| A41090 | Weld out valve bank 7B — Electrical distribution room No. 2 | 0d | 2026-09-02 | 2026-09-10 | A41080 FS+0.8d | Pipefitting [37 h]; Rigging & Weight Handling [10 h] |
| A43400 | Weld out drain riser 8A — Steering gear room – port | 0d | 2026-09-02 | 2026-09-05 | A43390 | Pipefitting [30 h] |
| A40920 | Weld out drain riser 1C — Fan room No. 2 | 0d | 2026-09-02 | 2026-09-11 | A40910 FS+0.8d | Pipefitting [57 h] |
| A48070 | Cut out pipe spool group 4A — Pump room No. 1 | 0d | 2026-09-02 | 2026-09-15 | A48060 FS+0.8d | Pipefitting [175 h] |
| A51200 | Fab & fit drain riser 9A — Ballast pump room No. 1 | 0d | 2026-09-03 | 2026-09-07 | A51190 SS+7.2d | Pipefitting [41 h] |
| A42260 | Weld out pipe spool group 9A — Emergency diesel generator room No. 3 | 0d | 2026-09-03 | 2026-09-06 | A42250 SS+7.2d | Pipefitting [57 h] |
| A46700 | Fab & fit valve bank 1C — Aft fire pump room | 0d | 2026-09-03 | 2026-09-11 | A46690 FS+2.4d | Pipefitting [129 h] |
| A51730 | Fab & fit valve bank 7B — Ballast pump room No. 2 | 0d | 2026-09-04 | 2026-09-13 | A51720 FS+2.4d | Pipefitting [226 h] |
| A39660 | Hydro test valve bank 9A — Auxiliary Machinery Room No. 5 | 0d | 2026-09-04 | 2026-09-08 | A39650 | Pipefitting [30 h] |
| A40790 | Fab & fit pipe spool group 4A — Fan room No. 2 | 0d | 2026-09-04 | 2026-09-07 | A40780 FS+2.4d | Pipefitting [38 h] |
| A07080 | Fab & fit drain riser 1C — Arresting gear engine room No. 4 | 0d | 2026-09-04 | 2026-09-12 | A07070 | Pipefitting [47 h] |
| A40390 | Hydro test pipe spool group 9D — Electrical distribution room No. 1 | 0d | 2026-09-04 | 2026-09-07 | A40380 FS-2.4d | Pipefitting [53 h] |
| A51570 | Fab & fit pipe spool group 8B — JP-5 service tank No. 4 | 0d | 2026-09-05 | 2026-09-13 | A51560 FS+0.8d | Pipefitting [55 h] |
| A48710 | Weld out drain riser 1E — Aft bilge & ballast pump room | 0d | 2026-09-05 | 2026-09-08 | A48700 | Pipefitting [34 h] |
| A31240 | Weld out pipe spool group 2B — Air conditioning plant No. 4 | 0d | 2026-09-05 | 2026-09-18 | A31230 | Pipefitting [179 h] |
| A06980 | Weld out drain riser 2A — Arresting gear engine room No. 4 | 0d | 2026-09-05 | 2026-09-19 | A06970 | Pipefitting [226 h] |
| A40860 | Weld out valve bank 9B — Fan room No. 2 | 0d | 2026-09-06 | 2026-09-10 | A40850 | Pipefitting [60 h] |
| A40180 | Weld out pipe spool group 5F — Fan room No. 1 | 0d | 2026-09-06 | 2026-09-17 | A40170 | Pipefitting [243 h] |
| A39720 | Hydro test drain riser 8B — Auxiliary Machinery Room No. 5 | 0d | 2026-09-07 | 2026-09-12 | A39710 | Pipefitting [76 h] |
| A41420 | Weld out valve bank 5B (4-220-1-J) | 0d | 2026-09-07 | 2026-09-09 | A41410 | Pipefitting [14 h] |
| A40990 | Hydro test valve bank 6D — Fan room No. 2 | 0d | 2026-09-07 | 2026-09-19 | A40980 | Pipefitting [76 h] |
| A43410 | Hydro test drain riser 8A — Steering gear room – port | 0d | 2026-09-07 | 2026-09-16 | A43400 | Pipefitting [205 h] |
| A47640 | Weld out valve bank 8A (5-212-2-Q) | 0d | 2026-09-07 | 2026-09-11 | A47630 SS+7.2d | Pipefitting [64 h] |
| A19860 | Flush & restore drain riser 3C — Fantail | 0d | 2026-09-07 | 2026-09-21 | A19850 | Pipefitting [106 h] |
| A42030 | Fab & fit pipe spool group 2B — Electrical distribution room No. 3 | 0d | 2026-09-08 | 2026-09-13 | A42020 | Pipefitting [171 h] |
| A51520 | Weld out pipe spool group 1A (6-216-2-J) | 0d | 2026-09-08 | 2026-09-18 | A51510 | Pipefitting [95 h] |
| A47820 | Weld out pipe spool group 8D — Shaft alley No. 4 | 0d | 2026-09-08 | 2026-09-13 | A47810 | Pipefitting [33 h] |
| A41600 | Weld out pipe spool group 5B — Aft JP-5 pump room – port | 0d | 2026-09-08 | 2026-09-11 | A41590 | Pipefitting [19 h] |
| A41770 | Fab & fit pipe spool group 7B — Fan room No. 3 | 0d | 2026-09-08 | 2026-09-18 | A41760 | Pipefitting [140 h]; Rigging & Weight Handling [35 h] |
| A47420 | Weld out pipe spool group 6C — Shaft alley No. 3 | 0d | 2026-09-08 | 2026-09-20 | A47410 | Pipefitting [196 h] |
| A51210 | Weld out drain riser 9A — Ballast pump room No. 1 | 0d | 2026-09-08 | 2026-09-17 | A51200 | Pipefitting [220 h] |
| A40630 | Fab & fit drain riser 1B — Low-pressure air compressor room | 0d | 2026-09-09 | 2026-09-16 | A40620 FS+0.8d | Pipefitting [157 h] |
| A42270 | Hydro test pipe spool group 9A — Emergency diesel generator room No. 3 | 0d | 2026-09-09 | 2026-09-22 | A42260 | Pipefitting [178 h] |
| A40400 | Flush & restore pipe spool group 9D — Electrical distribution room No. 1 | 0d | 2026-09-09 | 2026-09-19 | A40390 | Pipefitting [124 h] |
| A48720 | Hydro test drain riser 1E — Aft bilge & ballast pump room | 0d | 2026-09-09 | 2026-09-20 | A48710 FS+2.4d | Pipefitting [285 h] |
| A40800 | Weld out pipe spool group 4A — Fan room No. 2 | 0d | 2026-09-09 | 2026-09-13 | A40790 | Pipefitting [55 h] |
| A47470 | Fab & fit drain riser 7D — Shaft alley No. 3 | 0d | 2026-09-09 | 2026-09-13 | A47460 | Pipefitting [79 h] |
| A40080 | Hydro test pipe spool group 3D — Fan room No. 1 | 0d | 2026-09-09 | 2026-09-12 | A40070 | Pipefitting [16 h] |
| A41740 | Flush & restore pipe spool group 7A — Fan room No. 3 | 0d | 2026-09-09 | 2026-09-15 | A41730 FS+0.8d | Pipefitting [91 h] |
| A12290 | Hydro test valve bank 4A — JP-5 filling station – aft port | 0d | 2026-09-10 | 2026-09-15 | A12280 | Pipefitting [52 h]; Rigging & Weight Handling [13 h] |
| A41170 | Flush & restore drain riser 2C — Electrical distribution room No. 2 | 0d | 2026-09-10 | 2026-09-16 | A41160 FS+2.4d | Pipefitting [43 h] |
| A41540 | Weld out drain riser 7A — Aft JP-5 pump room – port | 0d | 2026-09-10 | 2026-09-18 | A41530 | Pipefitting [115 h] |
| A20090 | Fab & fit pipe spool group 9C — Aft mooring gear room | 0d | 2026-09-10 | 2026-09-18 | A20080 FS+2.4d | Pipefitting [52 h] |
| A39670 | Flush & restore valve bank 9A — Auxiliary Machinery Room No. 5 | 0d | 2026-09-10 | 2026-09-24 | A39660 FS+2.4d | Pipefitting [180 h]; Rigging & Weight Handling [46 h] |
| A41430 | Hydro test valve bank 5B (4-220-1-J) | 0d | 2026-09-11 | 2026-09-21 | A41420 FS+2.4d | Pipefitting [83 h] |
| A12110 | Weld out drain riser 3A — JP-5 filling station – aft starboard | 0d | 2026-09-11 | 2026-09-23 | A12100 | Pipefitting [152 h] |
| A41660 | Weld out pipe spool group 5C — Aft JP-5 pump room – port | 0d | 2026-09-11 | 2026-09-23 | A41650 FS+0.8d | Pipefitting [70 h] |
| A41100 | Hydro test valve bank 7B — Electrical distribution room No. 2 | 0d | 2026-09-11 | 2026-09-18 | A41090 | Pipefitting [101 h] |
| A07160 | Hydro test valve bank 8A — Barricade stanchion machinery room | 0d | 2026-09-12 | 2026-09-16 | A07150 FS+2.4d | Pipefitting [85 h] |
| A40870 | Hydro test valve bank 9B — Fan room No. 2 | 0d | 2026-09-12 | 2026-09-24 | A40860 FS+2.4d | Pipefitting [85 h] |
| A46710 | Weld out valve bank 1C — Aft fire pump room | 0d | 2026-09-12 | 2026-09-20 | A46700 FS-4.8d | Pipefitting [294 h] |

| ID | Activity | Duration | Start | Finish | Predecessors | Resources |
| --- | --- | --- | --- | --- | --- | --- |
| A48640 | Fab & fit pipe spool group 3D — Aft bilge & ballast pump room | 0d | 2026-09-12 | 2026-09-22 | A48630 FS+2.4d | Pipefitting [165 h] |
| A47650 | Hydro test valve bank 8A (5-212-2-Q) | 0d | 2026-09-13 | 2026-09-22 | A47640 | Pipefitting [119 h] |
| A40930 | Hydro test drain riser 1C — Fan room No. 2 | 0d | 2026-09-13 | 2026-09-15 | A40920 | Pipefitting [71 h] |
| A42530 | Weld out pipe spool group 6C — Emergency diesel generator room No. 4 | 0d | 2026-09-13 | 2026-09-24 | A42520 FS+2.4d | Pipefitting [97 h] |
| A51800 | Weld out valve bank 8A — Ballast pump room No. 4 | 0d | 2026-09-13 | 2026-09-22 | A51790 | Pipefitting [55 h] |
| A41610 | Hydro test pipe spool group 5B — Aft JP-5 pump room – port | 0d | 2026-09-13 | 2026-09-20 | A41600 | Pipefitting [86 h] |
| A51580 | Weld out pipe spool group 8B — JP-5 service tank No. 4 | 0d | 2026-09-14 | 2026-09-19 | A51570 | Pipefitting [36 h]; Rigging & Weight Handling [10 h] |
| A39730 | Flush & restore drain riser 8B — Auxiliary Machinery Room No. 5 | 0d | 2026-09-14 | 2026-09-19 | A39720 FS+0.8d | Pipefitting [95 h] |
| A40810 | Hydro test pipe spool group 4A — Fan room No. 2 | 0d | 2026-09-14 | 2026-09-20 | A40800 | Pipefitting [74 h] |
| A07090 | Weld out drain riser 1C — Arresting gear engine room No. 4 | 0d | 2026-09-14 | 2026-09-24 | A07080 | Pipefitting [163 h] |
| A42730 | Weld out drain riser 1B — Fan room No. 4 | 0d | 2026-09-15 | 2026-09-27 | A42720 | Pipefitting [78 h] |
| A47750 | Fab & fit pipe spool group 3C — Shaft alley No. 4 | 0d | 2026-09-15 | 2026-09-19 | A47740 | Pipefitting [59 h] |
| A47830 | Hydro test pipe spool group 8D — Shaft alley No. 4 | 0d | 2026-09-15 | 2026-09-29 | A47820 | Pipefitting [211 h] |
| A40090 | Flush & restore pipe spool group 3D — Fan room No. 1 | 0d | 2026-09-15 | 2026-09-20 | A40080 | Pipefitting [70 h] |
| A12230 | Hydro test valve bank 6C — JP-5 filling station – aft starboard | 0d | 2026-09-15 | 2026-09-20 | A12220 | Pipefitting [32 h] |
| A42040 | Weld out pipe spool group 2B — Electrical distribution room No. 3 | 0d | 2026-09-15 | 2026-09-26 | A42030 SS+4.8d | Pipefitting [77 h] |
| A47480 | Weld out drain riser 7D — Shaft alley No. 3 | 0d | 2026-09-16 | 2026-09-24 | A47470 | Pipefitting [114 h] |
| A51740 | Weld out valve bank 7B — Ballast pump room No. 2 | 0d | 2026-09-16 | 2026-09-29 | A51730 | Pipefitting [429 h] |
| A48080 | Fab & fit pipe spool group 4A — Pump room No. 1 | 0d | 2026-09-16 | 2026-09-23 | A48070 | Pipefitting [48 h] |
| A41490 | Hydro test pipe spool group 2C — Aft JP-5 pump room – starboard | 0d | 2026-09-16 | 2026-09-22 | A41480 | Pipefitting [139 h] |
| A12300 | Flush & restore valve bank 4A — JP-5 filling station – aft port | 0d | 2026-09-16 | 2026-09-27 | A12290 | Pipefitting [175 h] |
| A40640 | Weld out drain riser 1B — Low-pressure air compressor room | 0d | 2026-09-17 | 2026-09-28 | A40630 | Pipefitting [180 h] |
| A07170 | Flush & restore valve bank 8A — Barricade stanchion machinery room | 0d | 2026-09-17 | 2026-09-19 | A07160 | Pipefitting [16 h] |
| A43420 | Flush & restore drain riser 8A — Steering gear room – port | 0d | 2026-09-17 | 2026-09-25 | A43410 | Pipefitting [178 h] |
| A40940 | Flush & restore drain riser 1C — Fan room No. 2 | 0d | 2026-09-17 | 2026-09-28 | A40930 FS+0.8d | Pipefitting [197 h] |
| A51220 | Hydro test drain riser 9A — Ballast pump room No. 1 | 0d | 2026-09-18 | 2026-10-01 | A51210 | Pipefitting [256 h] |
| A31250 | Hydro test pipe spool group 2B — Air conditioning plant No. 4 | 0d | 2026-09-18 | 2026-09-28 | A31240 | Pipefitting [63 h] |
| A06990 | Hydro test drain riser 2A — Arresting gear engine room No. 4 | 0d | 2026-09-19 | 2026-09-25 | A06980 | Pipefitting [210 h] |
| A51530 | Hydro test pipe spool group 1A (6-216-2-J) | 0d | 2026-09-19 | 2026-09-21 | A51520 | Pipefitting [14 h] |
| A40190 | Hydro test pipe spool group 5F — Fan room No. 1 | 0d | 2026-09-19 | 2026-09-22 | A40180 | Pipefitting [78 h] |
| A41550 | Hydro test drain riser 7A — Aft JP-5 pump room – port | 0d | 2026-09-19 | 2026-10-02 | A41540 | Pipefitting [90 h] |
| A20100 | Weld out pipe spool group 9C — Aft mooring gear room | 0d | 2026-09-20 | 2026-09-26 | A20090 | Pipefitting [48 h] |
| A41110 | Flush & restore valve bank 7B — Electrical distribution room No. 2 | 0d | 2026-09-20 | 2026-09-24 | A41100 | Pipefitting [35 h] |
| A40820 | Flush & restore pipe spool group 4A — Fan room No. 2 | 0d | 2026-09-20 | 2026-09-24 | A40810 | Pipefitting [70 h] |
| A41780 | Weld out pipe spool group 7B — Fan room No. 3 | 0d | 2026-09-20 | 2026-09-29 | A41770 FS+2.4d | Pipefitting [136 h] |
| A47760 | Weld out pipe spool group 3C — Shaft alley No. 4 | 0d | 2026-09-20 | 2026-09-28 | A47750 FS+0.8d | Pipefitting [121 h] |
| A51590 | Hydro test pipe spool group 8B — JP-5 service tank No. 4 | 0d | 2026-09-21 | 2026-10-03 | A51580 | Pipefitting [362 h] |
| A48730 | Flush & restore drain riser 1E — Aft bilge & ballast pump room | 0d | 2026-09-21 | 2026-09-26 | A48720 | Pipefitting [32 h] |
| A51540 | Flush & restore pipe spool group 1A (6-216-2-J) | 0d | 2026-09-21 | 2026-09-26 | A51530 | Pipefitting [28 h] |
| A41000 | Flush & restore valve bank 6D — Fan room No. 2 | 0d | 2026-09-22 | 2026-09-28 | A40990 | Pipefitting [131 h] |
| A47430 | Hydro test pipe spool group 6C — Shaft alley No. 3 | 0d | 2026-09-22 | 2026-10-04 | A47420 | Pipefitting [85 h] |
| A41500 | Flush & restore pipe spool group 2C — Aft JP-5 pump room – starboard | 0d | 2026-09-22 | 2026-10-05 | A41490 FS+2.4d | Pipefitting [317 h] |
| A41620 | Flush & restore pipe spool group 5B — Aft JP-5 pump room – port | 0d | 2026-09-22 | 2026-09-27 | A41610 | Pipefitting [81 h] |
| A41440 | Flush & restore valve bank 5B (4-220-1-J) | 0d | 2026-09-22 | 2026-09-30 | A41430 | Pipefitting [160 h] |
| A12240 | Flush & restore valve bank 6C — JP-5 filling station – aft starboard | 0d | 2026-09-22 | 2026-09-25 | A12230 | Pipefitting [85 h] |
| A47660 | Flush & restore valve bank 8A (5-212-2-Q) | 0d | 2026-09-22 | 2026-10-02 | A47650 | Pipefitting [145 h] |
| A42280 | Flush & restore pipe spool group 9A — Emergency diesel generator room No. 3 | 0d | 2026-09-22 | 2026-10-01 | A42270 SS+4.8d | Pipefitting [69 h] |
| A46720 | Hydro test valve bank 1C — Aft fire pump room | 0d | 2026-09-22 | 2026-09-27 | A46710 FS+0.8d | Pipefitting [68 h] |
| A41670 | Hydro test pipe spool group 5C — Aft JP-5 pump room – port | 0d | 2026-09-23 | 2026-10-01 | A41660 FS+0.8d | Pipefitting [146 h] |
| A12120 | Hydro test drain riser 3A — JP-5 filling station – aft starboard | 0d | 2026-09-23 | 2026-09-28 | A12110 | Pipefitting [36 h] |
| A48650 | Weld out pipe spool group 3D — Aft bilge & ballast pump room | 0d | 2026-09-23 | 2026-09-30 | A48640 | Pipefitting [114 h] |
| A40200 | Flush & restore pipe spool group 5F — Fan room No. 1 | 0d | 2026-09-24 | 2026-10-05 | A40190 FS+2.4d | Pipefitting [74 h] |
| A51810 | Hydro test valve bank 8A — Ballast pump room No. 4 | 0d | 2026-09-24 | 2026-09-30 | A51800 FS+2.4d | Pipefitting [42 h] |
| A07100 | Hydro test drain riser 1C — Arresting gear engine room No. 4 | 0d | 2026-09-25 | 2026-09-27 | A07090 FS+2.4d | Pipefitting [13 h] |
| A48090 | Weld out pipe spool group 4A — Pump room No. 1 | 0d | 2026-09-25 | 2026-10-05 | A48080 | Pipefitting [228 h] |
| A42540 | Hydro test pipe spool group 6C — Emergency diesel generator room No. 4 | 0d | 2026-09-25 | 2026-10-02 | A42530 FS+2.4d | Pipefitting [47 h] |
| A47490 | Hydro test drain riser 7D — Shaft alley No. 3 | 0d | 2026-09-25 | 2026-09-30 | A47480 | Pipefitting [71 h] |
| A42050 | Hydro test pipe spool group 2B — Electrical distribution room No. 3 | 0d | 2026-09-26 | 2026-10-09 | A42040 | Pipefitting [104 h] |
| A40880 | Flush & restore valve bank 9B — Fan room No. 2 | 0d | 2026-09-26 | 2026-10-08 | A40870 FS+0.8d | Pipefitting [210 h] |
| A07000 | Flush & restore drain riser 2A — Arresting gear engine room No. 4 | 0d | 2026-09-26 | 2026-10-08 | A06990 | Pipefitting [99 h] |
| A42740 | Hydro test drain riser 1B — Fan room No. 4 | 0d | 2026-09-28 | 2026-10-01 | A42730 | Pipefitting [18 h] |
| A20110 | Hydro test pipe spool group 9C — Aft mooring gear room | 0d | 2026-09-28 | 2026-10-01 | A20100 | Pipefitting [86 h] |
| A07110 | Flush & restore drain riser 1C — Arresting gear engine room No. 4 | 0d | 2026-09-29 | 2026-10-03 | A07100 | Pipefitting [37 h] |
| A40650 | Hydro test drain riser 1B — Low-pressure air compressor room | 0d | 2026-09-29 | 2026-10-13 | A40640 FS+2.4d | Pipefitting [111 h] |
| A41790 | Hydro test pipe spool group 7B — Fan room No. 3 | 0d | 2026-09-29 | 2026-10-06 | A41780 FS+2.4d | Pipefitting [229 h] |
| A12130 | Flush & restore drain riser 3A — JP-5 filling station – aft starboard | 0d | 2026-09-30 | 2026-10-07 | A12120 | Pipefitting [140 h]; Rigging & Weight Handling [35 h] |
| A51750 | Hydro test valve bank 7B — Ballast pump room No. 2 | 0d | 2026-09-30 | 2026-10-10 | A51740 | Pipefitting [92 h] |
| A47500 | Flush & restore drain riser 7D — Shaft alley No. 3 | 0d | 2026-09-30 | 2026-10-02 | A47490 FS+2.4d | Pipefitting [32 h] |
| A46730 | Flush & restore valve bank 1C — Aft fire pump room | 0d | 2026-09-30 | 2026-10-07 | A46720 | Pipefitting [45 h] |
| A31260 | Flush & restore pipe spool group 2B — Air conditioning plant No. 4 | 0d | 2026-09-30 | 2026-10-08 | A31250 FS+0.8d | Pipefitting [104 h]; Rigging & Weight Handling [27 h] |

| ID | WBS | Activity | Duration | Start | Finish | Predecessors | Complete | Remaining | Resources |
| --- | --- | --- | --- | --- | --- | --- | --- | --- | --- |
| A47770 |  | Hydro test pipe spool group 3C — Shaft alley No. 4 | 0d | 2026-10-01 | 2026-10-03 | A47760 |  |  | Pipefitting [30 h] |
| A47840 |  | Flush & restore pipe spool group 8D — Shaft alley No. 4 | 0d | 2026-10-01 | 2026-10-11 | A47830 |  |  | Pipefitting [304 h]; Rigging & Weight Handling [76 h] |
| A51230 |  | Flush & restore drain riser 9A — Ballast pump room No. 1 | 0d | 2026-10-01 | 2026-10-11 | A51220 |  |  | Pipefitting [225 h] |
| A51820 |  | Flush & restore valve bank 8A — Ballast pump room No. 4 | 0d | 2026-10-02 | 2026-10-11 | A51810 FS+0.8d |  |  | Pipefitting [239 h] |
| A48660 |  | Hydro test pipe spool group 3D — Aft bilge & ballast pump room | 0d | 2026-10-02 | 2026-10-16 | A48650 |  |  | Pipefitting [201 h] |
| A42750 |  | Flush & restore drain riser 1B — Fan room No. 4 | 0d | 2026-10-03 | 2026-10-06 | A42740 |  |  | Pipefitting [126 h] |
| A41680 |  | Flush & restore pipe spool group 5C — Aft JP-5 pump room – port | 0d | 2026-10-03 | 2026-10-13 | A41670 |  |  | Pipefitting [60 h]; Rigging & Weight Handling [16 h] |
| A20120 |  | Flush & restore pipe spool group 9C — Aft mooring gear room | 0d | 2026-10-03 | 2026-10-10 | A20110 SS+2.4d |  |  | Pipefitting [91 h] |
| A47780 |  | Flush & restore pipe spool group 3C — Shaft alley No. 4 | 0d | 2026-10-03 | 2026-10-11 | A47770 FS+0.8d |  |  | Pipefitting [91 h] |
| A42550 |  | Flush & restore pipe spool group 6C — Emergency diesel generator room No. 4 | 0d | 2026-10-03 | 2026-10-08 | A42540 FS+0.8d |  |  | Pipefitting [55 h] |
| A51600 |  | Flush & restore pipe spool group 8B — JP-5 service tank No. 4 | 0d | 2026-10-04 | 2026-10-17 | A51590 FS+0.8d |  |  | Pipefitting [170 h] |
| A41560 |  | Flush & restore drain riser 7A — Aft JP-5 pump room – port | 0d | 2026-10-04 | 2026-10-16 | A41550 |  |  | Pipefitting [353 h] |
| A48100 |  | Hydro test pipe spool group 4A — Pump room No. 1 | 0d | 2026-10-05 | 2026-10-14 | A48090 |  |  | Pipefitting [134 h] |
| A47440 |  | Flush & restore pipe spool group 6C — Shaft alley No. 3 | 0d | 2026-10-07 | 2026-10-10 | A47430 FS+2.4d |  |  | Pipefitting [76 h] |
| A41800 |  | Flush & restore pipe spool group 7B — Fan room No. 3 | 0d | 2026-10-09 | 2026-10-13 | A41790 |  |  | Pipefitting [33 h] |
| A42060 |  | Flush & restore pipe spool group 2B — Electrical distribution room No. 3 | 0d | 2026-10-11 | 2026-10-17 | A42050 FS+0.8d |  |  | Pipefitting [39 h] |
| A51760 |  | Flush & restore valve bank 7B — Ballast pump room No. 2 | 0d | 2026-10-13 | 2026-10-26 | A51750 SS+7.2d |  |  | Pipefitting [215 h] |
| A40660 |  | Flush & restore drain riser 1B — Low-pressure air compressor room | 0d | 2026-10-15 | 2026-10-27 | A40650 |  |  | Pipefitting [254 h] |
| A48110 |  | Flush & restore pipe spool group 4A — Pump room No. 1 | 0d | 2026-10-16 | 2026-10-23 | A48100 |  |  | Pipefitting [145 h] |
| A48670 |  | Flush & restore pipe spool group 3D — Aft bilge & ballast pump room | 0d | 2026-10-16 | 2026-10-29 | A48660 SS+4.8d |  |  | Pipefitting [194 h] |
|  | 508 | **508 Insulation & Lagging** |  | 2026-07-27 | 2026-09-25 |  |  |  |  |
| A43230 |  | Strip lagging — hull board field 8C — Steering gear room – starboard | 0d | 2026-07-27 A | 2026-08-01 A |  | 100% |  | Insulation & Lagging [28 h] |
| A25320 |  | Strip lagging — lagging section 8A — Crew washroom & head No. 3 | 0d | 2026-07-28 A | 2026-08-07 A |  | 100% |  | Insulation & Lagging [299 h] |
| A30960 |  | Strip lagging — hull board field 4C — Division office No. 1 | 0d | 2026-07-29 A | 2026-08-07 A |  | 100% |  | Insulation & Lagging [81 h] |
| A25530 |  | Strip lagging — hull board field 3C — Crew berthing No. 7 | 0d | 2026-07-29 A | 2026-08-06 A |  | 100% |  | Insulation & Lagging [52 h] |
| A47300 |  | Strip lagging — lagging section 3A — Shaft alley No. 3 | 0d | 2026-07-30 A | 2026-08-09 A |  | 100% |  | Insulation & Lagging [69 h] |
| A48580 |  | Strip lagging — hull board field 2C — Aft bilge & ballast pump room | 0d | 2026-08-01 A | 2026-08-05 A |  | 100% |  | Insulation & Lagging [37 h] |
| A43240 |  | Asbestos survey — hull board field 8C — Steering gear room – starboard | 0d | 2026-08-02 A | 2026-08-06 A | A43230 FS+2.4d | 100% |  | Insulation & Lagging [28 h] |
| A25570 |  | Strip lagging — lagging section 4A — Crew berthing No. 8 | 0d | 2026-08-03 A | 2026-08-10 |  | 98% | 0d | Insulation & Lagging [149 h] |
| A25090 |  | Strip lagging — hull board field 1C — Crew berthing No. 6 | 0d | 2026-08-03 A | 2026-08-06 A |  | 100% |  | Insulation & Lagging [20 h] |
| A31790 |  | Strip lagging — lagging section 6C — Crew berthing No. 4 | 0d | 2026-08-03 A | 2026-08-14 |  | 38% | 0d | Insulation & Lagging [234 h] |
| A32000 |  | Strip lagging — hull board field 2B — Crew washroom & head No. 3 | 0d | 2026-08-04 A | 2026-08-13 |  | 36% | 0d | Insulation & Lagging [55 h] |
| A24800 |  | Strip lagging — hull board field 9B — Crew berthing No. 4 | 0d | 2026-08-04 A | 2026-08-17 |  | 41% | 0d | Insulation & Lagging [75 h] |
| A31590 |  | Strip lagging — hull board field 7A — Division office No. 2 | 0d | 2026-08-05 A | 2026-08-14 |  | 53% | 0d | Insulation & Lagging [51 h] |
| A48590 |  | Asbestos survey — hull board field 2C — Aft bilge & ballast pump room | 0d | 2026-08-08 A | 2026-08-21 | A48580 SS+2.4d | 16% | 0d | Insulation & Lagging [152 h] |
| A25540 |  | Asbestos survey — hull board field 3C — Crew berthing No. 7 | 0d | 2026-08-08 A | 2026-08-21 | A25530 | 9% | 0d | Insulation & Lagging [103 h] |
| A43250 |  | Re-insulate hull board field 8C — Steering gear room – starboard | 0d | 2026-08-08 A | 2026-08-17 | A43240 FS+0.8d | 17% | 0d | Insulation & Lagging [220 h] |
| A25100 |  | Asbestos survey — hull board field 1C — Crew berthing No. 6 | 0d | 2026-08-08 A | 2026-08-15 | A25090 | 20% | 0d | Insulation & Lagging [80 h] |
| A40310 |  | Strip lagging — lagging section 9C — Electrical distribution room No. 1 | 0d | 2026-08-08 A | 2026-08-13 |  | 29% | 0d | Insulation & Lagging [155 h] |
| A30970 |  | Asbestos survey — hull board field 4C — Division office No. 1 | 0d | 2026-08-09 A | 2026-08-20 | A30960 | 5% | 0d | Insulation & Lagging [316 h] |
| A42610 |  | Strip lagging — lagging section 2E — Emergency diesel generator room No. 4 | 0d | 2026-08-10 | 2026-08-22 |  |  |  | Insulation & Lagging [214 h] |
| A25330 |  | Asbestos survey — lagging section 8A — Crew washroom & head No. 3 | 0d | 2026-08-10 | 2026-08-16 | A25320 |  |  | Insulation & Lagging [121 h] |
| A47310 |  | Asbestos survey — lagging section 3A — Shaft alley No. 3 | 0d | 2026-08-11 | 2026-08-24 | A47300 |  |  | Insulation & Lagging [217 h] |
| A25580 |  | Asbestos survey — lagging section 4A — Crew berthing No. 8 | 0d | 2026-08-12 | 2026-08-26 | A25570 |  |  | Insulation & Lagging [441 h] |
| A24180 |  | Strip lagging — hull board field 7A — Second deck passage No. 8 | 0d | 2026-08-14 | 2026-08-23 |  |  |  | Insulation & Lagging [233 h] |
| A32040 |  | Strip lagging — hull board field 8A — Third deck trunk No. 6 | 0d | 2026-08-15 | 2026-08-25 |  |  |  | Insulation & Lagging [213 h] |
| A32010 |  | Asbestos survey — hull board field 2B — Crew washroom & head No. 3 | 0d | 2026-08-15 | 2026-08-28 | A32000 |  |  | Insulation & Lagging [116 h] |
| A40320 |  | Asbestos survey — lagging section 9C — Electrical distribution room No. 1 | 0d | 2026-08-15 | 2026-08-26 | A40310 FS+2.4d |  |  | Insulation & Lagging [197 h] |
| A31600 |  | Asbestos survey — hull board field 7A — Division office No. 2 | 0d | 2026-08-15 | 2026-08-18 | A31590 FS+0.8d |  |  | Insulation & Lagging [42 h] |
| A31800 |  | Asbestos survey — lagging section 6C — Crew berthing No. 4 | 0d | 2026-08-16 | 2026-08-28 | A31790 |  |  | Insulation & Lagging [280 h] |
| A43260 |  | Sheathing & finish hull board field 8C — Steering gear room – starboard | 0d | 2026-08-17 | 2026-08-24 | A43250 |  |  | Insulation & Lagging [55 h] |
| A25340 |  | Re-insulate lagging section 8A — Crew washroom & head No. 3 | 0d | 2026-08-17 | 2026-08-23 | A25330 FS+0.8d |  |  | Insulation & Lagging [112 h] |
| A25110 |  | Re-insulate hull board field 1C — Crew berthing No. 6 | 0d | 2026-08-18 | 2026-09-01 | A25100 FS+2.4d |  |  | Insulation & Lagging [170 h] |
| A31610 |  | Re-insulate hull board field 7A — Division office No. 2 | 0d | 2026-08-19 | 2026-08-29 | A31600 FS+2.4d |  |  | Insulation & Lagging [84 h] |
| A24810 |  | Asbestos survey — hull board field 9B — Crew berthing No. 4 | 0d | 2026-08-20 | 2026-08-24 | A24800 |  |  | Insulation & Lagging [84 h] |
| A30980 |  | Re-insulate hull board field 4C — Division office No. 1 | 0d | 2026-08-20 | 2026-08-29 | A30970 |  |  | Insulation & Lagging [235 h] |
| A30550 |  | Strip lagging — lagging section 9B — Crew washroom & head No. 1 | 0d | 2026-08-21 | 2026-08-30 |  |  |  | Insulation & Lagging [61 h] |
| A25550 |  | Re-insulate hull board field 3C — Crew berthing No. 7 | 0d | 2026-08-22 | 2026-08-26 | A25540 |  |  | Insulation & Lagging [53 h] |
| A48600 |  | Re-insulate hull board field 2C — Aft bilge & ballast pump room | 0d | 2026-08-23 | 2026-09-01 | A48590 |  |  | Insulation & Lagging [164 h] |
| A42620 |  | Asbestos survey — lagging section 2E — Emergency diesel generator room No. 4 | 0d | 2026-08-23 | 2026-08-27 | A42610 FS+2.4d |  |  | Insulation & Lagging [102 h] |
| A47320 |  | Re-insulate lagging section 3A — Shaft alley No. 3 | 0d | 2026-08-25 | 2026-08-30 | A47310 |  |  | Insulation & Lagging [85 h] |
| A25350 |  | Sheathing & finish lagging section 8A — Crew washroom & head No. 3 | 0d | 2026-08-25 | 2026-09-06 | A25340 |  |  | Insulation & Lagging [339 h] |
| A32050 |  | Asbestos survey — hull board field 8A — Third deck trunk No. 6 | 0d | 2026-08-25 | 2026-08-30 | A32040 |  |  | Insulation & Lagging [132 h] |
| A24190 |  | Asbestos survey — hull board field 7A — Second deck passage No. 8 | 0d | 2026-08-26 | 2026-09-08 | A24180 FS+2.4d |  |  | Insulation & Lagging [200 h] |
| A24820 |  | Re-insulate hull board field 9B — Crew berthing No. 4 | 0d | 2026-08-26 | 2026-09-08 | A24810 |  |  | Insulation & Lagging [218 h] |
| A25590 |  | Re-insulate lagging section 4A — Crew berthing No. 8 | 0d | 2026-08-27 | 2026-09-05 | A25580 FS+2.4d |  |  | Insulation & Lagging [74 h] |
| A25560 |  | Sheathing & finish hull board field 3C — Crew berthing No. 7 | 0d | 2026-08-27 | 2026-09-06 | A25550 |  |  | Insulation & Lagging [268 h] |
| A42630 |  | Re-insulate lagging section 2E — Emergency diesel generator room No. 4 | 0d | 2026-08-27 | 2026-09-10 | A42620 FS+2.4d |  |  | Insulation & Lagging [432 h] |
| A32020 |  | Re-insulate hull board field 2B — Crew washroom & head No. 3 | 0d | 2026-08-28 | 2026-09-02 | A32010 |  |  | Insulation & Lagging [82 h] |
| A40330 |  | Re-insulate lagging section 9C — Electrical distribution room No. 1 | 0d | 2026-08-28 | 2026-09-10 | A40320 |  |  | Insulation & Lagging [355 h] |

| ID | WBS | Activity | Duration | Start | Finish | Predecessors | Complete | Remaining | Resources |
| --- | --- | --- | --- | --- | --- | --- | --- | --- | --- |
| A31810 |  | Re-insulate lagging section 6C — Crew berthing No. 4 | 0d | 2026-08-29 | 2026-09-11 | A31800 |  |  | Insulation & Lagging [321 h] |
| A30990 |  | Sheathing & finish hull board field 4C — Division office No. 1 | 0d | 2026-08-30 | 2026-09-08 | A30980 |  |  | Insulation & Lagging [84 h] |
| A31620 |  | Sheathing & finish hull board field 7A — Division office No. 2 | 0d | 2026-08-31 | 2026-09-07 | A31610 FS-2.4d |  |  | Insulation & Lagging [130 h] |
| A30560 |  | Asbestos survey — lagging section 9B — Crew washroom & head No. 1 | 0d | 2026-08-31 | 2026-09-05 | A30550 FS+2.4d |  |  | Insulation & Lagging [62 h] |
| A47330 |  | Sheathing & finish lagging section 3A — Shaft alley No. 3 | 0d | 2026-09-01 | 2026-09-09 | A47320 |  |  | Insulation & Lagging [137 h] |
| A48610 |  | Sheathing & finish hull board field 2C — Aft bilge & ballast pump room | 0d | 2026-09-01 | 2026-09-10 | A48600 |  |  | Insulation & Lagging [221 h] |
| A32060 |  | Re-insulate hull board field 8A — Third deck trunk No. 6 | 0d | 2026-09-02 | 2026-09-06 | A32050 |  |  | Insulation & Lagging [46 h] |
| A25120 |  | Sheathing & finish hull board field 1C — Crew berthing No. 6 | 0d | 2026-09-03 | 2026-09-15 | A25110 FS+2.4d |  |  | Insulation & Lagging [65 h] |
| A32030 |  | Sheathing & finish hull board field 2B — Crew washroom & head No. 3 | 0d | 2026-09-04 | 2026-09-14 | A32020 FS+2.4d |  |  | Insulation & Lagging [161 h] |
| A25600 |  | Sheathing & finish lagging section 4A — Crew berthing No. 8 | 0d | 2026-09-06 | 2026-09-08 | A25590 |  |  | Insulation & Lagging [90 h] |
| A30570 |  | Re-insulate lagging section 9B — Crew washroom & head No. 1 | 0d | 2026-09-08 | 2026-09-21 | A30560 |  |  | Insulation & Lagging [358 h] |
| A32070 |  | Sheathing & finish hull board field 8A — Third deck trunk No. 6 | 0d | 2026-09-08 | 2026-09-21 | A32060 FS+2.4d |  |  | Insulation & Lagging [226 h] |
| A24200 |  | Re-insulate hull board field 7A — Second deck passage No. 8 | 0d | 2026-09-09 | 2026-09-17 | A24190 |  |  | Insulation & Lagging [50 h] |
| A24830 |  | Sheathing & finish hull board field 9B — Crew berthing No. 4 | 0d | 2026-09-11 | 2026-09-17 | A24820 FS+0.8d |  |  | Insulation & Lagging [112 h] |
| A40340 |  | Sheathing & finish lagging section 9C — Electrical distribution room No. 1 | 0d | 2026-09-11 | 2026-09-17 | A40330 FS+2.4d |  |  | Insulation & Lagging [183 h] |
| A42640 |  | Sheathing & finish lagging section 2E — Emergency diesel generator room No. 4 | 0d | 2026-09-12 | 2026-09-25 | A42630 FS+2.4d |  |  | Insulation & Lagging [457 h] |
| A31820 |  | Sheathing & finish lagging section 6C — Crew berthing No. 4 | 0d | 2026-09-13 | 2026-09-21 | A31810 FS+2.4d |  |  | Insulation & Lagging [57 h] |
| A24210 |  | Sheathing & finish hull board field 7A — Second deck passage No. 8 | 0d | 2026-09-19 | 2026-09-24 | A24200 |  |  | Insulation & Lagging [44 h] |
| A30580 |  | Sheathing & finish lagging section 9B — Crew washroom & head No. 1 | 0d | 2026-09-23 | 2026-09-25 | A30570 |  |  | Insulation & Lagging [18 h] |
|  | 512 | **512 Ventilation & Uptakes** |  | 2026-07-27 | 2026-10-30 |  |  |  |  |
| A48120 |  | Survey & mark supply trunk 7A — Aft magazine No. 1 – lower level | 0d | 2026-07-27 A | 2026-07-30 A |  | 100% |  | Sheet Metal / HVAC [17 h]; Rigging & Weight Handling [5 h] |
| A30900 |  | Survey & mark vent branch 1B — Division office No. 1 | 0d | 2026-07-27 A | 2026-08-04 A |  | 100% |  | Sheet Metal / HVAC [99 h] |
| A41230 |  | Survey & mark vent branch 6E — Electrical distribution room No. 2 | 0d | 2026-07-27 A | 2026-08-08 A |  | 100% |  | Sheet Metal / HVAC [160 h] |
| A39920 |  | Survey & mark exhaust riser 6B — Fan room No. 1 | 0d | 2026-07-29 A | 2026-08-08 A |  | 100% |  | Sheet Metal / HVAC [79 h] |
| A42070 |  | Survey & mark supply trunk 7C — Electrical distribution room No. 3 | 0d | 2026-07-30 A | 2026-08-03 A |  | 100% |  | Sheet Metal / HVAC [51 h]; Rigging & Weight Handling [13 h] |
| A25660 |  | Survey & mark supply trunk 8A (2-248-2-L) | 0d | 2026-07-30 A | 2026-08-04 A |  | 100% |  | Sheet Metal / HVAC [79 h] |
| A48130 |  | Remove & tag supply trunk 7A — Aft magazine No. 1 – lower level | 0d | 2026-08-01 A | 2026-08-04 A | A48120 | 100% |  | Sheet Metal / HVAC [85 h] |
| A39740 |  | Survey & mark supply trunk 7C — Auxiliary Machinery Room No. 5 | 0d | 2026-08-01 A | 2026-08-05 A |  | 100% |  | Sheet Metal / HVAC [39 h] |
| A25470 |  | Survey & mark vent branch 7B — Crew berthing No. 7 | 0d | 2026-08-03 A | 2026-08-06 A |  | 100% |  | Sheet Metal / HVAC [24 h] |
| A31680 |  | Survey & mark exhaust riser 9A — Crew berthing No. 4 | 0d | 2026-08-03 A | 2026-08-14 |  | 38% | 0d | Sheet Metal / HVAC [88 h] |
| A25410 |  | Survey & mark supply trunk 9A — Crew berthing No. 7 | 0d | 2026-08-03 A | 2026-08-07 A |  | 100% |  | Sheet Metal / HVAC [128 h] |
| A31270 |  | Survey & mark supply trunk 8C — Air conditioning plant No. 4 | 0d | 2026-08-03 A | 2026-08-11 |  | 67% | 0d | Sheet Metal / HVAC [110 h] |
| A31890 |  | Survey & mark exhaust riser 7B — Dry provisions storeroom No. 2 | 0d | 2026-08-03 A | 2026-08-07 A |  | 100% |  | Sheet Metal / HVAC [79 h] |
| A39800 |  | Survey & mark exhaust riser 2D — Auxiliary Machinery Room No. 5 | 0d | 2026-08-03 A | 2026-08-07 A |  | 100% |  | Sheet Metal / HVAC [62 h]; Rigging & Weight Handling [16 h] |
| A42080 |  | Remove & tag supply trunk 7C — Electrical distribution room No. 3 | 0d | 2026-08-03 A | 2026-08-11 | A42070 | 92% | 0d | Sheet Metal / HVAC [116 h]; Rigging & Weight Handling [29 h] |
| A24530 |  | Survey & mark supply trunk 6A — Crew berthing No. 5 | 0d | 2026-08-04 A | 2026-08-13 |  | 62% | 0d | Sheet Metal / HVAC [58 h] |
| A51980 |  | Survey & mark supply trunk 9B — Aft magazine No. 3 | 0d | 2026-08-04 A | 2026-08-07 A |  | 100% |  | Sheet Metal / HVAC [63 h] |
| A24740 |  | Survey & mark supply trunk 8A — Crew berthing No. 4 | 0d | 2026-08-05 A | 2026-08-16 |  | 41% | 0d | Sheet Metal / HVAC [82 h] |
| A46790 |  | Survey & mark supply trunk 7E — Aft fire pump room | 0d | 2026-08-05 A | 2026-08-15 |  | 47% | 0d | Sheet Metal / HVAC [337 h] |
| A25670 |  | Remove & tag supply trunk 8A (2-248-2-L) | 0d | 2026-08-05 A | 2026-08-17 | A25660 FS+2.4d | 40% | 0d | Sheet Metal / HVAC [169 h] |
| A30910 |  | Remove & tag vent branch 1B — Division office No. 1 | 0d | 2026-08-05 A | 2026-08-15 | A30900 FS+0.8d | 45% | 0d | Sheet Metal / HVAC [343 h] |
| A48140 |  | Fab replacement duct — supply trunk 7A — Aft magazine No. 1 – lower level | 0d | 2026-08-06 A | 2026-08-13 | A48130 FS+0.8d | 41% | 0d | Sheet Metal / HVAC [78 h] |
| A31050 |  | Survey & mark exhaust riser 8B — Crew berthing No. 1 | 0d | 2026-08-06 A | 2026-08-15 |  | 40% | 0d | Sheet Metal / HVAC [263 h] |
| A30690 |  | Survey & mark supply trunk 6B — IC Terminal Room | 0d | 2026-08-06 A | 2026-08-10 |  | 76% | 0d | Sheet Metal / HVAC [71 h] |
| A39750 |  | Remove & tag supply trunk 7C — Auxiliary Machinery Room No. 5 | 0d | 2026-08-07 A | 2026-08-13 | A39740 | 35% | 0d | Sheet Metal / HVAC [48 h] |
| A25480 |  | Remove & tag vent branch 7B — Crew berthing No. 7 | 0d | 2026-08-07 A | 2026-08-18 | A25470 | 21% | 0d | Sheet Metal / HVAC [92 h] |
| A39930 |  | Remove & tag exhaust riser 6B — Fan room No. 1 | 0d | 2026-08-09 A | 2026-08-20 | A39920 | 9% | 0d | Sheet Metal / HVAC [195 h] |
| A31900 |  | Remove & tag exhaust riser 7B — Dry provisions storeroom No. 2 | 0d | 2026-08-09 A | 2026-08-21 | A31890 FS+0.8d | 9% | 0d | Sheet Metal / HVAC [69 h] |
| A39810 |  | Remove & tag exhaust riser 2D — Auxiliary Machinery Room No. 5 | 0d | 2026-08-09 A | 2026-08-16 | A39800 | 12% | 0d | Sheet Metal / HVAC [202 h] |
| A51990 |  | Remove & tag supply trunk 9B — Aft magazine No. 3 | 0d | 2026-08-09 A | 2026-08-18 | A51980 | 5% | 0d | Sheet Metal / HVAC [56 h] |
| A25420 |  | Remove & tag supply trunk 9A — Crew berthing No. 7 | 0d | 2026-08-09 A | 2026-08-17 | A25410 SS+7.2d | 4% | 0d | Sheet Metal / HVAC [120 h] |
| A41240 |  | Remove & tag vent branch 6E — Electrical distribution room No. 2 | 0d | 2026-08-10 | 2026-08-20 | A41230 |  |  | Sheet Metal / HVAC [65 h] |
| A32340 |  | Survey & mark exhaust riser 5B — Division office No. 4 | 0d | 2026-08-11 | 2026-08-15 |  |  |  | Sheet Metal / HVAC [70 h] |
| A42090 |  | Fab replacement duct — supply trunk 7C — Electrical distribution room No. 3 | 0d | 2026-08-11 | 2026-08-20 | A42080 |  |  | Sheet Metal / HVAC [239 h] |
| A30700 |  | Remove & tag supply trunk 6B — IC Terminal Room | 0d | 2026-08-12 | 2026-08-24 | A30690 FS+2.4d |  |  | Sheet Metal / HVAC [145 h] |
| A24220 |  | Survey & mark supply trunk 8B — Second deck passage No. 8 | 0d | 2026-08-12 | 2026-08-21 |  |  |  | Sheet Metal / HVAC [109 h] |
| A42970 |  | Survey & mark exhaust riser 7A — Fan room No. 5 | 0d | 2026-08-12 | 2026-08-18 |  |  |  | Sheet Metal / HVAC [38 h] |
| A31280 |  | Remove & tag supply trunk 8C — Air conditioning plant No. 4 | 0d | 2026-08-13 | 2026-08-16 | A31270 |  |  | Sheet Metal / HVAC [21 h] |
| A30490 |  | Survey & mark exhaust riser 1A (3-192-1-L) | 0d | 2026-08-13 | 2026-08-22 |  |  |  | Sheet Metal / HVAC [209 h] |
| A47670 |  | Survey & mark exhaust riser 2B — Shaft alley No. 4 | 0d | 2026-08-14 | 2026-08-23 |  |  |  | Sheet Metal / HVAC [56 h] |
| A47850 |  | Survey & mark exhaust riser 6E — Shaft alley No. 4 | 0d | 2026-08-14 | 2026-08-25 |  |  |  | Sheet Metal / HVAC [305 h] |
| A31690 |  | Remove & tag exhaust riser 9A — Crew berthing No. 4 | 0d | 2026-08-15 | 2026-08-23 | A31680 |  |  | Sheet Metal / HVAC [234 h] |
| A24540 |  | Remove & tag supply trunk 6A — Crew berthing No. 5 | 0d | 2026-08-15 | 2026-08-20 | A24530 FS+2.4d |  |  | Sheet Metal / HVAC [187 h] |
| A39860 |  | Survey & mark exhaust riser 5A — Fan room No. 1 | 0d | 2026-08-15 | 2026-08-19 |  |  |  | Sheet Metal / HVAC [29 h] |
| A30920 |  | Fab replacement duct — vent branch 1B — Division office No. 1 | 0d | 2026-08-15 | 2026-08-19 | A30910 SS+7.2d |  |  | Sheet Metal / HVAC [35 h] |
| A39760 |  | Fab replacement duct — supply trunk 7C — Auxiliary Machinery Room No. 5 | 0d | 2026-08-16 | 2026-08-30 | A39750 |  |  | Sheet Metal / HVAC [429 h] |
| A46800 |  | Remove & tag supply trunk 7E — Aft fire pump room | 0d | 2026-08-16 | 2026-08-19 | A46790 |  |  | Sheet Metal / HVAC [23 h] |
| A48150 |  | Install supply trunk 7A — Aft magazine No. 1 – lower level | 0d | 2026-08-16 | 2026-08-18 | A48140 FS+0.8d |  |  | Sheet Metal / HVAC [42 h] |
| A39980 |  | Survey & mark supply trunk 8C — Fan room No. 1 | 0d | 2026-08-16 | 2026-08-19 |  |  |  | Sheet Metal / HVAC [85 h] |
| A32350 |  | Remove & tag exhaust riser 5B — Division office No. 4 | 0d | 2026-08-16 | 2026-08-22 | A32340 |  |  | Sheet Metal / HVAC [47 h] |

| ID | Activity | Duration | Start | Finish | Predecessors | Resources |
| --- | --- | --- | --- | --- | --- | --- |
| A25680 | Fab replacement duct — supply trunk 8A (2-248-2-L) | 0d | 2026-08-17 | 2026-08-22 | A25670 | Sheet Metal / HVAC [58 h] |
| A24750 | Remove & tag supply trunk 8A — Crew berthing No. 4 | 0d | 2026-08-17 | 2026-08-27 | A24740 | Sheet Metal / HVAC [158 h] |
| A42440 | Survey & mark supply trunk 7B (4-236-2-E) | 0d | 2026-08-17 | 2026-08-30 |  | Sheet Metal / HVAC [333 h] |
| A25430 | Fab replacement duct — supply trunk 9A — Crew berthing No. 7 | 0d | 2026-08-17 | 2026-08-20 | A25420 | Sheet Metal / HVAC [33 h] |
| A42810 | Survey & mark exhaust riser 6D (4-236-3-Q) | 0d | 2026-08-18 | 2026-08-31 |  | Sheet Metal / HVAC [331 h] |
| A31390 | Survey & mark exhaust riser 1E — Air conditioning plant No. 4 | 0d | 2026-08-18 | 2026-08-25 |  | Sheet Metal / HVAC [88 h] |
| A39820 | Fab replacement duct — exhaust riser 2D — Auxiliary Machinery Room No. 5 | 0d | 2026-08-18 | 2026-08-31 | A39810 | Sheet Metal / HVAC [95 h] |
| A31060 | Remove & tag exhaust riser 8B — Crew berthing No. 1 | 0d | 2026-08-18 | 2026-08-24 | A31050 | Sheet Metal / HVAC [96 h] |
| A52000 | Fab replacement duct — supply trunk 9B — Aft magazine No. 3 | 0d | 2026-08-18 | 2026-08-24 | A51990 | Sheet Metal / HVAC [200 h] |
| A32180 | Survey & mark exhaust riser 9B — Division office No. 3 | 0d | 2026-08-18 | 2026-08-29 |  | Sheet Metal / HVAC [73 h] |
| A42980 | Remove & tag exhaust riser 7A — Fan room No. 5 | 0d | 2026-08-18 | 2026-08-23 | A42970 | Sheet Metal / HVAC [54 h] |
| A25490 | Fab replacement duct — vent branch 7B — Crew berthing No. 7 | 0d | 2026-08-18 | 2026-08-28 | A25480 FS+0.8d | Sheet Metal / HVAC [147 h] |
| A31290 | Fab replacement duct — supply trunk 8C — Air conditioning plant No. 4 | 0d | 2026-08-18 | 2026-08-26 | A31280 | Sheet Metal / HVAC [221 h] |
| A48160 | Duct leak test supply trunk 7A — Aft magazine No. 1 – lower level | 0d | 2026-08-18 | 2026-08-29 | A48150 | Sheet Metal / HVAC [269 h] |
| A31330 | Survey & mark vent branch 3D — Air conditioning plant No. 4 | 0d | 2026-08-19 | 2026-08-31 |  | Sheet Metal / HVAC [155 h] |
| A31830 | Survey & mark supply trunk 4A — Dry provisions storeroom No. 2 | 0d | 2026-08-19 | 2026-08-30 |  | Sheet Metal / HVAC [165 h] |
| A32550 | Survey & mark exhaust riser 1B — Crew washroom & head No. 4 | 0d | 2026-08-19 | 2026-08-29 |  | Sheet Metal / HVAC [162 h] |
| A24840 | Survey & mark supply trunk 8C — Crew berthing No. 4 | 0d | 2026-08-19 | 2026-08-25 |  | Sheet Metal / HVAC [91 h] |
| A39870 | Remove & tag exhaust riser 5A — Fan room No. 1 | 0d | 2026-08-20 | 2026-08-24 | A39860 | Sheet Metal / HVAC [35 h] |
| A42100 | Install supply trunk 7C — Electrical distribution room No. 3 | 0d | 2026-08-20 | 2026-08-24 | A42090 | Sheet Metal / HVAC [136 h] |
| A41250 | Fab replacement duct — vent branch 6E — Electrical distribution room No. 2 | 0d | 2026-08-20 | 2026-08-28 | A41240 | Sheet Metal / HVAC [68 h] |
| A24550 | Fab replacement duct — supply trunk 6A — Crew berthing No. 5 | 0d | 2026-08-20 | 2026-08-24 | A24540 FS+2.4d | Sheet Metal / HVAC [24 h] |
| A12360 | Survey & mark supply trunk 1A — 02 level passage – aft | 0d | 2026-08-21 | 2026-08-27 |  | Sheet Metal / HVAC [240 h] |
| A30930 | Install vent branch 1B — Division office No. 1 | 0d | 2026-08-21 | 2026-08-28 | A30920 SS+4.8d | Sheet Metal / HVAC [85 h] |
| A39940 | Fab replacement duct — exhaust riser 6B — Fan room No. 1 | 0d | 2026-08-21 | 2026-08-23 | A39930 | Sheet Metal / HVAC [13 h] |
| A25440 | Install supply trunk 9A — Crew berthing No. 7 | 0d | 2026-08-22 | 2026-08-25 | A25430 | Sheet Metal / HVAC [60 h] |
| A25690 | Install supply trunk 8A (2-248-2-L) | 0d | 2026-08-22 | 2026-09-05 | A25680 | Sheet Metal / HVAC [333 h] |
| A30500 | Remove & tag exhaust riser 1A (3-192-1-L) | 0d | 2026-08-22 | 2026-08-26 | A30490 FS+0.8d | Sheet Metal / HVAC [81 h] |
| A46810 | Fab replacement duct — supply trunk 7E — Aft fire pump room | 0d | 2026-08-22 | 2026-08-26 | A46800 FS+0.8d | Sheet Metal / HVAC [80 h] |
| A39990 | Remove & tag supply trunk 8C — Fan room No. 1 | 0d | 2026-08-22 | 2026-08-28 | A39980 FS+2.4d | Sheet Metal / HVAC [42 h] |
| A31910 | Fab replacement duct — exhaust riser 7B — Dry provisions storeroom No. 2 | 0d | 2026-08-23 | 2026-09-02 | A31900 | Sheet Metal / HVAC [230 h] |
| A47680 | Remove & tag exhaust riser 2B — Shaft alley No. 4 | 0d | 2026-08-23 | 2026-09-01 | A47670 FS+2.4d | Sheet Metal / HVAC [116 h]; Rigging & Weight Handling [30 h] |
| A24230 | Remove & tag supply trunk 8B — Second deck passage No. 8 | 0d | 2026-08-23 | 2026-08-29 | A24220 | Sheet Metal / HVAC [75 h] |
| A32360 | Fab replacement duct — exhaust riser 5B — Division office No. 4 | 0d | 2026-08-23 | 2026-09-04 | A32350 FS+0.8d | Sheet Metal / HVAC [139 h] |
| A24560 | Install supply trunk 6A — Crew berthing No. 5 | 0d | 2026-08-24 | 2026-09-06 | A24550 | Sheet Metal / HVAC [375 h] |
| A39880 | Fab replacement duct — exhaust riser 5A — Fan room No. 1 | 0d | 2026-08-24 | 2026-09-02 | A39870 | Sheet Metal / HVAC [60 h] |
| A31700 | Fab replacement duct — exhaust riser 9A — Crew berthing No. 4 | 0d | 2026-08-25 | 2026-09-03 | A31690 | Sheet Metal / HVAC [60 h] |
| A30710 | Fab replacement duct — supply trunk 6B — IC Terminal Room | 0d | 2026-08-25 | 2026-09-01 | A30700 FS+2.4d | Sheet Metal / HVAC [190 h]; Rigging & Weight Handling [48 h] |
| A52010 | Install supply trunk 9B — Aft magazine No. 3 | 0d | 2026-08-25 | 2026-08-29 | A52000 | Sheet Metal / HVAC [22 h] |
| A42990 | Fab replacement duct — exhaust riser 7A — Fan room No. 5 | 0d | 2026-08-25 | 2026-09-02 | A42980 | Sheet Metal / HVAC [51 h] |
| A31070 | Fab replacement duct — exhaust riser 8B — Crew berthing No. 1 | 0d | 2026-08-26 | 2026-09-05 | A31060 | Sheet Metal / HVAC [80 h] |
| A47860 | Remove & tag exhaust riser 6E — Shaft alley No. 4 | 0d | 2026-08-26 | 2026-09-03 | A47850 | Sheet Metal / HVAC [295 h] |
| A42110 | Duct leak test supply trunk 7C — Electrical distribution room No. 3 | 0d | 2026-08-26 | 2026-09-05 | A42100 | Sheet Metal / HVAC [200 h] |
| A39950 | Install exhaust riser 6B — Fan room No. 1 | 0d | 2026-08-26 | 2026-09-05 | A39940 | Sheet Metal / HVAC [112 h]; Rigging & Weight Handling [29 h] |
| A30510 | Fab replacement duct — exhaust riser 1A (3-192-1-L) | 0d | 2026-08-26 | 2026-09-08 | A30500 FS+0.8d | Sheet Metal / HVAC [96 h] |
| A31400 | Remove & tag exhaust riser 1E — Air conditioning plant No. 4 | 0d | 2026-08-27 | 2026-09-08 | A31390 FS+0.8d | Sheet Metal / HVAC [172 h] |
| A31300 | Install supply trunk 8C — Air conditioning plant No. 4 | 0d | 2026-08-28 | 2026-09-03 | A31290 SS+2.4d | Sheet Metal / HVAC [177 h] |
| A24850 | Remove & tag supply trunk 8C — Crew berthing No. 4 | 0d | 2026-08-28 | 2026-09-04 | A24840 FS+0.8d | Sheet Metal / HVAC [122 h]; Rigging & Weight Handling [31 h] |
| A24760 | Fab replacement duct — supply trunk 8A — Crew berthing No. 4 | 0d | 2026-08-28 | 2026-09-07 | A24750 | Sheet Metal / HVAC [189 h] |
| A25450 | Duct leak test supply trunk 9A — Crew berthing No. 7 | 0d | 2026-08-28 | 2026-09-07 | A25440 | Sheet Metal / HVAC [184 h] |
| A46820 | Install supply trunk 7E — Aft fire pump room | 0d | 2026-08-29 | 2026-09-03 | A46810 | Sheet Metal / HVAC [158 h] |
| A40000 | Fab replacement duct — supply trunk 8C — Fan room No. 1 | 0d | 2026-08-29 | 2026-09-02 | A39990 FS+0.8d | Sheet Metal / HVAC [62 h] |
| A12370 | Remove & tag supply trunk 1A — 02 level passage – aft | 0d | 2026-08-29 | 2026-09-05 | A12360 | Sheet Metal / HVAC [90 h] |
| A32560 | Remove & tag exhaust riser 1B — Crew washroom & head No. 4 | 0d | 2026-08-30 | 2026-09-09 | A32550 FS+2.4d | Sheet Metal / HVAC [161 h] |
| A41260 | Install vent branch 6E — Electrical distribution room No. 2 | 0d | 2026-08-30 | 2026-09-03 | A41250 | Sheet Metal / HVAC [50 h] |
| A25500 | Install vent branch 7B — Crew berthing No. 7 | 0d | 2026-08-30 | 2026-09-11 | A25490 | Sheet Metal / HVAC [67 h] |
| A30940 | Duct leak test vent branch 1B — Division office No. 1 | 0d | 2026-08-30 | 2026-09-06 | A30930 | Sheet Metal / HVAC [87 h] |
| A31840 | Remove & tag supply trunk 4A — Dry provisions storeroom No. 2 | 0d | 2026-08-30 | 2026-09-11 | A31830 FS+0.8d | Sheet Metal / HVAC [68 h] |
| A24240 | Fab replacement duct — supply trunk 8B — Second deck passage No. 8 | 0d | 2026-08-31 | 2026-09-02 | A24230 | Sheet Metal / HVAC [33 h] |
| A52020 | Duct leak test supply trunk 9B — Aft magazine No. 3 | 0d | 2026-08-31 | 2026-09-08 | A52010 FS+2.4d | Sheet Metal / HVAC [139 h] |
| A48170 | Close-out & QA supply trunk 7A — Aft magazine No. 1 – lower level | 0d | 2026-08-31 | 2026-09-11 | A48160 FS+0.8d | Sheet Metal / HVAC [395 h] |
| A32190 | Remove & tag exhaust riser 9B — Division office No. 3 | 0d | 2026-09-01 | 2026-09-09 | A32180 FS+2.4d | Sheet Metal / HVAC [64 h] |
| A39830 | Install exhaust riser 2D — Auxiliary Machinery Room No. 5 | 0d | 2026-09-01 | 2026-09-12 | A39820 FS+0.8d | Sheet Metal / HVAC [161 h] |
| A42450 | Remove & tag supply trunk 7B (4-236-2-E) | 0d | 2026-09-01 | 2026-09-10 | A42440 | Sheet Metal / HVAC [220 h] |
| A42820 | Remove & tag exhaust riser 6D (4-236-3-Q) | 0d | 2026-09-01 | 2026-09-10 | A42810 | Sheet Metal / HVAC [106 h] |
| A30720 | Install supply trunk 6B — IC Terminal Room | 0d | 2026-09-01 | 2026-09-10 | A30710 FS+2.4d | Sheet Metal / HVAC [251 h] |
| A39770 | Install supply trunk 7C — Auxiliary Machinery Room No. 5 | 0d | 2026-09-02 | 2026-09-05 | A39760 FS+0.8d | Sheet Metal / HVAC [85 h] |
| A31340 | Remove & tag vent branch 3D — Air conditioning plant No. 4 | 0d | 2026-09-02 | 2026-09-09 | A31330 FS+2.4d | Sheet Metal / HVAC [118 h] |
| A24250 | Install supply trunk 8B — Second deck passage No. 8 | 0d | 2026-09-02 | 2026-09-08 | A24240 FS+0.8d | Sheet Metal / HVAC [52 h]; Rigging & Weight Handling [14 h] |
| A47690 | Fab replacement duct — exhaust riser 2B — Shaft alley No. 4 | 0d | 2026-09-04 | 2026-09-12 | A47680 | Sheet Metal / HVAC [51 h] |

| ID | Activity | Duration | Start | Finish | Predecessors | Resources |
| --- | --- | --- | --- | --- | --- | --- |
| A31710 | Install exhaust riser 9A — Crew berthing No. 4 | 0d | 2026-09-04 | 2026-09-09 | A31700 | Sheet Metal / HVAC [59 h] |
| A31920 | Install exhaust riser 7B — Dry provisions storeroom No. 2 | 0d | 2026-09-04 | 2026-09-07 | A31910 | Sheet Metal / HVAC [19 h] |
| A46830 | Duct leak test supply trunk 7E — Aft fire pump room | 0d | 2026-09-04 | 2026-09-17 | A46820 | Sheet Metal / HVAC [276 h] |
| A31310 | Duct leak test supply trunk 8C — Air conditioning plant No. 4 | 0d | 2026-09-05 | 2026-09-16 | A31300 | Sheet Metal / HVAC [190 h] |
| A43000 | Install exhaust riser 7A — Fan room No. 5 | 0d | 2026-09-05 | 2026-09-15 | A42990 | Sheet Metal / HVAC [71 h] |
| A40010 | Install supply trunk 8C — Fan room No. 1 | 0d | 2026-09-05 | 2026-09-07 | A40000 FS+2.4d | Sheet Metal / HVAC [15 h] |
| A41270 | Duct leak test vent branch 6E — Electrical distribution room No. 2 | 0d | 2026-09-05 | 2026-09-12 | A41260 | Sheet Metal / HVAC [64 h] |
| A47870 | Fab replacement duct — exhaust riser 6E — Shaft alley No. 4 | 0d | 2026-09-05 | 2026-09-11 | A47860 | Sheet Metal / HVAC [103 h] |
| A24860 | Fab replacement duct — supply trunk 8C — Crew berthing No. 4 | 0d | 2026-09-05 | 2026-09-17 | A24850 FS+0.8d | Sheet Metal / HVAC [397 h] |
| A39890 | Install exhaust riser 5A — Fan room No. 1 | 0d | 2026-09-05 | 2026-09-08 | A39880 | Sheet Metal / HVAC [26 h] |
| A31080 | Install exhaust riser 8B — Crew berthing No. 1 | 0d | 2026-09-05 | 2026-09-09 | A31070 | Sheet Metal / HVAC [67 h] |
| A25700 | Duct leak test supply trunk 8A (2-248-2-L) | 0d | 2026-09-05 | 2026-09-15 | A25690 | Sheet Metal / HVAC [164 h] |
| A12380 | Fab replacement duct — supply trunk 1A — 02 level passage – aft | 0d | 2026-09-05 | 2026-09-13 | A12370 SS+2.4d | Sheet Metal / HVAC [101 h] |
| A39780 | Duct leak test supply trunk 7C — Auxiliary Machinery Room No. 5 | 0d | 2026-09-05 | 2026-09-10 | A39770 FS+2.4d | Sheet Metal / HVAC [67 h] |
| A32370 | Install exhaust riser 5B — Division office No. 4 | 0d | 2026-09-06 | 2026-09-20 | A32360 FS+0.8d | Sheet Metal / HVAC [165 h] |
| A39960 | Duct leak test exhaust riser 6B — Fan room No. 1 | 0d | 2026-09-07 | 2026-09-14 | A39950 | Sheet Metal / HVAC [51 h] |
| A24770 | Install supply trunk 8A — Crew berthing No. 4 | 0d | 2026-09-08 | 2026-09-18 | A24760 FS+2.4d | Sheet Metal / HVAC [256 h] |
| A42120 | Close-out & QA supply trunk 7C — Electrical distribution room No. 3 | 0d | 2026-09-08 | 2026-09-19 | A42110 FS+0.8d | Sheet Metal / HVAC [312 h] |
| A30950 | Close-out & QA vent branch 1B — Division office No. 1 | 0d | 2026-09-08 | 2026-09-15 | A30940 | Sheet Metal / HVAC [82 h] |
| A25460 | Close-out & QA supply trunk 9A — Crew berthing No. 7 | 0d | 2026-09-08 | 2026-09-18 | A25450 | Sheet Metal / HVAC [180 h] |
| A52030 | Close-out & QA supply trunk 9B — Aft magazine No. 3 | 0d | 2026-09-08 | 2026-09-16 | A52020 | Sheet Metal / HVAC [204 h] |
| A40020 | Duct leak test supply trunk 8C — Fan room No. 1 | 0d | 2026-09-09 | 2026-09-17 | A40010 | Sheet Metal / HVAC [165 h] |
| A24260 | Duct leak test supply trunk 8B — Second deck passage No. 8 | 0d | 2026-09-09 | 2026-09-12 | A24250 FS+2.4d | Sheet Metal / HVAC [51 h] |
| A31090 | Duct leak test exhaust riser 8B — Crew berthing No. 1 | 0d | 2026-09-09 | 2026-09-12 | A31080 FS+2.4d | Sheet Metal / HVAC [63 h]; Rigging & Weight Handling [16 h] |
| A24570 | Duct leak test supply trunk 6A — Crew berthing No. 5 | 0d | 2026-09-09 | 2026-09-12 | A24560 FS+0.8d | Sheet Metal / HVAC [49 h] |
| A31410 | Fab replacement duct — exhaust riser 1E — Air conditioning plant No. 4 | 0d | 2026-09-09 | 2026-09-16 | A31400 FS-2.4d | Sheet Metal / HVAC [41 h] |
| A31930 | Duct leak test exhaust riser 7B — Dry provisions storeroom No. 2 | 0d | 2026-09-09 | 2026-09-16 | A31920 | Sheet Metal / HVAC [55 h] |
| A31720 | Duct leak test exhaust riser 9A — Crew berthing No. 4 | 0d | 2026-09-09 | 2026-09-18 | A31710 | Sheet Metal / HVAC [201 h] |
| A31350 | Fab replacement duct — vent branch 3D — Air conditioning plant No. 4 | 0d | 2026-09-10 | 2026-09-19 | A31340 FS+2.4d | Sheet Metal / HVAC [143 h] |
| A32570 | Fab replacement duct — exhaust riser 1B — Crew washroom & head No. 4 | 0d | 2026-09-10 | 2026-09-21 | A32560 FS+0.8d | Sheet Metal / HVAC [177 h] |
| A39790 | Close-out & QA supply trunk 7C — Auxiliary Machinery Room No. 5 | 0d | 2026-09-10 | 2026-09-16 | A39780 SS+2.4d | Sheet Metal / HVAC [56 h]; Rigging & Weight Handling [15 h] |
| A39900 | Duct leak test exhaust riser 5A — Fan room No. 1 | 0d | 2026-09-11 | 2026-09-13 | A39890 | Sheet Metal / HVAC [54 h] |
| A32200 | Fab replacement duct — exhaust riser 9B — Division office No. 3 | 0d | 2026-09-11 | 2026-09-14 | A32190 | Sheet Metal / HVAC [25 h] |
| A30520 | Install exhaust riser 1A (3-192-1-L) | 0d | 2026-09-11 | 2026-09-19 | A30510 SS+7.2d | Sheet Metal / HVAC [67 h] |
| A42830 | Fab replacement duct — exhaust riser 6D (4-236-3-Q) | 0d | 2026-09-12 | 2026-09-17 | A42820 | Sheet Metal / HVAC [104 h] |
| A42460 | Fab replacement duct — supply trunk 7B (4-236-2-E) | 0d | 2026-09-12 | 2026-09-16 | A42450 | Sheet Metal / HVAC [130 h] |
| A47700 | Install exhaust riser 2B — Shaft alley No. 4 | 0d | 2026-09-12 | 2026-09-16 | A47690 FS+0.8d | Sheet Metal / HVAC [50 h] |
| A47880 | Install exhaust riser 6E — Shaft alley No. 4 | 0d | 2026-09-12 | 2026-09-22 | A47870 FS+0.8d | Sheet Metal / HVAC [184 h] |
| A31850 | Fab replacement duct — supply trunk 4A — Dry provisions storeroom No. 2 | 0d | 2026-09-12 | 2026-09-23 | A31840 FS+0.8d | Sheet Metal / HVAC [203 h] |
| A30730 | Duct leak test supply trunk 6B — IC Terminal Room | 0d | 2026-09-13 | 2026-09-21 | A30720 SS+7.2d | Sheet Metal / HVAC [68 h] |
| A31100 | Close-out & QA exhaust riser 8B — Crew berthing No. 1 | 0d | 2026-09-13 | 2026-09-17 | A31090 FS+2.4d | Sheet Metal / HVAC [74 h] |
| A24270 | Close-out & QA supply trunk 8B — Second deck passage No. 8 | 0d | 2026-09-13 | 2026-09-22 | A24260 FS+2.4d | Sheet Metal / HVAC [116 h] |
| A25510 | Duct leak test vent branch 7B — Crew berthing No. 7 | 0d | 2026-09-13 | 2026-09-23 | A25500 FS+2.4d | Sheet Metal / HVAC [156 h] |
| A24580 | Close-out & QA supply trunk 6A — Crew berthing No. 5 | 0d | 2026-09-14 | 2026-09-19 | A24570 FS+2.4d | Sheet Metal / HVAC [76 h] |
| A41280 | Close-out & QA vent branch 6E — Electrical distribution room No. 2 | 0d | 2026-09-14 | 2026-09-16 | A41270 | Sheet Metal / HVAC [18 h] |
| A12390 | Install supply trunk 1A — 02 level passage – aft | 0d | 2026-09-14 | 2026-09-19 | A12380 | Sheet Metal / HVAC [20 h]; Rigging & Weight Handling [6 h] |
| A39910 | Close-out & QA exhaust riser 5A — Fan room No. 1 | 0d | 2026-09-14 | 2026-09-23 | A39900 | Sheet Metal / HVAC [208 h] |
| A39840 | Duct leak test exhaust riser 2D — Auxiliary Machinery Room No. 5 | 0d | 2026-09-15 | 2026-09-21 | A39830 FS+0.8d | Sheet Metal / HVAC [42 h] |
| A39970 | Close-out & QA exhaust riser 6B — Fan room No. 1 | 0d | 2026-09-15 | 2026-09-27 | A39960 FS+0.8d | Sheet Metal / HVAC [336 h] |
| A43010 | Duct leak test exhaust riser 7A — Fan room No. 5 | 0d | 2026-09-16 | 2026-09-25 | A43000 | Sheet Metal / HVAC [54 h] |
| A32210 | Install exhaust riser 9B — Division office No. 3 | 0d | 2026-09-16 | 2026-09-30 | A32200 | Sheet Metal / HVAC [428 h] |
| A31940 | Close-out & QA exhaust riser 7B — Dry provisions storeroom No. 2 | 0d | 2026-09-17 | 2026-09-30 | A31930 | Sheet Metal / HVAC [77 h] |
| A25710 | Close-out & QA supply trunk 8A (2-248-2-L) | 0d | 2026-09-18 | 2026-09-30 | A25700 | Sheet Metal / HVAC [172 h] |
| A31420 | Install exhaust riser 1E — Air conditioning plant No. 4 | 0d | 2026-09-18 | 2026-09-24 | A31410 FS+0.8d | Sheet Metal / HVAC [38 h] |
| A46840 | Close-out & QA supply trunk 7E — Aft fire pump room | 0d | 2026-09-18 | 2026-09-26 | A46830 FS+2.4d | Sheet Metal / HVAC [60 h] |
| A42470 | Install supply trunk 7B (4-236-2-E) | 0d | 2026-09-18 | 2026-09-28 | A42460 FS-2.4d | Sheet Metal / HVAC [148 h]; Rigging & Weight Handling [37 h] |
| A31320 | Close-out & QA supply trunk 8C — Air conditioning plant No. 4 | 0d | 2026-09-18 | 2026-09-22 | A31310 | Sheet Metal / HVAC [56 h] |
| A42840 | Install exhaust riser 6D (4-236-3-Q) | 0d | 2026-09-18 | 2026-10-01 | A42830 FS+0.8d | Sheet Metal / HVAC [174 h] |
| A24870 | Install supply trunk 8C — Crew berthing No. 4 | 0d | 2026-09-18 | 2026-09-30 | A24860 FS+2.4d | Sheet Metal / HVAC [136 h] |
| A40030 | Close-out & QA supply trunk 8C — Fan room No. 1 | 0d | 2026-09-19 | 2026-09-26 | A40020 | Sheet Metal / HVAC [45 h] |
| A47710 | Duct leak test exhaust riser 2B — Shaft alley No. 4 | 0d | 2026-09-19 | 2026-09-23 | A47700 | Sheet Metal / HVAC [46 h] |
| A30530 | Duct leak test exhaust riser 1A (3-192-1-L) | 0d | 2026-09-19 | 2026-10-02 | A30520 FS+0.8d | Sheet Metal / HVAC [341 h] |
| A31360 | Install vent branch 3D — Air conditioning plant No. 4 | 0d | 2026-09-21 | 2026-09-23 | A31350 | Sheet Metal / HVAC [56 h]; Rigging & Weight Handling [15 h] |
| A32380 | Duct leak test exhaust riser 5B — Division office No. 4 | 0d | 2026-09-21 | 2026-09-29 | A32370 FS+0.8d | Sheet Metal / HVAC [55 h] |
| A24780 | Duct leak test supply trunk 8A — Crew berthing No. 4 | 0d | 2026-09-21 | 2026-09-29 | A24770 FS-2.4d | Sheet Metal / HVAC [211 h] |
| A31730 | Close-out & QA exhaust riser 9A — Crew berthing No. 4 | 0d | 2026-09-21 | 2026-10-04 | A31720 | Sheet Metal / HVAC [222 h] |
| A32580 | Install exhaust riser 1B — Crew washroom & head No. 4 | 0d | 2026-09-21 | 2026-10-03 | A32570 SS+2.4d | Sheet Metal / HVAC [193 h] |
| A12400 | Duct leak test supply trunk 1A — 02 level passage – aft | 0d | 2026-09-21 | 2026-10-04 | A12390 | Sheet Metal / HVAC [189 h] |
| A47890 | Duct leak test exhaust riser 6E — Shaft alley No. 4 | 0d | 2026-09-23 | 2026-09-27 | A47880 FS+2.4d | Sheet Metal / HVAC [23 h]; Rigging & Weight Handling [6 h] |
| A39850 | Close-out & QA exhaust riser 2D — Auxiliary Machinery Room No. 5 | 0d | 2026-09-23 | 2026-10-05 | A39840 SS+7.2d | Sheet Metal / HVAC [203 h] |

| ID | Activity | Duration | Start | Finish | Predecessors | Resources |
| --- | --- | --- | --- | --- | --- | --- |
| A30740 | Close-out & QA supply trunk 6B — IC Terminal Room | 0d | 2026-09-23 | 2026-10-05 | A30730 | Sheet Metal / HVAC [94 h] |
| A47720 | Close-out & QA exhaust riser 2B — Shaft alley No. 4 | 0d | 2026-09-23 | 2026-10-04 | A47710 SS+2.4d | Sheet Metal / HVAC [281 h] |
| A31860 | Install supply trunk 4A — Dry provisions storeroom No. 2 | 0d | 2026-09-24 | 2026-09-27 | A31850 | Sheet Metal / HVAC [44 h] |
| A31370 | Duct leak test vent branch 3D — Air conditioning plant No. 4 | 0d | 2026-09-25 | 2026-10-05 | A31360 FS+0.8d | Sheet Metal / HVAC [379 h] |
| A25520 | Close-out & QA vent branch 7B — Crew berthing No. 7 | 0d | 2026-09-26 | 2026-10-08 | A25510 | Sheet Metal / HVAC [104 h] |
| A31430 | Duct leak test exhaust riser 1E — Air conditioning plant No. 4 | 0d | 2026-09-26 | 2026-10-02 | A31420 FS-1.6d | Sheet Metal / HVAC [38 h] |
| A31870 | Duct leak test supply trunk 4A — Dry provisions storeroom No. 2 | 0d | 2026-09-28 | 2026-09-30 | A31860 | Sheet Metal / HVAC [22 h] |
| A43020 | Close-out & QA exhaust riser 7A — Fan room No. 5 | 0d | 2026-09-28 | 2026-10-12 | A43010 FS-2.4d | Sheet Metal / HVAC [343 h] |
| A47900 | Close-out & QA exhaust riser 6E — Shaft alley No. 4 | 0d | 2026-09-28 | 2026-10-01 | A47890 FS+2.4d | Sheet Metal / HVAC [38 h] |
| A42480 | Duct leak test supply trunk 7B (4-236-2-E) | 0d | 2026-09-29 | 2026-10-05 | A42470 FS+2.4d | Sheet Metal / HVAC [99 h] |
| A24790 | Close-out & QA supply trunk 8A — Crew berthing No. 4 | 0d | 2026-09-30 | 2026-10-05 | A24780 | Sheet Metal / HVAC [51 h] |
| A32390 | Close-out & QA exhaust riser 5B — Division office No. 4 | 0d | 2026-10-01 | 2026-10-04 | A32380 FS+2.4d | Sheet Metal / HVAC [124 h] |
| A24880 | Duct leak test supply trunk 8C — Crew berthing No. 4 | 0d | 2026-10-01 | 2026-10-11 | A24870 FS+0.8d | Sheet Metal / HVAC [71 h] |
| A31880 | Close-out & QA supply trunk 4A — Dry provisions storeroom No. 2 | 0d | 2026-10-01 | 2026-10-12 | A31870 FS+0.8d | Sheet Metal / HVAC [238 h] |
| A32220 | Duct leak test exhaust riser 9B — Division office No. 3 | 0d | 2026-10-01 | 2026-10-09 | A32210 FS+0.8d | Sheet Metal / HVAC [110 h] |
| A30540 | Close-out & QA exhaust riser 1A (3-192-1-L) | 0d | 2026-10-02 | 2026-10-07 | A30530 FS+2.4d | Sheet Metal / HVAC [130 h]; Rigging & Weight Handling [33 h] |
| A42850 | Duct leak test exhaust riser 6D (4-236-3-Q) | 0d | 2026-10-03 | 2026-10-06 | A42840 FS-4.8d | Sheet Metal / HVAC [78 h] |
| A31440 | Close-out & QA exhaust riser 1E — Air conditioning plant No. 4 | 0d | 2026-10-04 | 2026-10-14 | A31430 | Sheet Metal / HVAC [349 h] |
| A32590 | Duct leak test exhaust riser 1B — Crew washroom & head No. 4 | 0d | 2026-10-05 | 2026-10-18 | A32580 | Sheet Metal / HVAC [430 h] |
| A31380 | Close-out & QA vent branch 3D — Air conditioning plant No. 4 | 0d | 2026-10-05 | 2026-10-08 | A31370 FS+2.4d | Sheet Metal / HVAC [19 h] |
| A42490 | Close-out & QA supply trunk 7B (4-236-2-E) | 0d | 2026-10-06 | 2026-10-17 | A42480 FS+2.4d | Sheet Metal / HVAC [290 h] |
| A42860 | Close-out & QA exhaust riser 6D (4-236-3-Q) | 0d | 2026-10-06 | 2026-10-16 | A42850 | Sheet Metal / HVAC [240 h] |
| A12410 | Close-out & QA supply trunk 1A — 02 level passage – aft | 0d | 2026-10-07 | 2026-10-20 | A12400 FS+0.8d | Sheet Metal / HVAC [90 h]; Rigging & Weight Handling [23 h] |
| A32230 | Close-out & QA exhaust riser 9B — Division office No. 3 | 0d | 2026-10-11 | 2026-10-20 | A32220 SS+7.2d | Sheet Metal / HVAC [67 h] |
| A24890 | Close-out & QA supply trunk 8C — Crew berthing No. 4 | 0d | 2026-10-13 | 2026-10-24 | A24880 | Sheet Metal / HVAC [99 h] |
| A32600 | Close-out & QA exhaust riser 1B — Crew washroom & head No. 4 | 0d | 2026-10-21 | 2026-10-30 | A32590 FS+0.8d | Sheet Metal / HVAC [236 h] |

| ID | WBS | Activity | Duration | Start | Finish | Predecessors | Complete | Remaining | Resources |
| --- | --- | --- | --- | --- | --- | --- | --- | --- | --- |
|  | 560 | **560 Aux Machinery** |  | 2026-07-27 | 2026-10-16 |  |  |  |  |
| A42390 |  | Open & inspect motor group 7A — Emergency diesel generator room No. 4 | 0d | 2026-07-27 A | 2026-08-05 A |  | 100% |  | Mechanical [210 h] |
| A42650 |  | Open & inspect compressor 5A — Fan room No. 4 | 0d | 2026-07-27 A | 2026-08-07 A |  | 100% |  | Mechanical [73 h] |
| A07230 |  | Open & inspect compressor 4C — Barricade stanchion machinery room | 0d | 2026-07-28 A | 2026-08-01 A |  | 100% |  | Mechanical [109 h] |
| A40100 |  | Open & inspect motor group 9E — Fan room No. 1 | 0d | 2026-07-31 A | 2026-08-05 A |  | 100% |  | Mechanical [35 h] |
| A40560 |  | Open & inspect pump set 4A — Low-pressure air compressor room | 0d | 2026-08-01 A | 2026-08-09 A |  | 100% |  | Mechanical [70 h] |
| A43480 |  | Open & inspect compressor 1C — Steering gear room – port | 0d | 2026-08-01 A | 2026-08-04 A |  | 100% |  | Mechanical [34 h] |
| A07240 |  | Remove compressor 4C for shop — Barricade stanchion machinery room | 0d | 2026-08-01 A | 2026-08-07 A | A07230 | 100% |  | Mechanical [155 h] |
| A42290 |  | Open & inspect motor group 3B — Emergency diesel generator room No. 3 | 0d | 2026-08-01 A | 2026-08-04 A |  | 100% |  | Mechanical [64 h] |
| A42920 |  | Open & inspect compressor 8F — Fan room No. 4 | 0d | 2026-08-03 A | 2026-08-07 A |  | 100% |  | Mechanical [23 h] |
| A40260 |  | Open & inspect pump set 7B — Electrical distribution room No. 1 | 0d | 2026-08-03 A | 2026-08-07 A |  | 100% |  | Mechanical [135 h] |
| A48480 |  | Open & inspect compressor 3A — Aft bilge & ballast pump room | 0d | 2026-08-04 A | 2026-08-15 |  | 48% | 0d | Mechanical [67 h] |
| A24330 |  | Open & inspect compressor 4B — Machine shop | 0d | 2026-08-04 A | 2026-08-17 |  | 46% | 0d | Mechanical [178 h] |
| A43490 |  | Remove compressor 1C for shop — Steering gear room – port | 0d | 2026-08-04 A | 2026-08-08 A | A43480 | 100% |  | Mechanical [24 h] |
| A42870 |  | Open & inspect motor group 9E — Fan room No. 4 | 0d | 2026-08-04 A | 2026-08-16 |  | 26% | 0d | Mechanical [395 h] |
| A12310 |  | Open & inspect pump set 4B — JP-5 filling station – aft port | 0d | 2026-08-05 A | 2026-08-19 |  | 31% | 0d | Mechanical [223 h] |
| A42400 |  | Remove motor group 7A for shop — Emergency diesel generator room No. 4 | 0d | 2026-08-06 A | 2026-08-20 | A42390 | 18% | 0d | Mechanical [106 h] |
| A42300 |  | Remove motor group 3B for shop — Emergency diesel generator room No. 3 | 0d | 2026-08-06 A | 2026-08-19 | A42290 | 27% | 0d | Mechanical [196 h] |
| A40110 |  | Remove motor group 9E for shop — Fan room No. 1 | 0d | 2026-08-07 A | 2026-08-16 | A40100 FS+0.8d | 29% | 0d | Mechanical [146 h] |
| A41960 |  | Open & inspect compressor 2A — Electrical distribution room No. 3 | 0d | 2026-08-07 A | 2026-08-10 A |  | 100% |  | Mechanical [13 h] |
| A43030 |  | Open & inspect compressor 6B — Fan room No. 5 | 0d | 2026-08-08 A | 2026-08-10 |  | 79% | 0d | Mechanical [38 h] |
| A14800 |  | Open & inspect pump set 6A — Aft mooring station – starboard | 0d | 2026-08-08 A | 2026-08-11 |  | 62% | 0d | Mechanical [72 h] |
| A42930 |  | Remove compressor 8F for shop — Fan room No. 4 | 0d | 2026-08-08 A | 2026-08-11 | A42920 | 52% | 0d | Mechanical [75 h] |
| A07180 |  | Open & inspect motor group 9B (03-244-0-Q) | 0d | 2026-08-09 A | 2026-08-20 |  | 9% | 0d | Mechanical [127 h] |
| A47150 |  | Open & inspect compressor 3D — Shaft alley No. 2 | 0d | 2026-08-09 A | 2026-08-17 |  | 5% | 0d | Mechanical [90 h]; Rigging & Weight Handling [23 h] |
| A14950 |  | Open & inspect compressor 2B — Aft mooring station – port | 0d | 2026-08-10 A | 2026-08-18 |  | 2% | 0d | Mechanical [204 h]; Rigging & Weight Handling [52 h] |
| A42660 |  | Remove compressor 5A for shop — Fan room No. 4 | 0d | 2026-08-10 A | 2026-08-12 | A42650 | 5% | 0d | Mechanical [63 h] |
| A40270 |  | Remove pump set 7B for shop — Electrical distribution room No. 1 | 0d | 2026-08-10 | 2026-08-19 | A40260 FS+2.4d |  |  | Mechanical [128 h] |
| A07250 |  | Shop overhaul — compressor 4C — Barricade stanchion machinery room | 0d | 2026-08-10 | 2026-08-17 | A07240 |  |  | Mechanical [128 h] |
| A51030 |  | Open & inspect compressor 3A — Aft JP-5 transfer pump room | 0d | 2026-08-10 | 2026-08-16 |  |  |  | Mechanical [61 h] |
| A43040 |  | Remove compressor 6B for shop — Fan room No. 5 | 0d | 2026-08-11 | 2026-08-24 | A43030 FS+2.4d |  |  | Mechanical [94 h] |
| A43500 |  | Shop overhaul — compressor 1C — Steering gear room – port | 0d | 2026-08-11 | 2026-08-15 | A43490 FS+0.8d |  |  | Mechanical [53 h] |
| A40570 |  | Remove pump set 4A for shop — Low-pressure air compressor room | 0d | 2026-08-12 | 2026-08-20 | A40560 SS+2.4d |  |  | Mechanical [78 h] |
| A41970 |  | Remove compressor 2A for shop — Electrical distribution room No. 3 | 0d | 2026-08-12 | 2026-08-19 | A41960 FS+2.4d |  |  | Mechanical [42 h] |
| A42940 |  | Shop overhaul — compressor 8F — Fan room No. 4 | 0d | 2026-08-12 | 2026-08-21 | A42930 |  |  | Mechanical [75 h] |
| A48740 |  | Open & inspect compressor 1F — Aft bilge & ballast pump room | 0d | 2026-08-12 | 2026-08-16 |  |  |  | Mechanical [46 h] |
| A14810 |  | Remove pump set 6A for shop — Aft mooring station – starboard | 0d | 2026-08-13 | 2026-08-23 | A14800 FS+0.8d |  |  | Mechanical [219 h] |
| A43270 |  | Open & inspect pump set 7D — Steering gear room – starboard | 0d | 2026-08-13 | 2026-08-24 |  |  |  | Mechanical [70 h] |
| A42670 |  | Shop overhaul — compressor 5A — Fan room No. 4 | 0d | 2026-08-14 | 2026-08-22 | A42660 |  |  | Mechanical [67 h] |
| A40670 |  | Open & inspect pump set 4C — Low-pressure air compressor room | 0d | 2026-08-14 | 2026-08-24 |  |  |  | Mechanical [269 h] |
| A41860 |  | Open & inspect compressor 8D — Fan room No. 3 | 0d | 2026-08-15 | 2026-08-24 |  |  |  | Mechanical [319 h] |
| A48490 |  | Remove compressor 3A for shop — Aft bilge & ballast pump room | 0d | 2026-08-15 | 2026-08-25 | A48480 |  |  | Mechanical [162 h] |
| A40510 |  | Open & inspect motor group 8C — High-pressure air compressor room – aft | 0d | 2026-08-16 | 2026-08-21 |  |  |  | Mechanical [82 h] |
| A43510 |  | Reinstall & align compressor 1C — Steering gear room – port | 0d | 2026-08-16 | 2026-08-22 | A43500 |  |  | Mechanical [32 h]; Rigging & Weight Handling [8 h] |
| A43180 |  | Open & inspect pump set 5B — Steering gear room – starboard | 0d | 2026-08-16 | 2026-08-26 |  |  |  | Mechanical [97 h]; Rigging & Weight Handling [25 h] |
| A42880 |  | Remove motor group 9E for shop — Fan room No. 4 | 0d | 2026-08-17 | 2026-08-24 | A42870 |  |  | Mechanical [174 h] |
| A51080 |  | Open & inspect pump set 2B — Aft JP-5 transfer pump room | 0d | 2026-08-17 | 2026-08-19 |  |  |  | Mechanical [17 h] |
| A47560 |  | Open & inspect pump set 5F — Shaft alley No. 3 | 0d | 2026-08-17 | 2026-08-26 |  |  |  | Mechanical [63 h] |
| A40120 |  | Shop overhaul — motor group 9E — Fan room No. 1 | 0d | 2026-08-17 | 2026-08-24 | A40110 |  |  | Mechanical [117 h] |
| A48750 |  | Remove compressor 1F for shop — Aft bilge & ballast pump room | 0d | 2026-08-17 | 2026-08-23 | A48740 |  |  | Mechanical [169 h] |
| A31160 |  | Open & inspect motor group 5A — Air conditioning plant No. 4 | 0d | 2026-08-18 | 2026-08-25 |  |  |  | Mechanical [244 h] |
| A43130 |  | Open & inspect compressor 5A — Steering gear room – starboard | 0d | 2026-08-18 | 2026-08-27 |  |  |  | Mechanical [71 h] |
| A51040 |  | Remove compressor 3A for shop — Aft JP-5 transfer pump room | 0d | 2026-08-18 | 2026-08-26 | A51030 |  |  | Mechanical [46 h] |
| A24340 |  | Remove compressor 4B for shop — Machine shop | 0d | 2026-08-18 | 2026-08-26 | A24330 FS+2.4d |  |  | Mechanical [65 h] |
| A47160 |  | Remove compressor 3D for shop — Shaft alley No. 2 | 0d | 2026-08-18 | 2026-08-27 | A47150 |  |  | Mechanical [48 h] |
| A12320 |  | Remove pump set 4B for shop — JP-5 filling station – aft port | 0d | 2026-08-19 | 2026-08-22 | A12310 |  |  | Mechanical [98 h] |
| A51090 |  | Remove pump set 2B for shop — Aft JP-5 transfer pump room | 0d | 2026-08-19 | 2026-09-02 | A51080 FS+2.4d |  |  | Mechanical [205 h] |
| A40280 |  | Shop overhaul — pump set 7B — Electrical distribution room No. 1 | 0d | 2026-08-20 | 2026-08-24 | A40270 |  |  | Mechanical [49 h] |
| A42310 |  | Shop overhaul — motor group 3B — Emergency diesel generator room No. 3 | 0d | 2026-08-20 | 2026-08-26 | A42300 |  |  | Mechanical [201 h] |
| A41980 |  | Shop overhaul — compressor 2A — Electrical distribution room No. 3 | 0d | 2026-08-20 | 2026-08-24 | A41970 |  |  | Mechanical [104 h] |
| A46900 |  | Open & inspect pump set 4B — Shaft alley No. 1 | 0d | 2026-08-20 | 2026-08-27 |  |  |  | Mechanical [187 h] |
| A07260 |  | Reinstall & align compressor 4C — Barricade stanchion machinery room | 0d | 2026-08-20 | 2026-09-02 | A07250 |  |  | Mechanical [264 h] |
| A19760 |  | Open & inspect pump set 8B — Fantail | 0d | 2026-08-21 | 2026-08-24 |  |  |  | Mechanical [22 h] |
| A14960 |  | Remove compressor 2B for shop — Aft mooring station – port | 0d | 2026-08-21 | 2026-09-02 | A14950 |  |  | Mechanical [157 h] |
| A42410 |  | Shop overhaul — motor group 7A — Emergency diesel generator room No. 4 | 0d | 2026-08-21 | 2026-08-27 | A42400 FS+2.4d |  |  | Mechanical [48 h] |
| A07190 |  | Remove motor group 9B for shop (03-244-0-Q) | 0d | 2026-08-22 | 2026-09-01 | A07180 FS+2.4d |  |  | Mechanical [243 h] |
| A40580 |  | Shop overhaul — pump set 4A — Low-pressure air compressor room | 0d | 2026-08-22 | 2026-08-26 | A40570 |  |  | Mechanical [46 h] |
| A40520 |  | Remove motor group 8C for shop — High-pressure air compressor room – aft | 0d | 2026-08-22 | 2026-09-05 | A40510 |  |  | Mechanical [123 h] |
| A42950 |  | Reinstall & align compressor 8F — Fan room No. 4 | 0d | 2026-08-22 | 2026-08-27 | A42940 FS+2.4d |  |  | Mechanical [108 h] |
| A48760 |  | Shop overhaul — compressor 1F — Aft bilge & ballast pump room | 0d | 2026-08-23 | 2026-09-05 | A48750 FS+2.4d |  |  | Mechanical [362 h] |

| ID | Activity | Duration | Start | Finish | Predecessors | Resources |
| --- | --- | --- | --- | --- | --- | --- |
| A12330 | Shop overhaul — pump set 4B — JP-5 filling station – aft port | 0d | 2026-08-23 | 2026-09-02 | A12320 FS-0.8d | Mechanical [159 h] |
| A42680 | Reinstall & align compressor 5A — Fan room No. 4 | 0d | 2026-08-23 | 2026-08-30 | A42670 FS+2.4d | Mechanical [48 h] |
| A40290 | Reinstall & align pump set 7B — Electrical distribution room No. 1 | 0d | 2026-08-24 | 2026-09-03 | A40280 | Mechanical [80 h] |
| A43520 | Operational test compressor 1C — Steering gear room – port | 0d | 2026-08-24 | 2026-08-29 | A43510 | Mechanical [91 h] |
| A40680 | Remove pump set 4C for shop — Low-pressure air compressor room | 0d | 2026-08-25 | 2026-09-05 | A40670 FS+2.4d | Mechanical [149 h] |
| A40130 | Reinstall & align motor group 9E — Fan room No. 1 | 0d | 2026-08-25 | 2026-09-01 | A40120 FS+0.8d | Mechanical [188 h] |
| A14820 | Shop overhaul — pump set 6A — Aft mooring station – starboard | 0d | 2026-08-25 | 2026-08-30 | A14810 FS+0.8d | Mechanical [83 h] |
| A42890 | Shop overhaul — motor group 9E — Fan room No. 4 | 0d | 2026-08-26 | 2026-09-09 | A42880 FS+2.4d | Mechanical [121 h] |
| A19770 | Remove pump set 8B for shop — Fantail | 0d | 2026-08-26 | 2026-09-03 | A19760 | Mechanical [230 h] |
| A48500 | Shop overhaul — compressor 3A — Aft bilge & ballast pump room | 0d | 2026-08-26 | 2026-09-06 | A48490 | Mechanical [125 h] |
| A43050 | Shop overhaul — compressor 6B — Fan room No. 5 | 0d | 2026-08-26 | 2026-09-02 | A43040 FS+0.8d | Mechanical [130 h] |
| A41990 | Reinstall & align compressor 2A — Electrical distribution room No. 3 | 0d | 2026-08-26 | 2026-09-01 | A41980 FS+2.4d | Mechanical [32 h]; Rigging & Weight Handling [8 h] |
| A41870 | Remove compressor 8D for shop — Fan room No. 3 | 0d | 2026-08-27 | 2026-09-07 | A41860 FS+0.8d | Mechanical [66 h] |
| A43280 | Remove pump set 7D for shop — Steering gear room – starboard | 0d | 2026-08-27 | 2026-09-09 | A43270 SS+4.8d | Mechanical [93 h] |
| A47570 | Remove pump set 5F for shop — Shaft alley No. 3 | 0d | 2026-08-27 | 2026-09-01 | A47560 | Mechanical [55 h] |
| A31170 | Remove motor group 5A for shop — Air conditioning plant No. 4 | 0d | 2026-08-27 | 2026-09-07 | A31160 | Mechanical [80 h]; Rigging & Weight Handling [20 h] |
| A43190 | Remove pump set 5B for shop — Steering gear room – starboard | 0d | 2026-08-27 | 2026-09-04 | A43180 | Mechanical [182 h] |
| A42320 | Reinstall & align motor group 3B — Emergency diesel generator room No. 3 | 0d | 2026-08-27 | 2026-09-06 | A42310 | Mechanical [316 h] |
| A42960 | Operational test compressor 8F — Fan room No. 4 | 0d | 2026-08-27 | 2026-08-29 | A42950 | Mechanical [36 h] |
| A46910 | Remove pump set 4B for shop — Shaft alley No. 1 | 0d | 2026-08-27 | 2026-09-03 | A46900 FS+2.4d | Mechanical [226 h] |
| A24350 | Shop overhaul — compressor 4B — Machine shop | 0d | 2026-08-28 | 2026-09-08 | A24340 | Mechanical [156 h] |
| A43140 | Remove compressor 5A for shop — Steering gear room – starboard | 0d | 2026-08-28 | 2026-09-07 | A43130 FS+0.8d | Mechanical [79 h] |
| A47170 | Shop overhaul — compressor 3D — Shaft alley No. 2 | 0d | 2026-08-28 | 2026-09-02 | A47160 | Mechanical [48 h] |
| A42420 | Reinstall & align motor group 7A — Emergency diesel generator room No. 4 | 0d | 2026-08-28 | 2026-09-08 | A42410 | Mechanical [74 h] |
| A51050 | Shop overhaul — compressor 3A — Aft JP-5 transfer pump room | 0d | 2026-08-29 | 2026-09-09 | A51040 FS+0.8d | Mechanical [195 h] |
| A40590 | Reinstall & align pump set 4A — Low-pressure air compressor room | 0d | 2026-08-29 | 2026-09-03 | A40580 | Mechanical [136 h] |
| A42690 | Operational test compressor 5A — Fan room No. 4 | 0d | 2026-08-31 | 2026-09-14 | A42680 FS+2.4d | Mechanical [433 h] |
| A40140 | Operational test motor group 9E — Fan room No. 1 | 0d | 2026-09-01 | 2026-09-04 | A40130 | Mechanical [66 h] |
| A14830 | Reinstall & align pump set 6A — Aft mooring station – starboard | 0d | 2026-09-01 | 2026-09-08 | A14820 | Mechanical [150 h] |
| A51100 | Shop overhaul — pump set 2B — Aft JP-5 transfer pump room | 0d | 2026-09-02 | 2026-09-14 | A51090 FS+2.4d | Mechanical [326 h] |
| A42000 | Operational test compressor 2A — Electrical distribution room No. 3 | 0d | 2026-09-03 | 2026-09-11 | A41990 | Mechanical [207 h] |
| A40300 | Operational test pump set 7B — Electrical distribution room No. 1 | 0d | 2026-09-03 | 2026-09-07 | A40290 FS+0.8d | Mechanical [52 h]; Rigging & Weight Handling [13 h] |
| A43060 | Reinstall & align compressor 6B — Fan room No. 5 | 0d | 2026-09-03 | 2026-09-11 | A43050 FS+0.8d | Mechanical [61 h] |
| A07270 | Operational test compressor 4C — Barricade stanchion machinery room | 0d | 2026-09-03 | 2026-09-12 | A07260 | Mechanical [76 h]; Rigging & Weight Handling [19 h] |
| A07200 | Shop overhaul — motor group 9B (03-244-0-Q) | 0d | 2026-09-03 | 2026-09-08 | A07190 | Mechanical [89 h] |
| A19780 | Shop overhaul — pump set 8B — Fantail | 0d | 2026-09-04 | 2026-09-11 | A19770 | Mechanical [67 h] |
| A47580 | Shop overhaul — pump set 5F — Shaft alley No. 3 | 0d | 2026-09-04 | 2026-09-13 | A47570 | Mechanical [88 h] |
| A40600 | Operational test pump set 4A — Low-pressure air compressor room | 0d | 2026-09-04 | 2026-09-09 | A40590 | Mechanical [27 h] |
| A46920 | Shop overhaul — pump set 4B — Shaft alley No. 1 | 0d | 2026-09-04 | 2026-09-08 | A46910 FS+0.8d | Mechanical [54 h] |
| A14970 | Shop overhaul — compressor 2B — Aft mooring station – port | 0d | 2026-09-04 | 2026-09-15 | A14960 | Mechanical [187 h] |
| A12340 | Reinstall & align pump set 4B — JP-5 filling station – aft port | 0d | 2026-09-05 | 2026-09-10 | A12330 | Mechanical [92 h] |
| A47180 | Reinstall & align compressor 3D — Shaft alley No. 2 | 0d | 2026-09-05 | 2026-09-15 | A47170 | Mechanical [145 h] |
| A48770 | Reinstall & align compressor 1F — Aft bilge & ballast pump room | 0d | 2026-09-07 | 2026-09-09 | A48760 SS+2.4d | Mechanical [33 h] |
| A43200 | Shop overhaul — pump set 5B — Steering gear room – starboard | 0d | 2026-09-07 | 2026-09-17 | A43190 | Mechanical [353 h] |
| A42330 | Operational test motor group 3B — Emergency diesel generator room No. 3 | 0d | 2026-09-07 | 2026-09-14 | A42320 | Mechanical [84 h] |
| A40690 | Shop overhaul — pump set 4C — Low-pressure air compressor room | 0d | 2026-09-07 | 2026-09-19 | A40680 FS+0.8d | Mechanical [90 h] |
| A40530 | Shop overhaul — motor group 8C — High-pressure air compressor room – aft | 0d | 2026-09-07 | 2026-09-13 | A40520 FS+2.4d | Mechanical [36 h]; Rigging & Weight Handling [9 h] |
| A41880 | Shop overhaul — compressor 8D — Fan room No. 3 | 0d | 2026-09-08 | 2026-09-20 | A41870 SS+4.8d | Mechanical [294 h] |
| A48510 | Reinstall & align compressor 3A — Aft bilge & ballast pump room | 0d | 2026-09-08 | 2026-09-22 | A48500 FS+2.4d | Mechanical [122 h] |
| A07210 | Reinstall & align motor group 9B (03-244-0-Q) | 0d | 2026-09-08 | 2026-09-13 | A07200 | Mechanical [106 h]; Rigging & Weight Handling [27 h] |
| A43150 | Shop overhaul — compressor 5A — Steering gear room – starboard | 0d | 2026-09-09 | 2026-09-14 | A43140 | Mechanical [41 h] |
| A46930 | Reinstall & align pump set 4B — Shaft alley No. 1 | 0d | 2026-09-09 | 2026-09-23 | A46920 FS+2.4d | Mechanical [206 h] |
| A31180 | Shop overhaul — motor group 5A — Air conditioning plant No. 4 | 0d | 2026-09-09 | 2026-09-15 | A31170 FS+2.4d | Mechanical [44 h] |
| A14840 | Operational test pump set 6A — Aft mooring station – starboard | 0d | 2026-09-09 | 2026-09-23 | A14830 | Mechanical [72 h]; Rigging & Weight Handling [18 h] |
| A51060 | Reinstall & align compressor 3A — Aft JP-5 transfer pump room | 0d | 2026-09-10 | 2026-09-24 | A51050 FS+0.8d | Mechanical [309 h] |
| A24360 | Reinstall & align compressor 4B — Machine shop | 0d | 2026-09-10 | 2026-09-14 | A24350 | Mechanical [70 h] |
| A42430 | Operational test motor group 7A — Emergency diesel generator room No. 4 | 0d | 2026-09-10 | 2026-09-23 | A42420 FS+0.8d | Mechanical [170 h] |
| A43290 | Shop overhaul — pump set 7D — Steering gear room – starboard | 0d | 2026-09-11 | 2026-09-17 | A43280 FS+2.4d | Mechanical [119 h] |
| A42900 | Reinstall & align motor group 9E — Fan room No. 4 | 0d | 2026-09-11 | 2026-09-23 | A42890 | Mechanical [293 h] |
| A48780 | Operational test compressor 1F — Aft bilge & ballast pump room | 0d | 2026-09-11 | 2026-09-19 | A48770 | Mechanical [175 h] |
| A12350 | Operational test pump set 4B — JP-5 filling station – aft port | 0d | 2026-09-12 | 2026-09-17 | A12340 | Mechanical [78 h] |
| A43070 | Operational test compressor 6B — Fan room No. 5 | 0d | 2026-09-12 | 2026-09-22 | A43060 | Mechanical [73 h] |
| A19790 | Reinstall & align pump set 8B — Fantail | 0d | 2026-09-13 | 2026-09-24 | A19780 | Mechanical [178 h] |
| A43160 | Reinstall & align compressor 5A — Steering gear room – starboard | 0d | 2026-09-14 | 2026-09-26 | A43150 FS+2.4d | Mechanical [81 h] |
| A47590 | Reinstall & align pump set 5F — Shaft alley No. 3 | 0d | 2026-09-15 | 2026-09-23 | A47580 | Mechanical [69 h] |
| A07220 | Operational test motor group 9B (03-244-0-Q) | 0d | 2026-09-15 | 2026-09-25 | A07210 | Mechanical [122 h] |
| A24370 | Operational test compressor 4B — Machine shop | 0d | 2026-09-15 | 2026-09-19 | A24360 | Mechanical [23 h] |
| A31190 | Reinstall & align motor group 5A — Air conditioning plant No. 4 | 0d | 2026-09-15 | 2026-09-24 | A31180 | Mechanical [252 h] |
| A40540 | Reinstall & align motor group 8C — High-pressure air compressor room – aft | 0d | 2026-09-16 | 2026-09-19 | A40530 | Mechanical [47 h] |
| A51110 | Reinstall & align pump set 2B — Aft JP-5 transfer pump room | 0d | 2026-09-16 | 2026-09-20 | A51100 FS+0.8d | Mechanical [40 h]; Rigging & Weight Handling [11 h] |

| ID | WBS | Activity | Duration | Start | Finish | Predecessors | Complete | Remaining | Resources |
| --- | --- | --- | --- | --- | --- | --- | --- | --- | --- |
| A14980 |  | Reinstall & align compressor 2B — Aft mooring station – port | 0d | 2026-09-17 | 2026-09-21 | A14970 FS+2.4d |  |  | Mechanical [44 h] |
| A43300 |  | Reinstall & align pump set 7D — Steering gear room – starboard | 0d | 2026-09-17 | 2026-09-23 | A43290 FS+2.4d |  |  | Mechanical [128 h] |
| A47190 |  | Operational test compressor 3D — Shaft alley No. 2 | 0d | 2026-09-18 | 2026-09-23 | A47180 FS+0.8d |  |  | Mechanical [69 h] |
| A43210 |  | Reinstall & align pump set 5B — Steering gear room – starboard | 0d | 2026-09-19 | 2026-09-22 | A43200 |  |  | Mechanical [43 h] |
| A40700 |  | Reinstall & align pump set 4C — Low-pressure air compressor room | 0d | 2026-09-20 | 2026-10-02 | A40690 |  |  | Mechanical [100 h] |
| A41890 |  | Reinstall & align compressor 8D — Fan room No. 3 | 0d | 2026-09-20 | 2026-09-30 | A41880 |  |  | Mechanical [77 h] |
| A40550 |  | Operational test motor group 8C — High-pressure air compressor room – aft | 0d | 2026-09-21 | 2026-09-26 | A40540 |  |  | Mechanical [44 h] |
| A14990 |  | Operational test compressor 2B — Aft mooring station – port | 0d | 2026-09-21 | 2026-10-05 | A14980 SS+2.4d |  |  | Mechanical [466 h] |
| A51120 |  | Operational test pump set 2B — Aft JP-5 transfer pump room | 0d | 2026-09-21 | 2026-09-29 | A51110 |  |  | Mechanical [147 h] |
| A43220 |  | Operational test pump set 5B — Steering gear room – starboard | 0d | 2026-09-22 | 2026-10-01 | A43210 |  |  | Mechanical [60 h] |
| A48520 |  | Operational test compressor 3A — Aft bilge & ballast pump room | 0d | 2026-09-23 | 2026-10-04 | A48510 |  |  | Mechanical [137 h]; Rigging & Weight Handling [35 h] |
| A43310 |  | Operational test pump set 7D — Steering gear room – starboard | 0d | 2026-09-23 | 2026-09-29 | A43300 FS+2.4d |  |  | Mechanical [65 h] |
| A42910 |  | Operational test motor group 9E — Fan room No. 4 | 0d | 2026-09-24 | 2026-09-28 | A42900 |  |  | Mechanical [84 h] |
| A31200 |  | Operational test motor group 5A — Air conditioning plant No. 4 | 0d | 2026-09-24 | 2026-09-29 | A31190 |  |  | Mechanical [27 h] |
| A19800 |  | Operational test pump set 8B — Fantail | 0d | 2026-09-25 | 2026-10-01 | A19790 FS+0.8d |  |  | Mechanical [28 h]; Rigging & Weight Handling [8 h] |
| A46940 |  | Operational test pump set 4B — Shaft alley No. 1 | 0d | 2026-09-26 | 2026-09-29 | A46930 FS+0.8d |  |  | Mechanical [20 h] |
| A47600 |  | Operational test pump set 5F — Shaft alley No. 3 | 0d | 2026-09-26 | 2026-10-05 | A47590 FS+2.4d |  |  | Mechanical [289 h] |
| A51070 |  | Operational test compressor 3A — Aft JP-5 transfer pump room | 0d | 2026-09-26 | 2026-10-05 | A51060 |  |  | Mechanical [193 h] |
| A43170 |  | Operational test compressor 5A — Steering gear room – starboard | 0d | 2026-09-29 | 2026-10-04 | A43160 FS+0.8d |  |  | Mechanical [60 h] |
| A40710 |  | Operational test pump set 4C — Low-pressure air compressor room | 0d | 2026-10-02 | 2026-10-05 | A40700 |  |  | Mechanical [16 h]; Rigging & Weight Handling [5 h] |
| A41900 |  | Operational test compressor 8D — Fan room No. 3 | 0d | 2026-10-02 | 2026-10-16 | A41890 FS+0.8d |  |  | Mechanical [192 h] |
|  | 631 | **631 Preservation** |  | 2026-07-27 | 2026-10-20 |  |  |  |  |
| A31630 |  | Surface survey — bilge preservation 1B — Division office No. 2 | 0d | 2026-07-27 A | 2026-08-09 A |  | 100% |  | Preservation / Blast & Coat [343 h] |
| A25130 |  | Surface survey — bilge preservation 7A — Aft galley | 0d | 2026-07-27 A | 2026-07-30 A |  | 100% |  | Preservation / Blast & Coat [86 h] |
| A32290 |  | Surface survey — overhead coating 4A — Division office No. 4 | 0d | 2026-07-28 A | 2026-08-08 A |  | 100% |  | Preservation / Blast & Coat [148 h]; Rigging & Weight Handling [37 h] |
| A32080 |  | Surface survey — overhead coating 8B — Third deck trunk No. 6 | 0d | 2026-07-28 A | 2026-08-04 A |  | 100% |  | Preservation / Blast & Coat [216 h] |
| A30850 |  | Surface survey — overhead coating 6A — Division office No. 1 | 0d | 2026-07-29 A | 2026-08-09 A |  | 100% |  | Preservation / Blast & Coat [89 h] |
| A31950 |  | Surface survey — bilge preservation 4A — Crew washroom & head No. 3 | 0d | 2026-07-29 A | 2026-08-11 |  | 88% | 0d | Preservation / Blast & Coat [120 h] |
| A52190 |  | Surface survey — overhead coating 8B — Cofferdam No. 3 | 0d | 2026-07-30 A | 2026-08-05 A |  | 100% |  | Preservation / Blast & Coat [104 h] |
| A31490 |  | Surface survey — bilge preservation 6B — Crew berthing No. 3 | 0d | 2026-07-30 A | 2026-08-11 |  | 90% | 0d | Preservation / Blast & Coat [89 h] |
| A25720 |  | Surface survey — overhead coating 9B — Crew washroom & head No. 4 | 0d | 2026-07-31 A | 2026-08-03 A |  | 100% |  | Preservation / Blast & Coat [16 h] |
| A25140 |  | Blast / mechanical prep bilge preservation 7A — Aft galley | 0d | 2026-08-01 A | 2026-08-09 A | A25130 | 100% |  | Preservation / Blast & Coat [69 h] |
| A24280 |  | Surface survey — bilge preservation 4A — Machine shop | 0d | 2026-08-02 A | 2026-08-08 A |  | 100% |  | Preservation / Blast & Coat [77 h] |
| A41340 |  | Surface survey — overhead coating 3A — Aft JP-5 pump room – starboard | 0d | 2026-08-02 A | 2026-08-05 A |  | 100% |  | Preservation / Blast & Coat [30 h] |
| A30640 |  | Surface survey — deck coating 5A — IC Terminal Room | 0d | 2026-08-02 A | 2026-08-10 |  | 97% | 0d | Preservation / Blast & Coat [181 h] |
| A51290 |  | Surface survey — bilge preservation 4A — Cofferdam No. 1 | 0d | 2026-08-02 A | 2026-08-14 |  | 60% | 0d | Preservation / Blast & Coat [165 h] |
| A48380 |  | Surface survey — deck coating 3A — Storeroom No. 3 | 0d | 2026-08-03 A | 2026-08-09 A |  | 100% |  | Preservation / Blast & Coat [186 h] |
| A52140 |  | Surface survey — bilge preservation 7A — Cofferdam No. 3 | 0d | 2026-08-03 A | 2026-08-08 A |  | 100% |  | Preservation / Blast & Coat [181 h] |
| A12140 |  | Surface survey — bilge preservation 8B — JP-5 filling station – aft starboard | 0d | 2026-08-03 A | 2026-08-07 A |  | 100% |  | Preservation / Blast & Coat [99 h] |
| A47200 |  | Surface survey — deck coating 1A — Void No. 1 | 0d | 2026-08-04 A | 2026-08-06 A |  | 100% |  | Preservation / Blast & Coat [34 h] |
| A25730 |  | Blast / mechanical prep overhead coating 9B — Crew washroom & head No. 4 | 0d | 2026-08-04 A | 2026-08-09 A | A25720 | 100% |  | Preservation / Blast & Coat [33 h] |
| A32240 |  | Surface survey — bilge preservation 3A — Crew berthing No. 5 | 0d | 2026-08-04 A | 2026-08-16 |  | 32% | 0d | Preservation / Blast & Coat [306 h] |
| A14850 |  | Surface survey — bilge preservation 8B — Aft mooring station – starboard | 0d | 2026-08-05 A | 2026-08-07 A |  | 100% |  | Preservation / Blast & Coat [27 h] |
| A47960 |  | Surface survey — bilge preservation 7A — Storeroom No. 1 | 0d | 2026-08-05 A | 2026-08-12 |  | 61% | 0d | Preservation / Blast & Coat [103 h] |
| A24380 |  | Surface survey — overhead coating 1A — Crew washroom & head No. 1 | 0d | 2026-08-06 A | 2026-08-14 |  | 49% | 0d | Preservation / Blast & Coat [180 h] |
| A32500 |  | Surface survey — deck coating 1A — Crew washroom & head No. 4 | 0d | 2026-08-06 A | 2026-08-09 A |  | 100% |  | Preservation / Blast & Coat [16 h] |
| A24990 |  | Surface survey — bilge preservation 4A — Crew berthing No. 6 | 0d | 2026-08-06 A | 2026-08-15 |  | 41% | 0d | Preservation / Blast & Coat [308 h] |
| A25180 |  | Surface survey — deck coating 2A — Crew washroom & head No. 2 | 0d | 2026-08-07 A | 2026-08-09 A |  | 100% |  | Preservation / Blast & Coat [25 h] |
| A32090 |  | Blast / mechanical prep overhead coating 8B — Third deck trunk No. 6 | 0d | 2026-08-07 A | 2026-08-11 | A32080 | 53% | 0d | Preservation / Blast & Coat [30 h] |
| A47210 |  | Blast / mechanical prep deck coating 1A — Void No. 1 | 0d | 2026-08-07 A | 2026-08-17 | A47200 FS+2.4d | 27% | 0d | Preservation / Blast & Coat [158 h] |
| A51830 |  | Surface survey — bilge preservation 8A — Ballast pump room No. 3 | 0d | 2026-08-07 A | 2026-08-10 A |  | 100% |  | Preservation / Blast & Coat [52 h] |
| A52200 |  | Blast / mechanical prep overhead coating 8B — Cofferdam No. 3 | 0d | 2026-08-07 A | 2026-08-19 | A52190 | 16% | 0d | Preservation / Blast & Coat [139 h] |
| A41350 |  | Blast / mechanical prep overhead coating 3A — Aft JP-5 pump room – starboard | 0d | 2026-08-07 A | 2026-08-16 | A41340 | 16% | 0d | Preservation / Blast & Coat [157 h] |
| A31540 |  | Surface survey — deck coating 1A — Crew washroom & head No. 2 | 0d | 2026-08-07 A | 2026-08-20 |  | 17% | 0d | Preservation / Blast & Coat [89 h] |
| A42760 |  | Surface survey — bilge preservation 8C — Fan room No. 4 | 0d | 2026-08-08 A | 2026-08-19 |  | 15% | 0d | Preservation / Blast & Coat [136 h] |
| A14860 |  | Blast / mechanical prep bilge preservation 8B — Aft mooring station – starboard | 0d | 2026-08-08 A | 2026-08-17 | A14850 FS+2.4d | 19% | 0d | Preservation / Blast & Coat [136 h] |
| A52150 |  | Blast / mechanical prep bilge preservation 7A — Cofferdam No. 3 | 0d | 2026-08-09 A | 2026-08-16 | A52140 FS+2.4d | 14% | 0d | Preservation / Blast & Coat [51 h] |
| A25360 |  | Surface survey — deck coating 3B — Crew washroom & head No. 3 | 0d | 2026-08-09 A | 2026-08-18 |  | 11% | 0d | Preservation / Blast & Coat [149 h] |
| A48390 |  | Blast / mechanical prep deck coating 3A — Storeroom No. 3 | 0d | 2026-08-09 A | 2026-08-19 | A48380 | 8% | 0d | Preservation / Blast & Coat [131 h] |
| A24480 |  | Surface survey — deck coating 7A (2-199-2-L) | 0d | 2026-08-09 A | 2026-08-14 |  | 14% | 0d | Preservation / Blast & Coat [99 h] |
| A12150 |  | Blast / mechanical prep bilge preservation 8B — JP-5 filling station – aft starboard | 0d | 2026-08-10 A | 2026-08-21 | A12140 SS+4.8d |  | 0d | Preservation / Blast & Coat [92 h] |
| A30860 |  | Blast / mechanical prep overhead coating 6A — Division office No. 1 | 0d | 2026-08-10 A | 2026-08-18 | A30850 | 1% | 0d | Preservation / Blast & Coat [212 h] |
| A25740 |  | Prime coat overhead coating 9B — Crew washroom & head No. 4 | 0d | 2026-08-10 A | 2026-08-18 | A25730 |  | 0d | Preservation / Blast & Coat [66 h] |
| A25190 |  | Blast / mechanical prep deck coating 2A — Crew washroom & head No. 2 | 0d | 2026-08-10 | 2026-08-16 | A25180 |  |  | Preservation / Blast & Coat [51 h] |
| A24290 |  | Blast / mechanical prep bilge preservation 4A — Machine shop | 0d | 2026-08-10 | 2026-08-23 | A24280 FS+2.4d |  |  | Preservation / Blast & Coat [325 h] |
| A51840 |  | Blast / mechanical prep bilge preservation 8A — Ballast pump room No. 3 | 0d | 2026-08-10 | 2026-08-16 | A51830 |  |  | Preservation / Blast & Coat [106 h] |
| A32510 |  | Blast / mechanical prep deck coating 1A — Crew washroom & head No. 4 | 0d | 2026-08-10 | 2026-08-22 | A32500 FS+0.8d |  |  | Preservation / Blast & Coat [99 h] |
| A31640 |  | Blast / mechanical prep bilge preservation 1B — Division office No. 2 | 0d | 2026-08-11 | 2026-08-14 | A31630 SS+7.2d |  |  | Preservation / Blast & Coat [117 h] |
| A25150 |  | Prime coat bilge preservation 7A — Aft galley | 0d | 2026-08-11 | 2026-08-14 | A25140 |  |  | Preservation / Blast & Coat [28 h] |
| A32300 |  | Blast / mechanical prep overhead coating 4A — Division office No. 4 | 0d | 2026-08-11 | 2026-08-13 | A32290 FS+2.4d |  |  | Preservation / Blast & Coat [16 h] |

| ID | Activity | Duration | Start | Finish | Predecessors | Resources |
| --- | --- | --- | --- | --- | --- | --- |
| A48280 | Surface survey — deck coating 3A — Void No. 4 | 0d | 2026-08-11 | 2026-08-16 |  | Preservation / Blast & Coat [117 h] |
| A32610 | Surface survey — bilge preservation 7A — Crew berthing No. 6 | 0d | 2026-08-11 | 2026-08-17 |  | Preservation / Blast & Coat [54 h] |
| A30650 | Blast / mechanical prep deck coating 5A — IC Terminal Room | 0d | 2026-08-12 | 2026-08-17 | A30640 FS+2.4d | Preservation / Blast & Coat [39 h] |
| A46850 | Surface survey — overhead coating 2A — Shaft alley No. 1 | 0d | 2026-08-12 | 2026-08-25 |  | Preservation / Blast & Coat [95 h] |
| A25040 | Surface survey — deck coating 3B — Crew berthing No. 6 | 0d | 2026-08-12 | 2026-08-23 |  | Preservation / Blast & Coat [284 h] |
| A24640 | Surface survey — overhead coating 1A — Electrical repair shop | 0d | 2026-08-12 | 2026-08-17 |  | Preservation / Blast & Coat [71 h] |
| A51340 | Surface survey — deck coating 2A — JP-5 service tank No. 3 | 0d | 2026-08-12 | 2026-08-18 |  | Preservation / Blast & Coat [97 h] |
| A32100 | Prime coat overhead coating 8B — Third deck trunk No. 6 | 0d | 2026-08-12 | 2026-08-15 | A32090 FS+0.8d | Preservation / Blast & Coat [58 h] |
| A48430 | Surface survey — bilge preservation 2B — Storeroom No. 3 | 0d | 2026-08-12 | 2026-08-16 |  | Preservation / Blast & Coat [63 h] |
| A31500 | Blast / mechanical prep bilge preservation 6B — Crew berthing No. 3 | 0d | 2026-08-13 | 2026-08-19 | A31490 | Preservation / Blast & Coat [232 h] |
| A42180 | Surface survey — bilge preservation 3A — Aft magazine No. 2 – upper level | 0d | 2026-08-13 | 2026-08-19 |  | Preservation / Blast & Coat [51 h] |
| A32130 | Surface survey — bilge preservation 4A — Division office No. 3 | 0d | 2026-08-13 | 2026-08-19 |  | Preservation / Blast & Coat [107 h] |
| A31000 | Surface survey — bilge preservation 4A — Crew berthing No. 1 | 0d | 2026-08-13 | 2026-08-25 |  | Preservation / Blast & Coat [98 h] |
| A31960 | Blast / mechanical prep bilge preservation 4A — Crew washroom & head No. 3 | 0d | 2026-08-13 | 2026-08-19 | A31950 FS+2.4d | Preservation / Blast & Coat [128 h]; Rigging & Weight Handling [32 h] |
| A32310 | Prime coat overhead coating 4A — Division office No. 4 | 0d | 2026-08-13 | 2026-08-16 | A32300 FS+2.4d | Preservation / Blast & Coat [17 h] |
| A51390 | Surface survey — deck coating 8B — JP-5 service tank No. 3 | 0d | 2026-08-14 | 2026-08-27 |  | Preservation / Blast & Coat [149 h] |
| A31110 | Surface survey — overhead coating 6A — Crew berthing No. 2 | 0d | 2026-08-14 | 2026-08-23 |  | Preservation / Blast & Coat [234 h] |
| A48330 | Surface survey — deck coating 2B — Void No. 4 | 0d | 2026-08-14 | 2026-08-25 |  | Preservation / Blast & Coat [92 h] |
| A47970 | Blast / mechanical prep bilge preservation 7A — Storeroom No. 1 | 0d | 2026-08-14 | 2026-08-27 | A47960 | Preservation / Blast & Coat [225 h] |
| A25770 | Surface survey — overhead coating 8C (2-248-2-L) | 0d | 2026-08-14 | 2026-08-21 |  | Preservation / Blast & Coat [118 h] |
| A51300 | Blast / mechanical prep bilge preservation 4A — Cofferdam No. 1 | 0d | 2026-08-15 | 2026-08-22 | A51290 FS+0.8d | Preservation / Blast & Coat [32 h]; Rigging & Weight Handling [8 h] |
| A51240 | Surface survey — overhead coating 5B — Ballast pump room No. 1 | 0d | 2026-08-15 | 2026-08-23 |  | Preservation / Blast & Coat [134 h] |
| A31650 | Prime coat bilge preservation 1B — Division office No. 2 | 0d | 2026-08-15 | 2026-08-20 | A31640 | Preservation / Blast & Coat [32 h]; Rigging & Weight Handling [9 h] |
| A24390 | Blast / mechanical prep overhead coating 1A — Crew washroom & head No. 1 | 0d | 2026-08-15 | 2026-08-24 | A24380 | Preservation / Blast & Coat [119 h] |
| A51440 | Surface survey — overhead coating 5C — JP-5 service tank No. 3 | 0d | 2026-08-15 | 2026-08-18 |  | Preservation / Blast & Coat [40 h] |
| A25000 | Blast / mechanical prep bilge preservation 4A — Crew berthing No. 6 | 0d | 2026-08-15 | 2026-08-18 | A24990 SS+4.8d | Preservation / Blast & Coat [27 h] |
| A25610 | Surface survey — overhead coating 3B — Crew berthing No. 8 | 0d | 2026-08-15 | 2026-08-27 |  | Preservation / Blast & Coat [64 h] |
| A51850 | Prime coat bilge preservation 8A — Ballast pump room No. 3 | 0d | 2026-08-16 | 2026-08-22 | A51840 | Preservation / Blast & Coat [29 h] |
| A25160 | Top coat bilge preservation 7A — Aft galley | 0d | 2026-08-16 | 2026-08-23 | A25150 | Preservation / Blast & Coat [130 h] |
| A24490 | Blast / mechanical prep deck coating 7A (2-199-2-L) | 0d | 2026-08-16 | 2026-08-27 | A24480 | Preservation / Blast & Coat [326 h] |
| A32320 | Top coat overhead coating 4A — Division office No. 4 | 0d | 2026-08-17 | 2026-08-26 | A32310 | Preservation / Blast & Coat [77 h] |
| A51930 | Surface survey — overhead coating 1A — Aft magazine No. 3 | 0d | 2026-08-17 | 2026-08-29 |  | Preservation / Blast & Coat [163 h] |
| A32110 | Top coat overhead coating 8B — Third deck trunk No. 6 | 0d | 2026-08-17 | 2026-08-24 | A32100 | Preservation / Blast & Coat [228 h] |
| A31740 | Surface survey — overhead coating 8B (3-220-2-L) | 0d | 2026-08-17 | 2026-08-23 |  | Preservation / Blast & Coat [206 h] |
| A48290 | Blast / mechanical prep deck coating 3A — Void No. 4 | 0d | 2026-08-17 | 2026-08-28 | A48280 FS+0.8d | Preservation / Blast & Coat [315 h] |
| A25200 | Prime coat deck coating 2A — Crew washroom & head No. 2 | 0d | 2026-08-17 | 2026-08-19 | A25190 | Preservation / Blast & Coat [20 h] |
| A24650 | Blast / mechanical prep overhead coating 1A — Electrical repair shop | 0d | 2026-08-18 | 2026-08-25 | A24640 FS-4.8d | Preservation / Blast & Coat [59 h] |
| A30660 | Prime coat deck coating 5A — IC Terminal Room | 0d | 2026-08-18 | 2026-08-24 | A30650 | Preservation / Blast & Coat [48 h] |
| A48440 | Blast / mechanical prep bilge preservation 2B — Storeroom No. 3 | 0d | 2026-08-18 | 2026-08-27 | A48430 | Preservation / Blast & Coat [209 h] |
| A32250 | Blast / mechanical prep bilge preservation 3A — Crew berthing No. 5 | 0d | 2026-08-18 | 2026-08-31 | A32240 FS+2.4d | Preservation / Blast & Coat [240 h] |
| A14870 | Prime coat bilge preservation 8B — Aft mooring station – starboard | 0d | 2026-08-18 | 2026-08-30 | A14860 | Preservation / Blast & Coat [220 h]; Rigging & Weight Handling [56 h] |
| A41360 | Prime coat overhead coating 3A — Aft JP-5 pump room – starboard | 0d | 2026-08-19 | 2026-08-29 | A41350 FS+2.4d | Preservation / Blast & Coat [60 h] |
| A30870 | Prime coat overhead coating 6A — Division office No. 1 | 0d | 2026-08-19 | 2026-08-26 | A30860 FS+0.8d | Preservation / Blast & Coat [36 h]; Rigging & Weight Handling [10 h] |
| A47250 | Surface survey — deck coating 6A — Void No. 2 | 0d | 2026-08-19 | 2026-08-24 |  | Preservation / Blast & Coat [71 h] |
| A48400 | Prime coat deck coating 3A — Storeroom No. 3 | 0d | 2026-08-19 | 2026-08-30 | A48390 FS+2.4d | Preservation / Blast & Coat [208 h] |
| A52210 | Prime coat overhead coating 8B — Cofferdam No. 3 | 0d | 2026-08-19 | 2026-08-28 | A52200 FS+2.4d | Preservation / Blast & Coat [296 h] |
| A42190 | Blast / mechanical prep bilge preservation 3A — Aft magazine No. 2 – upper level | 0d | 2026-08-19 | 2026-08-28 | A42180 | Preservation / Blast & Coat [136 h] |
| A19920 | Surface survey — bilge preservation 6A — Jet engine test cell | 0d | 2026-08-19 | 2026-08-26 |  | Preservation / Blast & Coat [62 h] |
| A52160 | Prime coat bilge preservation 7A — Cofferdam No. 3 | 0d | 2026-08-19 | 2026-08-25 | A52150 SS+4.8d | Preservation / Blast & Coat [98 h] |
| A51660 | Surface survey — bilge preservation 4A — Ballast pump room No. 2 | 0d | 2026-08-19 | 2026-08-25 |  | Preservation / Blast & Coat [158 h] |
| A47220 | Prime coat deck coating 1A — Void No. 1 | 0d | 2026-08-20 | 2026-09-01 | A47210 FS+2.4d | Preservation / Blast & Coat [161 h] |
| A25010 | Prime coat bilge preservation 4A — Crew berthing No. 6 | 0d | 2026-08-20 | 2026-09-02 | A25000 SS+4.8d | Preservation / Blast & Coat [81 h] |
| A42770 | Blast / mechanical prep bilge preservation 8C — Fan room No. 4 | 0d | 2026-08-20 | 2026-08-31 | A42760 FS+2.4d | Preservation / Blast & Coat [269 h] |
| A25210 | Top coat deck coating 2A — Crew washroom & head No. 2 | 0d | 2026-08-20 | 2026-08-25 | A25200 FS+0.8d | Preservation / Blast & Coat [71 h] |
| A32620 | Blast / mechanical prep bilge preservation 7A — Crew berthing No. 6 | 0d | 2026-08-20 | 2026-09-01 | A32610 | Preservation / Blast & Coat [219 h] |
| A51450 | Blast / mechanical prep overhead coating 5C — JP-5 service tank No. 3 | 0d | 2026-08-20 | 2026-08-29 | A51440 SS+4.8d | Preservation / Blast & Coat [62 h]; Rigging & Weight Handling [16 h] |
| A25370 | Blast / mechanical prep deck coating 3B — Crew washroom & head No. 3 | 0d | 2026-08-20 | 2026-08-28 | A25360 FS+2.4d | Preservation / Blast & Coat [80 h]; Rigging & Weight Handling [21 h] |
| A31970 | Prime coat bilge preservation 4A — Crew washroom & head No. 3 | 0d | 2026-08-21 | 2026-08-27 | A31960 FS+0.8d | Preservation / Blast & Coat [91 h] |
| A31510 | Prime coat bilge preservation 6B — Crew berthing No. 3 | 0d | 2026-08-21 | 2026-09-01 | A31500 FS+2.4d | Preservation / Blast & Coat [267 h] |
| A51350 | Blast / mechanical prep deck coating 2A — JP-5 service tank No. 3 | 0d | 2026-08-21 | 2026-09-03 | A51340 | Preservation / Blast & Coat [477 h] |
| A31660 | Top coat bilge preservation 1B — Division office No. 2 | 0d | 2026-08-21 | 2026-09-04 | A31650 FS+2.4d | Preservation / Blast & Coat [340 h] |
| A25750 | Top coat overhead coating 9B — Crew washroom & head No. 4 | 0d | 2026-08-21 | 2026-08-24 | A25740 | Preservation / Blast & Coat [37 h] |
| A32140 | Blast / mechanical prep bilge preservation 4A — Division office No. 3 | 0d | 2026-08-21 | 2026-08-27 | A32130 FS+0.8d | Preservation / Blast & Coat [49 h] |
| A12160 | Prime coat bilge preservation 8B — JP-5 filling station – aft starboard | 0d | 2026-08-22 | 2026-09-03 | A12150 | Preservation / Blast & Coat [275 h] |
| A25780 | Blast / mechanical prep overhead coating 8C (2-248-2-L) | 0d | 2026-08-22 | 2026-09-01 | A25770 | Preservation / Blast & Coat [117 h] |
| A31550 | Blast / mechanical prep deck coating 1A — Crew washroom & head No. 2 | 0d | 2026-08-22 | 2026-08-29 | A31540 FS+0.8d | Preservation / Blast & Coat [57 h] |
| A51310 | Prime coat bilge preservation 4A — Cofferdam No. 1 | 0d | 2026-08-22 | 2026-09-01 | A51300 | Preservation / Blast & Coat [226 h] |
| A24300 | Prime coat bilge preservation 4A — Machine shop | 0d | 2026-08-24 | 2026-08-27 | A24290 FS+0.8d | Preservation / Blast & Coat [28 h] |
| A32520 | Prime coat deck coating 1A — Crew washroom & head No. 4 | 0d | 2026-08-24 | 2026-09-07 | A32510 | Preservation / Blast & Coat [113 h] |
| A51860 | Top coat bilge preservation 8A — Ballast pump room No. 3 | 0d | 2026-08-24 | 2026-09-01 | A51850 | Preservation / Blast & Coat [51 h] |

| ID | Activity | Duration | Start | Finish | Predecessors | Resources |
| --- | --- | --- | --- | --- | --- | --- |
| A31120 | Blast / mechanical prep overhead coating 6A — Crew berthing No. 2 | 0d | 2026-08-24 | 2026-09-01 | A31110 | Preservation / Blast & Coat [38 h]; Rigging & Weight Handling [10 h] |
| A25050 | Blast / mechanical prep deck coating 3B — Crew berthing No. 6 | 0d | 2026-08-25 | 2026-09-06 | A25040 | Preservation / Blast & Coat [415 h] |
| A25170 | Cure & inspect bilge preservation 7A — Aft galley | 0d | 2026-08-25 | 2026-09-04 | A25160 | Preservation / Blast & Coat [80 h] |
| A31750 | Blast / mechanical prep overhead coating 8B (3-220-2-L) | 0d | 2026-08-25 | 2026-09-05 | A31740 FS+2.4d | Preservation / Blast & Coat [147 h] |
| A25760 | Cure & inspect overhead coating 9B — Crew washroom & head No. 4 | 0d | 2026-08-25 | 2026-08-30 | A25750 SS+4.8d | Preservation / Blast & Coat [94 h] |
| A51250 | Blast / mechanical prep overhead coating 5B — Ballast pump room No. 1 | 0d | 2026-08-26 | 2026-08-31 | A51240 SS+7.2d | Preservation / Blast & Coat [139 h]; Rigging & Weight Handling [35 h] |
| A48340 | Blast / mechanical prep deck coating 2B — Void No. 4 | 0d | 2026-08-26 | 2026-08-29 | A48330 FS+0.8d | Preservation / Blast & Coat [52 h] |
| A30670 | Top coat deck coating 5A — IC Terminal Room | 0d | 2026-08-26 | 2026-09-07 | A30660 FS+2.4d | Preservation / Blast & Coat [213 h] |
| A32120 | Cure & inspect overhead coating 8B — Third deck trunk No. 6 | 0d | 2026-08-26 | 2026-09-07 | A32110 | Preservation / Blast & Coat [100 h] |
| A46860 | Blast / mechanical prep overhead coating 2A — Shaft alley No. 1 | 0d | 2026-08-26 | 2026-09-09 | A46850 | Preservation / Blast & Coat [82 h] |
| A31010 | Blast / mechanical prep bilge preservation 4A — Crew berthing No. 1 | 0d | 2026-08-26 | 2026-09-09 | A31000 | Preservation / Blast & Coat [195 h] |
| A25220 | Cure & inspect deck coating 2A — Crew washroom & head No. 2 | 0d | 2026-08-26 | 2026-08-30 | A25210 FS+0.8d | Preservation / Blast & Coat [97 h] |
| A24400 | Prime coat overhead coating 1A — Crew washroom & head No. 1 | 0d | 2026-08-27 | 2026-09-08 | A24390 | Preservation / Blast & Coat [82 h] |
| A52170 | Top coat bilge preservation 7A — Cofferdam No. 3 | 0d | 2026-08-27 | 2026-08-30 | A52160 | Preservation / Blast & Coat [21 h] |
| A30880 | Top coat overhead coating 6A — Division office No. 1 | 0d | 2026-08-27 | 2026-09-02 | A30870 FS+2.4d | Preservation / Blast & Coat [100 h] |
| A51670 | Blast / mechanical prep bilge preservation 4A — Ballast pump room No. 2 | 0d | 2026-08-27 | 2026-09-03 | A51660 | Preservation / Blast & Coat [47 h]; Rigging & Weight Handling [12 h] |
| A47980 | Prime coat bilge preservation 7A — Storeroom No. 1 | 0d | 2026-08-27 | 2026-09-01 | A47970 FS+0.8d | Preservation / Blast & Coat [31 h] |
| A47260 | Blast / mechanical prep deck coating 6A — Void No. 2 | 0d | 2026-08-27 | 2026-09-08 | A47250 FS+0.8d | Preservation / Blast & Coat [107 h] |
| A24500 | Prime coat deck coating 7A (2-199-2-L) | 0d | 2026-08-27 | 2026-09-05 | A24490 | Preservation / Blast & Coat [93 h] |
| A19930 | Blast / mechanical prep bilge preservation 6A — Jet engine test cell | 0d | 2026-08-28 | 2026-08-31 | A19920 FS+2.4d | Preservation / Blast & Coat [58 h] |
| A31980 | Top coat bilge preservation 4A — Crew washroom & head No. 3 | 0d | 2026-08-28 | 2026-09-03 | A31970 | Preservation / Blast & Coat [209 h] |
| A24660 | Prime coat overhead coating 1A — Electrical repair shop | 0d | 2026-08-28 | 2026-09-10 | A24650 | Preservation / Blast & Coat [317 h] |
| A32330 | Cure & inspect overhead coating 4A — Division office No. 4 | 0d | 2026-08-28 | 2026-09-11 | A32320 FS+2.4d | Preservation / Blast & Coat [217 h] |
| A24310 | Top coat bilge preservation 4A — Machine shop | 0d | 2026-08-28 | 2026-09-05 | A24300 | Preservation / Blast & Coat [111 h] |
| A48300 | Prime coat deck coating 3A — Void No. 4 | 0d | 2026-08-29 | 2026-08-31 | A48290 | Preservation / Blast & Coat [96 h] |
| A51400 | Blast / mechanical prep deck coating 8B — JP-5 service tank No. 3 | 0d | 2026-08-29 | 2026-08-31 | A51390 FS+0.8d | Preservation / Blast & Coat [26 h] |
| A52220 | Top coat overhead coating 8B — Cofferdam No. 3 | 0d | 2026-08-29 | 2026-09-09 | A52210 | Preservation / Blast & Coat [262 h] |
| A48450 | Prime coat bilge preservation 2B — Storeroom No. 3 | 0d | 2026-08-29 | 2026-09-02 | A48440 FS+2.4d | Preservation / Blast & Coat [81 h] |
| A25380 | Prime coat deck coating 3B — Crew washroom & head No. 3 | 0d | 2026-08-29 | 2026-09-11 | A25370 FS+0.8d | Preservation / Blast & Coat [178 h] |
| A25620 | Blast / mechanical prep overhead coating 3B — Crew berthing No. 8 | 0d | 2026-08-30 | 2026-09-04 | A25610 | Preservation / Blast & Coat [144 h] |
| A32150 | Prime coat bilge preservation 4A — Division office No. 3 | 0d | 2026-08-30 | 2026-09-11 | A32140 FS+0.8d | Preservation / Blast & Coat [207 h] |
| A41370 | Top coat overhead coating 3A — Aft JP-5 pump room – starboard | 0d | 2026-08-30 | 2026-09-03 | A41360 | Preservation / Blast & Coat [30 h] |
| A48410 | Top coat deck coating 3A — Storeroom No. 3 | 0d | 2026-08-30 | 2026-09-07 | A48400 | Preservation / Blast & Coat [107 h] |
| A52180 | Cure & inspect bilge preservation 7A — Cofferdam No. 3 | 0d | 2026-08-31 | 2026-09-12 | A52170 FS+0.8d | Preservation / Blast & Coat [173 h] |
| A48350 | Prime coat deck coating 2B — Void No. 4 | 0d | 2026-08-31 | 2026-09-10 | A48340 FS+2.4d | Preservation / Blast & Coat [92 h] |
| A51460 | Prime coat overhead coating 5C — JP-5 service tank No. 3 | 0d | 2026-08-31 | 2026-09-11 | A51450 | Preservation / Blast & Coat [203 h] |
| A51940 | Blast / mechanical prep overhead coating 1A — Aft magazine No. 3 | 0d | 2026-08-31 | 2026-09-08 | A51930 | Preservation / Blast & Coat [211 h] |
| A14880 | Top coat bilge preservation 8B — Aft mooring station – starboard | 0d | 2026-08-31 | 2026-09-05 | A14870 | Preservation / Blast & Coat [86 h] |
| A42200 | Prime coat bilge preservation 3A — Aft magazine No. 2 – upper level | 0d | 2026-08-31 | 2026-09-03 | A42190 | Preservation / Blast & Coat [22 h] |
| A31560 | Prime coat deck coating 1A — Crew washroom & head No. 2 | 0d | 2026-08-31 | 2026-09-11 | A31550 | Preservation / Blast & Coat [160 h] |
| A51410 | Prime coat deck coating 8B — JP-5 service tank No. 3 | 0d | 2026-09-01 | 2026-09-04 | A51400 | Preservation / Blast & Coat [93 h] |
| A19940 | Prime coat bilge preservation 6A — Jet engine test cell | 0d | 2026-09-01 | 2026-09-08 | A19930 | Preservation / Blast & Coat [44 h] |
| A47230 | Top coat deck coating 1A — Void No. 1 | 0d | 2026-09-02 | 2026-09-07 | A47220 FS+0.8d | Preservation / Blast & Coat [74 h] |
| A51870 | Cure & inspect bilge preservation 8A — Ballast pump room No. 3 | 0d | 2026-09-02 | 2026-09-11 | A51860 | Preservation / Blast & Coat [71 h] |
| A48310 | Top coat deck coating 3A — Void No. 4 | 0d | 2026-09-02 | 2026-09-06 | A48300 FS+0.8d | Preservation / Blast & Coat [48 h] |
| A51260 | Prime coat overhead coating 5B — Ballast pump room No. 1 | 0d | 2026-09-02 | 2026-09-14 | A51250 FS+2.4d | Preservation / Blast & Coat [344 h] |
| A42780 | Prime coat bilge preservation 8C — Fan room No. 4 | 0d | 2026-09-02 | 2026-09-05 | A42770 | Preservation / Blast & Coat [42 h] |
| A51320 | Top coat bilge preservation 4A — Cofferdam No. 1 | 0d | 2026-09-03 | 2026-09-11 | A51310 FS+0.8d | Preservation / Blast & Coat [218 h] |
| A25790 | Prime coat overhead coating 8C (2-248-2-L) | 0d | 2026-09-03 | 2026-09-06 | A25780 | Preservation / Blast & Coat [57 h] |
| A31130 | Prime coat overhead coating 6A — Crew berthing No. 2 | 0d | 2026-09-03 | 2026-09-16 | A31120 | Preservation / Blast & Coat [68 h]; Rigging & Weight Handling [18 h] |
| A32260 | Prime coat bilge preservation 3A — Crew berthing No. 5 | 0d | 2026-09-03 | 2026-09-15 | A32250 | Preservation / Blast & Coat [369 h] |
| A31520 | Top coat bilge preservation 6B — Crew berthing No. 3 | 0d | 2026-09-03 | 2026-09-12 | A31510 | Preservation / Blast & Coat [175 h] |
| A25020 | Top coat bilge preservation 4A — Crew berthing No. 6 | 0d | 2026-09-03 | 2026-09-08 | A25010 | Preservation / Blast & Coat [105 h] |
| A30890 | Cure & inspect overhead coating 6A — Division office No. 1 | 0d | 2026-09-04 | 2026-09-06 | A30880 FS+2.4d | Preservation / Blast & Coat [78 h] |
| A31990 | Cure & inspect bilge preservation 4A — Crew washroom & head No. 3 | 0d | 2026-09-04 | 2026-09-12 | A31980 | Preservation / Blast & Coat [59 h] |
| A51680 | Prime coat bilge preservation 4A — Ballast pump room No. 2 | 0d | 2026-09-04 | 2026-09-17 | A51670 FS+0.8d | Preservation / Blast & Coat [351 h] |
| A32630 | Prime coat bilge preservation 7A — Crew berthing No. 6 | 0d | 2026-09-04 | 2026-09-11 | A32620 FS+2.4d | Preservation / Blast & Coat [87 h] |
| A41380 | Cure & inspect overhead coating 3A — Aft JP-5 pump room – starboard | 0d | 2026-09-04 | 2026-09-10 | A41370 | Preservation / Blast & Coat [42 h] |
| A42210 | Top coat bilge preservation 3A — Aft magazine No. 2 – upper level | 0d | 2026-09-04 | 2026-09-15 | A42200 | Preservation / Blast & Coat [356 h] |
| A12170 | Top coat bilge preservation 8B — JP-5 filling station – aft starboard | 0d | 2026-09-04 | 2026-09-18 | A12160 | Preservation / Blast & Coat [377 h]; Rigging & Weight Handling [95 h] |
| A47990 | Top coat bilge preservation 7A — Storeroom No. 1 | 0d | 2026-09-04 | 2026-09-11 | A47980 FS+0.8d | Preservation / Blast & Coat [43 h] |
| A51420 | Top coat deck coating 8B — JP-5 service tank No. 3 | 0d | 2026-09-04 | 2026-09-08 | A51410 | Preservation / Blast & Coat [62 h] |
| A51360 | Prime coat deck coating 2A — JP-5 service tank No. 3 | 0d | 2026-09-04 | 2026-09-12 | A51350 FS+0.8d | Preservation / Blast & Coat [101 h] |
| A48460 | Top coat bilge preservation 2B — Storeroom No. 3 | 0d | 2026-09-04 | 2026-09-07 | A48450 FS+2.4d | Preservation / Blast & Coat [48 h] |
| A31670 | Cure & inspect bilge preservation 1B — Division office No. 2 | 0d | 2026-09-05 | 2026-09-11 | A31660 | Preservation / Blast & Coat [187 h] |
| A24510 | Top coat deck coating 7A (2-199-2-L) | 0d | 2026-09-05 | 2026-09-12 | A24500 FS+0.8d | Preservation / Blast & Coat [64 h] |
| A31760 | Prime coat overhead coating 8B (3-220-2-L) | 0d | 2026-09-06 | 2026-09-14 | A31750 FS+2.4d | Preservation / Blast & Coat [66 h] |
| A25630 | Prime coat overhead coating 3B — Crew berthing No. 8 | 0d | 2026-09-06 | 2026-09-11 | A25620 | Preservation / Blast & Coat [31 h] |
| A24320 | Cure & inspect bilge preservation 4A — Machine shop | 0d | 2026-09-06 | 2026-09-10 | A24310 | Preservation / Blast & Coat [109 h] |
| A25800 | Top coat overhead coating 8C (2-248-2-L) | 0d | 2026-09-06 | 2026-09-11 | A25790 FS+2.4d | Preservation / Blast & Coat [40 h]; Rigging & Weight Handling [11 h] |

| ID | Activity | Duration | Start | Finish | Predecessors | Resources |
| --- | --- | --- | --- | --- | --- | --- |
| A14890 | Cure & inspect bilge preservation 8B — Aft mooring station – starboard | 0d | 2026-09-07 | 2026-09-12 | A14880 FS-1.6d | Preservation / Blast & Coat [34 h] |
| A25060 | Prime coat deck coating 3B — Crew berthing No. 6 | 0d | 2026-09-07 | 2026-09-15 | A25050 | Preservation / Blast & Coat [126 h] |
| A32530 | Top coat deck coating 1A — Crew washroom & head No. 4 | 0d | 2026-09-08 | 2026-09-18 | A32520 | Preservation / Blast & Coat [188 h] |
| A51430 | Cure & inspect deck coating 8B — JP-5 service tank No. 3 | 0d | 2026-09-08 | 2026-09-10 | A51420 FS+0.8d | Preservation / Blast & Coat [40 h] |
| A47240 | Cure & inspect deck coating 1A — Void No. 1 | 0d | 2026-09-08 | 2026-09-12 | A47230 FS+2.4d | Preservation / Blast & Coat [64 h] |
| A42790 | Top coat bilge preservation 8C — Fan room No. 4 | 0d | 2026-09-08 | 2026-09-16 | A42780 | Preservation / Blast & Coat [56 h] |
| A30680 | Cure & inspect deck coating 5A — IC Terminal Room | 0d | 2026-09-08 | 2026-09-11 | A30670 SS+2.4d | Preservation / Blast & Coat [42 h] |
| A48320 | Cure & inspect deck coating 3A — Void No. 4 | 0d | 2026-09-09 | 2026-09-20 | A48310 FS+2.4d | Preservation / Blast & Coat [80 h] |
| A48470 | Cure & inspect bilge preservation 2B — Storeroom No. 3 | 0d | 2026-09-09 | 2026-09-16 | A48460 | Preservation / Blast & Coat [94 h] |
| A31020 | Prime coat bilge preservation 4A — Crew berthing No. 1 | 0d | 2026-09-09 | 2026-09-18 | A31010 | Preservation / Blast & Coat [165 h] |
| A19950 | Top coat bilge preservation 6A — Jet engine test cell | 0d | 2026-09-09 | 2026-09-12 | A19940 FS+2.4d | Preservation / Blast & Coat [69 h] |
| A24410 | Top coat overhead coating 1A — Crew washroom & head No. 1 | 0d | 2026-09-09 | 2026-09-12 | A24400 | Preservation / Blast & Coat [33 h] |
| A48420 | Cure & inspect deck coating 3A — Storeroom No. 3 | 0d | 2026-09-10 | 2026-09-15 | A48410 FS-1.6d | Preservation / Blast & Coat [91 h] |
| A47270 | Prime coat deck coating 6A — Void No. 2 | 0d | 2026-09-10 | 2026-09-17 | A47260 FS+0.8d | Preservation / Blast & Coat [180 h] |
| A25030 | Cure & inspect bilge preservation 4A — Crew berthing No. 6 | 0d | 2026-09-11 | 2026-09-20 | A25020 | Preservation / Blast & Coat [73 h] |
| A48360 | Top coat deck coating 2B — Void No. 4 | 0d | 2026-09-11 | 2026-09-14 | A48350 FS+0.8d | Preservation / Blast & Coat [80 h] |
| A46870 | Prime coat overhead coating 2A — Shaft alley No. 1 | 0d | 2026-09-11 | 2026-09-23 | A46860 FS+0.8d | Preservation / Blast & Coat [100 h] |
| A51950 | Prime coat overhead coating 1A — Aft magazine No. 3 | 0d | 2026-09-11 | 2026-09-17 | A51940 | Preservation / Blast & Coat [54 h] |
| A24670 | Top coat overhead coating 1A — Electrical repair shop | 0d | 2026-09-11 | 2026-09-14 | A24660 FS+0.8d | Preservation / Blast & Coat [49 h] |
| A31570 | Top coat deck coating 1A — Crew washroom & head No. 2 | 0d | 2026-09-11 | 2026-09-24 | A31560 | Preservation / Blast & Coat [100 h] |
| A52230 | Cure & inspect overhead coating 8B — Cofferdam No. 3 | 0d | 2026-09-11 | 2026-09-19 | A52220 FS+0.8d | Preservation / Blast & Coat [230 h] |
| A51330 | Cure & inspect bilge preservation 4A — Cofferdam No. 1 | 0d | 2026-09-12 | 2026-09-14 | A51320 | Preservation / Blast & Coat [22 h] |
| A32160 | Top coat bilge preservation 4A — Division office No. 3 | 0d | 2026-09-12 | 2026-09-19 | A32150 FS+0.8d | Preservation / Blast & Coat [230 h] |
| A48000 | Cure & inspect bilge preservation 7A — Storeroom No. 1 | 0d | 2026-09-12 | 2026-09-22 | A47990 | Preservation / Blast & Coat [149 h] |
| A32640 | Top coat bilge preservation 7A — Crew berthing No. 6 | 0d | 2026-09-12 | 2026-09-15 | A32630 FS+2.4d | Preservation / Blast & Coat [91 h] |
| A25810 | Cure & inspect overhead coating 8C (2-248-2-L) | 0d | 2026-09-12 | 2026-09-26 | A25800 FS+2.4d | Preservation / Blast & Coat [435 h] |
| A25390 | Top coat deck coating 3B — Crew washroom & head No. 3 | 0d | 2026-09-13 | 2026-09-24 | A25380 FS+2.4d | Preservation / Blast & Coat [204 h] |
| A24520 | Cure & inspect deck coating 7A (2-199-2-L) | 0d | 2026-09-13 | 2026-09-16 | A24510 | Preservation / Blast & Coat [48 h] |
| A51470 | Top coat overhead coating 5C — JP-5 service tank No. 3 | 0d | 2026-09-13 | 2026-09-15 | A51460 | Preservation / Blast & Coat [28 h] |
| A25640 | Top coat overhead coating 3B — Crew berthing No. 8 | 0d | 2026-09-14 | 2026-09-16 | A25630 | Preservation / Blast & Coat [45 h] |
| A19960 | Cure & inspect bilge preservation 6A — Jet engine test cell | 0d | 2026-09-14 | 2026-09-26 | A19950 | Preservation / Blast & Coat [106 h] |
| A24420 | Cure & inspect overhead coating 1A — Crew washroom & head No. 1 | 0d | 2026-09-14 | 2026-09-24 | A24410 | Preservation / Blast & Coat [70 h] |
| A31530 | Cure & inspect bilge preservation 6B — Crew berthing No. 3 | 0d | 2026-09-14 | 2026-09-26 | A31520 FS+0.8d | Preservation / Blast & Coat [130 h] |
| A51370 | Top coat deck coating 2A — JP-5 service tank No. 3 | 0d | 2026-09-14 | 2026-09-17 | A51360 FS+2.4d | Preservation / Blast & Coat [37 h] |
| A48370 | Cure & inspect deck coating 2B — Void No. 4 | 0d | 2026-09-15 | 2026-09-28 | A48360 FS+2.4d | Preservation / Blast & Coat [69 h]; Rigging & Weight Handling [18 h] |
| A51270 | Top coat overhead coating 5B — Ballast pump room No. 1 | 0d | 2026-09-15 | 2026-09-25 | A51260 | Preservation / Blast & Coat [115 h]; Rigging & Weight Handling [29 h] |
| A31140 | Top coat overhead coating 6A — Crew berthing No. 2 | 0d | 2026-09-16 | 2026-09-25 | A31130 | Preservation / Blast & Coat [144 h] |
| A31770 | Top coat overhead coating 8B (3-220-2-L) | 0d | 2026-09-16 | 2026-09-20 | A31760 | Preservation / Blast & Coat [31 h] |
| A51480 | Cure & inspect overhead coating 5C — JP-5 service tank No. 3 | 0d | 2026-09-16 | 2026-09-21 | A51470 | Preservation / Blast & Coat [53 h] |
| A32650 | Cure & inspect bilge preservation 7A — Crew berthing No. 6 | 0d | 2026-09-16 | 2026-09-26 | A32640 | Preservation / Blast & Coat [81 h] |
| A25650 | Cure & inspect overhead coating 3B — Crew berthing No. 8 | 0d | 2026-09-16 | 2026-09-30 | A25640 | Preservation / Blast & Coat [175 h] |
| A24680 | Cure & inspect overhead coating 1A — Electrical repair shop | 0d | 2026-09-17 | 2026-09-29 | A24670 SS+4.8d | Preservation / Blast & Coat [318 h] |
| A51380 | Cure & inspect deck coating 2A — JP-5 service tank No. 3 | 0d | 2026-09-17 | 2026-09-25 | A51370 FS+0.8d | Preservation / Blast & Coat [159 h]; Rigging & Weight Handling [40 h] |
| A42220 | Cure & inspect bilge preservation 3A — Aft magazine No. 2 – upper level | 0d | 2026-09-17 | 2026-09-24 | A42210 | Preservation / Blast & Coat [219 h] |
| A47280 | Top coat deck coating 6A — Void No. 2 | 0d | 2026-09-18 | 2026-09-27 | A47270 FS+2.4d | Preservation / Blast & Coat [57 h] |
| A25070 | Top coat deck coating 3B — Crew berthing No. 6 | 0d | 2026-09-18 | 2026-09-30 | A25060 | Preservation / Blast & Coat [250 h] |
| A32270 | Top coat bilge preservation 3A — Crew berthing No. 5 | 0d | 2026-09-18 | 2026-09-30 | A32260 FS+2.4d | Preservation / Blast & Coat [339 h] |
| A51960 | Top coat overhead coating 1A — Aft magazine No. 3 | 0d | 2026-09-19 | 2026-09-21 | A51950 SS+4.8d | Preservation / Blast & Coat [13 h] |
| A42800 | Cure & inspect bilge preservation 8C — Fan room No. 4 | 0d | 2026-09-19 | 2026-10-01 | A42790 SS+4.8d | Preservation / Blast & Coat [70 h] |
| A51690 | Top coat bilge preservation 4A — Ballast pump room No. 2 | 0d | 2026-09-19 | 2026-09-27 | A51680 | Preservation / Blast & Coat [154 h] |
| A12180 | Cure & inspect bilge preservation 8B — JP-5 filling station – aft starboard | 0d | 2026-09-19 | 2026-09-23 | A12170 | Preservation / Blast & Coat [65 h] |
| A32170 | Cure & inspect bilge preservation 4A — Division office No. 3 | 0d | 2026-09-20 | 2026-09-25 | A32160 | Preservation / Blast & Coat [100 h]; Rigging & Weight Handling [25 h] |
| A32540 | Cure & inspect deck coating 1A — Crew washroom & head No. 4 | 0d | 2026-09-21 | 2026-10-01 | A32530 SS+7.2d | Preservation / Blast & Coat [228 h] |
| A31030 | Top coat bilge preservation 4A — Crew berthing No. 1 | 0d | 2026-09-21 | 2026-09-29 | A31020 FS+2.4d | Preservation / Blast & Coat [92 h] |
| A51970 | Cure & inspect overhead coating 1A — Aft magazine No. 3 | 0d | 2026-09-22 | 2026-10-03 | A51960 FS+2.4d | Preservation / Blast & Coat [81 h] |
| A31780 | Cure & inspect overhead coating 8B (3-220-2-L) | 0d | 2026-09-23 | 2026-09-28 | A31770 | Preservation / Blast & Coat [40 h] |
| A46880 | Top coat overhead coating 2A — Shaft alley No. 1 | 0d | 2026-09-24 | 2026-10-04 | A46870 | Preservation / Blast & Coat [178 h] |
| A25400 | Cure & inspect deck coating 3B — Crew washroom & head No. 3 | 0d | 2026-09-24 | 2026-09-30 | A25390 | Preservation / Blast & Coat [90 h] |
| A31580 | Cure & inspect deck coating 1A — Crew washroom & head No. 2 | 0d | 2026-09-26 | 2026-10-04 | A31570 | Preservation / Blast & Coat [76 h] |
| A51280 | Cure & inspect overhead coating 5B — Ballast pump room No. 1 | 0d | 2026-09-26 | 2026-10-05 | A51270 | Preservation / Blast & Coat [221 h] |
| A31150 | Cure & inspect overhead coating 6A — Crew berthing No. 2 | 0d | 2026-09-27 | 2026-10-06 | A31140 | Preservation / Blast & Coat [76 h] |
| A51700 | Cure & inspect bilge preservation 4A — Ballast pump room No. 2 | 0d | 2026-09-28 | 2026-10-07 | A51690 FS+2.4d | Preservation / Blast & Coat [153 h] |
| A31040 | Cure & inspect bilge preservation 4A — Crew berthing No. 1 | 0d | 2026-09-29 | 2026-10-01 | A31030 | Preservation / Blast & Coat [24 h]; Rigging & Weight Handling [6 h] |
| A47290 | Cure & inspect deck coating 6A — Void No. 2 | 0d | 2026-09-30 | 2026-10-02 | A47280 | Preservation / Blast & Coat [29 h] |
| A25080 | Cure & inspect deck coating 3B — Crew berthing No. 6 | 0d | 2026-10-01 | 2026-10-09 | A25070 | Preservation / Blast & Coat [76 h] |
| A32280 | Cure & inspect bilge preservation 3A — Crew berthing No. 5 | 0d | 2026-10-01 | 2026-10-15 | A32270 SS+4.8d | Preservation / Blast & Coat [177 h] |
| A46890 | Cure & inspect overhead coating 2A — Shaft alley No. 1 | 0d | 2026-10-06 | 2026-10-20 | A46880 FS+0.8d | Preservation / Blast & Coat [224 h] |

| ID | WBS | Activity | Duration | Start | Finish | Predecessors | Complete | Remaining | Resources |
| --- | --- | --- | --- | --- | --- | --- | --- | --- | --- |
|  | SVC | **Zone Services & Access** |  | 2026-07-29 | 2026-10-04 |  |  |  |  |
| A56150 |  | Run temporary power — Aft Below-Decks feeder 1 | 0d | 2026-07-29 A | 2026-08-08 A |  | 100% |  | Electrical [132 h] |
| A56180 |  | Temp lighting string 2 — Aft Below-Decks | 0d | 2026-07-30 A | 2026-08-07 A |  | 100% |  | Electrical [43 h] |
| A56330 |  | Stage scaffolding — Aft Below-Decks band 9 | 0d | 2026-07-31 A | 2026-08-10 A |  | 100% |  | Rigging & Weight Handling [131 h] |
| A56240 |  | Reposition temp vent 5 — Aft Below-Decks | 0d | 2026-08-04 A | 2026-08-14 |  | 56% | 0d | Sheet Metal / HVAC [251 h] |
| A56280 |  | Stage scaffolding — Aft Below-Decks band 7 | 0d | 2026-08-07 A | 2026-08-11 |  | 53% | 0d | Rigging & Weight Handling [49 h] |
| A56260 |  | Material staging & lay-down 6 — Aft Below-Decks | 0d | 2026-08-11 | 2026-08-14 |  |  |  | Rigging & Weight Handling [44 h] |
| A56220 |  | Strike scaffolding — Aft Below-Decks band 4 | 0d | 2026-08-11 | 2026-08-21 |  |  |  | Rigging & Weight Handling [302 h] |
| A56350 |  | Rig access platforms — Aft Below-Decks band 10 | 0d | 2026-08-17 | 2026-08-24 |  |  |  | Rigging & Weight Handling [62 h] |
| A56310 |  | Run temporary power — Aft Below-Decks feeder 8 | 0d | 2026-08-17 | 2026-08-24 |  |  |  | Electrical [82 h] |
| A56290 |  | Strike scaffolding — Aft Below-Decks band 7 | 0d | 2026-08-18 | 2026-08-22 | A56280 |  |  | Rigging & Weight Handling [89 h] |
| A56340 |  | Rig access platforms — Aft Below-Decks band 9 | 0d | 2026-08-19 | 2026-08-23 | A56330 |  |  | Rigging & Weight Handling [145 h] |
| A56200 |  | Reposition temp vent 3 — Aft Below-Decks | 0d | 2026-08-21 | 2026-08-30 |  |  |  | Sheet Metal / HVAC [69 h] |
| A56250 |  | Temp ventilation trunk 5 — Aft Below-Decks | 0d | 2026-08-28 | 2026-09-05 | A56240 |  |  | Sheet Metal / HVAC [258 h] |
| A56160 |  | Recover temp services — Aft Below-Decks feeder 1 | 0d | 2026-09-04 | 2026-09-07 | A56150 |  |  | Electrical [40 h] |
| A56270 |  | Clear lay-down 6 — Aft Below-Decks | 0d | 2026-09-11 | 2026-09-16 | A56260 |  |  | Rigging & Weight Handling [76 h] |
| A56190 |  | Run temporary power — Aft Below-Decks feeder 2 | 0d | 2026-09-13 | 2026-09-19 | A56180 |  |  | Electrical [114 h] |
| A56210 |  | Temp ventilation trunk 3 — Aft Below-Decks | 0d | 2026-09-16 | 2026-09-19 | A56200 |  |  | Sheet Metal / HVAC [25 h] |
| A56300 |  | Rig access platforms — Aft Below-Decks band 7 | 0d | 2026-09-16 | 2026-09-19 | A56290 |  |  | Rigging & Weight Handling [23 h] |
| A56360 |  | Stage scaffolding — Aft Below-Decks band 10 | 0d | 2026-09-18 | 2026-09-25 | A56350 |  |  | Rigging & Weight Handling [64 h] |
| A56230 |  | Stage scaffolding — Aft Below-Decks band 4 | 0d | 2026-09-22 | 2026-09-30 | A56220 |  |  | Rigging & Weight Handling [219 h] |
| A56320 |  | Recover temp services — Aft Below-Decks feeder 8 | 0d | 2026-09-30 | 2026-10-04 | A56310 |  |  | Electrical [65 h] |
| A56170 |  | Temp lighting string 1 — Aft Below-Decks | 0d | 2026-09-30 | 2026-10-04 | A56160 |  |  | Electrical [60 h] |
|  | Z6 | **Zone 6 — Tanks, Voids & Inner Bottom** |  | 2026-07-27 | 2026-10-19 |  |  |  |  |
|  | 130 | **130 Hull Structure** |  | 2026-07-27 | 2026-10-11 |  |  |  |  |
| A53690 |  | NDT survey — foundation group 6A — Potable water tank No. 6 | 0d | 2026-07-27 A | 2026-07-29 A |  | 100% |  | Structural Welding [86 h] |
| A53960 |  | NDT survey — deck insert 6A — Aft peak void | 0d | 2026-07-27 A | 2026-08-10 |  | 91% | 0d | Structural Welding [116 h] |
| A53700 |  | Crop out foundation group 6A — Potable water tank No. 6 | 0d | 2026-08-01 A | 2026-08-04 A | A53690 | 100% |  | Structural Welding [70 h]; Rigging & Weight Handling [18 h] |
| A53640 |  | NDT survey — deck insert 3A — Potable water tank No. 5 | 0d | 2026-08-02 A | 2026-08-13 |  | 66% | 0d | Structural Welding [325 h] |
| A54920 |  | NDT survey — deck insert 9A — Inner bottom void No. 1 | 0d | 2026-08-03 A | 2026-08-08 A |  | 100% |  | Structural Welding [78 h] |
| A52660 |  | NDT survey — structural bay 5B (7-64-2-J) | 0d | 2026-08-05 A | 2026-08-08 A |  | 100% |  | Structural Welding [106 h] |
| A53490 |  | NDT survey — structural bay 1B — Potable water tank No. 3 | 0d | 2026-08-05 A | 2026-08-17 |  | 41% | 0d | Structural Welding [101 h] |
| A53710 |  | Fit & weld foundation group 6A — Potable water tank No. 6 | 0d | 2026-08-06 A | 2026-08-11 | A53700 FS+2.4d | 46% | 0d | Structural Welding [168 h] |
| A54540 |  | NDT survey — deck insert 5A — Ballast tank No. 6 | 0d | 2026-08-07 A | 2026-08-21 |  | 12% | 0d | Structural Welding [363 h] |
| A52670 |  | Crop out structural bay 5B (7-64-2-J) | 0d | 2026-08-10 | 2026-08-20 | A52660 |  |  | Structural Welding [160 h] |
| A54930 |  | Crop out deck insert 9A — Inner bottom void No. 1 | 0d | 2026-08-10 | 2026-08-14 | A54920 FS+0.8d |  |  | Structural Welding [20 h] |
| A53970 |  | Crop out deck insert 6A — Aft peak void | 0d | 2026-08-12 | 2026-08-20 | A53960 SS+2.4d |  |  | Structural Welding [132 h] |
| A53850 |  | NDT survey — deck insert 4B — Potable water tank No. 7 | 0d | 2026-08-13 | 2026-08-23 |  |  |  | Structural Welding [79 h] |
| A53590 |  | NDT survey — foundation group 8B — Potable water tank No. 4 | 0d | 2026-08-13 | 2026-08-17 |  |  |  | Structural Welding [140 h] |
| A53650 |  | Crop out deck insert 3A — Potable water tank No. 5 | 0d | 2026-08-14 | 2026-08-21 | A53640 FS+2.4d |  |  | Structural Welding [194 h] |
| A53720 |  | NDT acceptance — foundation group 6A — Potable water tank No. 6 | 0d | 2026-08-14 | 2026-08-25 | A53710 FS+2.4d |  |  | Structural Welding [68 h] |
| A53740 |  | NDT survey — foundation group 4B — Potable water tank No. 6 | 0d | 2026-08-15 | 2026-08-26 |  |  |  | Structural Welding [105 h]; Rigging & Weight Handling [27 h] |
| A54940 |  | Fit & weld deck insert 9A — Inner bottom void No. 1 | 0d | 2026-08-15 | 2026-08-29 | A54930 |  |  | Structural Welding [281 h] |
| A54690 |  | NDT survey — structural bay 3A — Ballast tank No. 8 | 0d | 2026-08-16 | 2026-08-27 |  |  |  | Structural Welding [84 h] |
| A52300 |  | NDT survey — structural bay 2A — JP-5 storage tank No. 2 | 0d | 2026-08-17 | 2026-08-19 |  |  |  | Structural Welding [21 h] |
| A53600 |  | Crop out foundation group 8B — Potable water tank No. 4 | 0d | 2026-08-17 | 2026-08-28 | A53590 |  |  | Structural Welding [374 h] |
| A53500 |  | Crop out structural bay 1B — Potable water tank No. 3 | 0d | 2026-08-19 | 2026-09-02 | A53490 |  |  | Structural Welding [105 h] |
| A52350 |  | NDT survey — deck insert 1A — Forward peak void | 0d | 2026-08-19 | 2026-08-25 |  |  |  | Structural Welding [186 h] |
| A52310 |  | Crop out structural bay 2A — JP-5 storage tank No. 2 | 0d | 2026-08-20 | 2026-08-25 | A52300 SS+7.2d |  |  | Structural Welding [57 h] |
| A53980 |  | Fit & weld deck insert 6A — Aft peak void | 0d | 2026-08-20 | 2026-09-02 | A53970 FS+2.4d |  |  | Structural Welding [347 h] |
| A53660 |  | Fit & weld deck insert 3A — Potable water tank No. 5 | 0d | 2026-08-22 | 2026-09-03 | A53650 |  |  | Structural Welding [256 h] |
| A52680 |  | Fit & weld structural bay 5B (7-64-2-J) | 0d | 2026-08-22 | 2026-08-30 | A52670 SS+2.4d |  |  | Structural Welding [163 h] |
| A53860 |  | Crop out deck insert 4B — Potable water tank No. 7 | 0d | 2026-08-23 | 2026-08-31 | A53850 |  |  | Structural Welding [281 h] |
| A54550 |  | Crop out deck insert 5A — Ballast tank No. 6 | 0d | 2026-08-23 | 2026-09-04 | A54540 |  |  | Structural Welding [214 h] |
| A52360 |  | Crop out deck insert 1A — Forward peak void | 0d | 2026-08-25 | 2026-08-30 | A52350 FS+2.4d |  |  | Structural Welding [69 h] |
| A53730 |  | Grind & dress foundation group 6A — Potable water tank No. 6 | 0d | 2026-08-25 | 2026-09-04 | A53720 |  |  | Structural Welding [169 h] |
| A52320 |  | Fit & weld structural bay 2A — JP-5 storage tank No. 2 | 0d | 2026-08-26 | 2026-09-02 | A52310 |  |  | Structural Welding [167 h] |
| A53750 |  | Crop out foundation group 4B — Potable water tank No. 6 | 0d | 2026-08-27 | 2026-09-04 | A53740 FS+0.8d |  |  | Structural Welding [115 h] |
| A54700 |  | Crop out structural bay 3A — Ballast tank No. 8 | 0d | 2026-08-29 | 2026-09-01 | A54690 |  |  | Structural Welding [27 h] |
| A53610 |  | Fit & weld foundation group 8B — Potable water tank No. 4 | 0d | 2026-08-30 | 2026-09-03 | A53600 |  |  | Structural Welding [28 h] |
| A52370 |  | Fit & weld deck insert 1A — Forward peak void | 0d | 2026-08-30 | 2026-09-03 | A52360 FS+0.8d |  |  | Structural Welding [108 h] |
| A54950 |  | NDT acceptance — deck insert 9A — Inner bottom void No. 1 | 0d | 2026-08-31 | 2026-09-06 | A54940 |  |  | Structural Welding [86 h] |
| A53870 |  | Fit & weld deck insert 4B — Potable water tank No. 7 | 0d | 2026-08-31 | 2026-09-04 | A53860 |  |  | Structural Welding [29 h] |
| A54710 |  | Fit & weld structural bay 3A — Ballast tank No. 8 | 0d | 2026-09-01 | 2026-09-08 | A54700 |  |  | Structural Welding [184 h] |
| A52690 |  | NDT acceptance — structural bay 5B (7-64-2-J) | 0d | 2026-09-01 | 2026-09-09 | A52680 |  |  | Structural Welding [60 h] |
| A53510 |  | Fit & weld structural bay 1B — Potable water tank No. 3 | 0d | 2026-09-02 | 2026-09-06 | A53500 |  |  | Structural Welding [56 h] |
| A53990 |  | NDT acceptance — deck insert 6A — Aft peak void | 0d | 2026-09-03 | 2026-09-14 | A53980 |  |  | Structural Welding [104 h]; Rigging & Weight Handling [27 h] |
| A53620 |  | NDT acceptance — foundation group 8B — Potable water tank No. 4 | 0d | 2026-09-03 | 2026-09-09 | A53610 SS+7.2d |  |  | Structural Welding [34 h] |
| A52330 |  | NDT acceptance — structural bay 2A — JP-5 storage tank No. 2 | 0d | 2026-09-03 | 2026-09-06 | A52320 |  |  | Structural Welding [25 h] |
| A52380 |  | NDT acceptance — deck insert 1A — Forward peak void | 0d | 2026-09-05 | 2026-09-17 | A52370 FS-0.8d |  |  | Structural Welding [71 h] |

| ID | WBS | Activity | Duration | Start | Finish | Predecessors | Complete | Remaining | Resources |
| --- | --- | --- | --- | --- | --- | --- | --- | --- | --- |
| A53670 |  | NDT acceptance — deck insert 3A — Potable water tank No. 5 | 0d | 2026-09-06 | 2026-09-14 | A53660 |  |  | Structural Welding [184 h] |
| A53880 |  | NDT acceptance — deck insert 4B — Potable water tank No. 7 | 0d | 2026-09-06 | 2026-09-16 | A53870 FS+2.4d |  |  | Structural Welding [78 h] |
| A53760 |  | Fit & weld foundation group 4B — Potable water tank No. 6 | 0d | 2026-09-06 | 2026-09-19 | A53750 FS-1.6d |  |  | Structural Welding [231 h] |
| A54560 |  | Fit & weld deck insert 5A — Ballast tank No. 6 | 0d | 2026-09-07 | 2026-09-20 | A54550 |  |  | Structural Welding [152 h]; Rigging & Weight Handling [38 h] |
| A53520 |  | NDT acceptance — structural bay 1B — Potable water tank No. 3 | 0d | 2026-09-07 | 2026-09-09 | A53510 FS-1.6d |  |  | Structural Welding [37 h] |
| A52340 |  | Grind & dress structural bay 2A — JP-5 storage tank No. 2 | 0d | 2026-09-08 | 2026-09-15 | A52330 FS+2.4d |  |  | Structural Welding [162 h] |
| A54960 |  | Grind & dress deck insert 9A — Inner bottom void No. 1 | 0d | 2026-09-09 | 2026-09-11 | A54950 |  |  | Structural Welding [24 h] |
| A54720 |  | NDT acceptance — structural bay 3A — Ballast tank No. 8 | 0d | 2026-09-10 | 2026-09-20 | A54710 |  |  | Structural Welding [182 h] |
| A53630 |  | Grind & dress foundation group 8B — Potable water tank No. 4 | 0d | 2026-09-10 | 2026-09-21 | A53620 |  |  | Structural Welding [100 h] |
| A53530 |  | Grind & dress structural bay 1B — Potable water tank No. 3 | 0d | 2026-09-10 | 2026-09-15 | A53520 FS+0.8d |  |  | Structural Welding [86 h] |
| A52700 |  | Grind & dress structural bay 5B (7-64-2-J) | 0d | 2026-09-11 | 2026-09-22 | A52690 |  |  | Structural Welding [164 h] |
| A54000 |  | Grind & dress deck insert 6A — Aft peak void | 0d | 2026-09-15 | 2026-09-27 | A53990 FS+0.8d |  |  | Structural Welding [184 h] |
| A53890 |  | Grind & dress deck insert 4B — Potable water tank No. 7 | 0d | 2026-09-17 | 2026-09-26 | A53880 |  |  | Structural Welding [130 h] |
| A53680 |  | Grind & dress deck insert 3A — Potable water tank No. 5 | 0d | 2026-09-17 | 2026-09-26 | A53670 FS+0.8d |  |  | Structural Welding [247 h]; Rigging & Weight Handling [62 h] |
| A52390 |  | Grind & dress deck insert 1A — Forward peak void | 0d | 2026-09-17 | 2026-09-23 | A52380 FS+0.8d |  |  | Structural Welding [44 h] |
| A54730 |  | Grind & dress structural bay 3A — Ballast tank No. 8 | 0d | 2026-09-20 | 2026-09-25 | A54720 FS+0.8d |  |  | Structural Welding [182 h] |
| A54570 |  | NDT acceptance — deck insert 5A — Ballast tank No. 6 | 0d | 2026-09-20 | 2026-09-29 | A54560 |  |  | Structural Welding [229 h] |
| A53770 |  | NDT acceptance — foundation group 4B — Potable water tank No. 6 | 0d | 2026-09-21 | 2026-10-03 | A53760 SS+2.4d |  |  | Structural Welding [405 h] |
| A54580 |  | Grind & dress deck insert 5A — Ballast tank No. 6 | 0d | 2026-10-01 | 2026-10-04 | A54570 |  |  | Structural Welding [80 h] |
| A53780 |  | Grind & dress foundation group 4B — Potable water tank No. 6 | 0d | 2026-10-04 | 2026-10-11 | A53770 |  |  | Structural Welding [110 h] |
|  | 300 | **300 Electrical Distribution** |  |  |  |  |  |  |  |
|  | 430 | **430 Interior Communications** |  |  |  |  |  |  |  |
|  | 505 | **505 Piping Systems** |  | 2026-08-03 | 2026-10-19 |  |  |  |  |
| A52240 |  | Lay-up & drain drain riser 2A — JP-5 storage tank No. 1 | 0d | 2026-08-03 A | 2026-08-11 |  | 85% | 0d | Pipefitting [207 h] |
| A55170 |  | Lay-up & drain pipe spool group 8A — Inner bottom void No. 5 | 0d | 2026-08-04 A | 2026-08-13 |  | 37% | 0d | Pipefitting [54 h] |
| A54160 |  | Lay-up & drain drain riser 6A — Ballast tank No. 2 | 0d | 2026-08-06 A | 2026-08-11 |  | 73% | 0d | Pipefitting [37 h] |
| A54220 |  | Lay-up & drain pipe spool group 9A — Ballast tank No. 3 | 0d | 2026-08-08 A | 2026-08-15 |  | 27% | 0d | Pipefitting [128 h] |
| A52250 |  | Cut out drain riser 2A — JP-5 storage tank No. 1 | 0d | 2026-08-11 | 2026-08-25 | A52240 SS+7.2d |  |  | Pipefitting [266 h] |
| A52600 |  | Lay-up & drain drain riser 2A (7-64-2-J) | 0d | 2026-08-11 | 2026-08-19 |  |  |  | Pipefitting [214 h] |
| A54170 |  | Cut out drain riser 6A — Ballast tank No. 2 | 0d | 2026-08-12 | 2026-08-26 | A54160 FS+2.4d |  |  | Pipefitting [90 h] |
| A52770 |  | Lay-up & drain valve bank 8A — JP-5 storage tank No. 8 | 0d | 2026-08-12 | 2026-08-18 |  |  |  | Pipefitting [34 h] |
| A53790 |  | Lay-up & drain valve bank 1A — Potable water tank No. 7 | 0d | 2026-08-13 | 2026-08-25 |  |  |  | Pipefitting [190 h] |
| A55180 |  | Cut out pipe spool group 8A — Inner bottom void No. 5 | 0d | 2026-08-13 | 2026-08-25 | A55170 FS+2.4d |  |  | Pipefitting [200 h] |
| A52710 |  | Lay-up & drain valve bank 7A — JP-5 storage tank No. 7 | 0d | 2026-08-14 | 2026-08-17 |  |  |  | Pipefitting [48 h] |
| A54230 |  | Cut out pipe spool group 9A — Ballast tank No. 3 | 0d | 2026-08-18 | 2026-08-29 | A54220 |  |  | Pipefitting [78 h] |
| A53430 |  | Lay-up & drain drain riser 5A — Potable water tank No. 3 | 0d | 2026-08-18 | 2026-08-30 |  |  |  | Pipefitting [78 h] |
| A52780 |  | Cut out valve bank 8A — JP-5 storage tank No. 8 | 0d | 2026-08-19 | 2026-08-22 | A52770 |  |  | Pipefitting [45 h] |
| A52720 |  | Cut out valve bank 7A — JP-5 storage tank No. 7 | 0d | 2026-08-20 | 2026-08-30 | A52710 |  |  | Pipefitting [74 h] |
| A54330 |  | Lay-up & drain drain riser 6A — Ballast tank No. 4 | 0d | 2026-08-20 | 2026-08-29 |  |  |  | Pipefitting [61 h] |
| A53900 |  | Lay-up & drain pipe spool group 2A — Potable water tank No. 8 | 0d | 2026-08-20 | 2026-08-26 |  |  |  | Pipefitting [124 h]; Rigging & Weight Handling [31 h] |
| A52610 |  | Cut out drain riser 2A (7-64-2-J) | 0d | 2026-08-21 | 2026-08-31 | A52600 FS+2.4d |  |  | Pipefitting [59 h] |
| A52790 |  | Fab & fit valve bank 8A — JP-5 storage tank No. 8 | 0d | 2026-08-25 | 2026-08-27 | A52780 |  |  | Pipefitting [45 h] |
| A52260 |  | Fab & fit drain riser 2A — JP-5 storage tank No. 1 | 0d | 2026-08-26 | 2026-09-01 | A52250 FS+0.8d |  |  | Pipefitting [80 h] |
| A53910 |  | Cut out pipe spool group 2A — Potable water tank No. 8 | 0d | 2026-08-27 | 2026-08-29 | A53900 |  |  | Pipefitting [61 h] |
| A53800 |  | Cut out valve bank 1A — Potable water tank No. 7 | 0d | 2026-08-27 | 2026-08-30 | A53790 |  |  | Pipefitting [35 h] |
| A54180 |  | Fab & fit drain riser 6A — Ballast tank No. 2 | 0d | 2026-08-27 | 2026-09-03 | A54170 |  |  | Pipefitting [106 h] |
| A55190 |  | Fab & fit pipe spool group 8A — Inner bottom void No. 5 | 0d | 2026-08-28 | 2026-09-03 | A55180 |  |  | Pipefitting [104 h] |
| A52800 |  | Weld out valve bank 8A — JP-5 storage tank No. 8 | 0d | 2026-08-29 | 2026-09-03 | A52790 SS+4.8d |  |  | Pipefitting [137 h] |
| A54240 |  | Fab & fit pipe spool group 9A — Ballast tank No. 3 | 0d | 2026-08-29 | 2026-09-01 | A54230 |  |  | Pipefitting [39 h] |
| A54340 |  | Cut out drain riser 6A — Ballast tank No. 4 | 0d | 2026-08-30 | 2026-09-08 | A54330 FS+0.8d |  |  | Pipefitting [68 h] |
| A52730 |  | Fab & fit valve bank 7A — JP-5 storage tank No. 7 | 0d | 2026-08-30 | 2026-09-06 | A52720 |  |  | Pipefitting [149 h] |
| A53810 |  | Fab & fit valve bank 1A — Potable water tank No. 7 | 0d | 2026-08-31 | 2026-09-04 | A53800 FS+0.8d |  |  | Pipefitting [47 h] |
| A53920 |  | Fab & fit pipe spool group 2A — Potable water tank No. 8 | 0d | 2026-08-31 | 2026-09-10 | A53910 |  |  | Pipefitting [83 h] |
| A52620 |  | Fab & fit drain riser 2A (7-64-2-J) | 0d | 2026-09-01 | 2026-09-07 | A52610 FS+2.4d |  |  | Pipefitting [49 h] |
| A53440 |  | Cut out drain riser 5A — Potable water tank No. 3 | 0d | 2026-09-01 | 2026-09-10 | A53430 |  |  | Pipefitting [50 h] |
| A54250 |  | Weld out pipe spool group 9A — Ballast tank No. 3 | 0d | 2026-09-03 | 2026-09-16 | A54240 |  |  | Pipefitting [327 h] |
| A52270 |  | Weld out drain riser 2A — JP-5 storage tank No. 1 | 0d | 2026-09-03 | 2026-09-07 | A52260 |  |  | Pipefitting [35 h]; Rigging & Weight Handling [9 h] |
| A55200 |  | Weld out pipe spool group 8A — Inner bottom void No. 5 | 0d | 2026-09-04 | 2026-09-10 | A55190 |  |  | Pipefitting [118 h] |
| A54190 |  | Weld out drain riser 6A — Ballast tank No. 2 | 0d | 2026-09-05 | 2026-09-11 | A54180 FS+2.4d |  |  | Pipefitting [78 h] |
| A52810 |  | Hydro test valve bank 8A — JP-5 storage tank No. 8 | 0d | 2026-09-05 | 2026-09-10 | A52800 FS+0.8d |  |  | Pipefitting [56 h] |
| A53820 |  | Weld out valve bank 1A — Potable water tank No. 7 | 0d | 2026-09-07 | 2026-09-19 | A53810 |  |  | Pipefitting [117 h] |
| A52740 |  | Weld out valve bank 7A — JP-5 storage tank No. 7 | 0d | 2026-09-07 | 2026-09-13 | A52730 |  |  | Pipefitting [93 h] |
| A52280 |  | Hydro test drain riser 2A — JP-5 storage tank No. 1 | 0d | 2026-09-09 | 2026-09-15 | A52270 |  |  | Pipefitting [140 h]; Rigging & Weight Handling [36 h] |
| A52630 |  | Weld out drain riser 2A (7-64-2-J) | 0d | 2026-09-10 | 2026-09-19 | A52620 |  |  | Pipefitting [240 h] |
| A54350 |  | Fab & fit drain riser 6A — Ballast tank No. 4 | 0d | 2026-09-10 | 2026-09-16 | A54340 |  |  | Pipefitting [145 h] |
| A53930 |  | Weld out pipe spool group 2A — Potable water tank No. 8 | 0d | 2026-09-12 | 2026-09-17 | A53920 |  |  | Pipefitting [44 h] |
| A52820 |  | Flush & restore valve bank 8A — JP-5 storage tank No. 8 | 0d | 2026-09-12 | 2026-09-21 | A52810 |  |  | Pipefitting [296 h] |
| A53450 |  | Fab & fit drain riser 5A — Potable water tank No. 3 | 0d | 2026-09-12 | 2026-09-18 | A53440 |  |  | Pipefitting [104 h] |
| A55210 |  | Hydro test pipe spool group 8A — Inner bottom void No. 5 | 0d | 2026-09-12 | 2026-09-16 | A55200 |  |  | Pipefitting [53 h] |
| A54200 |  | Hydro test drain riser 6A — Ballast tank No. 2 | 0d | 2026-09-12 | 2026-09-21 | A54190 |  |  | Pipefitting [163 h] |

| ID | WBS | Activity | Duration | Start | Finish | Predecessors | Complete | Remaining | Resources |
| --- | --- | --- | --- | --- | --- | --- | --- | --- | --- |
| A52750 |  | Hydro test valve bank 7A — JP-5 storage tank No. 7 | 0d | 2026-09-16 | 2026-09-25 | A52740 |  |  | Pipefitting [228 h] |
| A52290 |  | Flush & restore drain riser 2A — JP-5 storage tank No. 1 | 0d | 2026-09-16 | 2026-09-22 | A52280 FS+2.4d |  |  | Pipefitting [58 h] |
| A54360 |  | Weld out drain riser 6A — Ballast tank No. 4 | 0d | 2026-09-16 | 2026-09-24 | A54350 |  |  | Pipefitting [128 h] |
| A55220 |  | Flush & restore pipe spool group 8A — Inner bottom void No. 5 | 0d | 2026-09-16 | 2026-09-23 | A55210 FS+2.4d |  |  | Pipefitting [172 h] |
| A54260 |  | Hydro test pipe spool group 9A — Ballast tank No. 3 | 0d | 2026-09-18 | 2026-09-30 | A54250 |  |  | Pipefitting [216 h] |
| A53460 |  | Weld out drain riser 5A — Potable water tank No. 3 | 0d | 2026-09-19 | 2026-09-27 | A53450 |  |  | Pipefitting [125 h] |
| A52640 |  | Hydro test drain riser 2A (7-64-2-J) | 0d | 2026-09-19 | 2026-09-25 | A52630 |  |  | Pipefitting [63 h] |
| A53940 |  | Hydro test pipe spool group 2A — Potable water tank No. 8 | 0d | 2026-09-20 | 2026-10-02 | A53930 |  |  | Pipefitting [83 h] |
| A53830 |  | Hydro test valve bank 1A — Potable water tank No. 7 | 0d | 2026-09-20 | 2026-09-28 | A53820 FS+0.8d |  |  | Pipefitting [183 h] |
| A54210 |  | Flush & restore drain riser 6A — Ballast tank No. 2 | 0d | 2026-09-22 | 2026-09-27 | A54200 |  |  | Pipefitting [58 h] |
| A54370 |  | Hydro test drain riser 6A — Ballast tank No. 4 | 0d | 2026-09-24 | 2026-10-07 | A54360 |  |  | Pipefitting [201 h] |
| A52650 |  | Flush & restore drain riser 2A (7-64-2-J) | 0d | 2026-09-25 | 2026-10-02 | A52640 FS+2.4d |  |  | Pipefitting [123 h] |
| A52760 |  | Flush & restore valve bank 7A — JP-5 storage tank No. 7 | 0d | 2026-09-27 | 2026-10-09 | A52750 |  |  | Pipefitting [134 h] |
| A53470 |  | Hydro test drain riser 5A — Potable water tank No. 3 | 0d | 2026-09-28 | 2026-10-09 | A53460 |  |  | Pipefitting [61 h] |
| A53840 |  | Flush & restore valve bank 1A — Potable water tank No. 7 | 0d | 2026-09-29 | 2026-10-13 | A53830 |  |  | Pipefitting [159 h] |
| A54270 |  | Flush & restore pipe spool group 9A — Ballast tank No. 3 | 0d | 2026-09-30 | 2026-10-09 | A54260 FS-2.4d |  |  | Pipefitting [64 h] |
| A53950 |  | Flush & restore pipe spool group 2A — Potable water tank No. 8 | 0d | 2026-10-03 | 2026-10-14 | A53940 |  |  | Pipefitting [199 h] |
| A54380 |  | Flush & restore drain riser 6A — Ballast tank No. 4 | 0d | 2026-10-07 | 2026-10-09 | A54370 FS+2.4d |  |  | Pipefitting [34 h] |
| A53480 |  | Flush & restore drain riser 5A — Potable water tank No. 3 | 0d | 2026-10-10 | 2026-10-19 | A53470 |  |  | Pipefitting [63 h]; Rigging & Weight Handling [16 h] |
|  | 508 | **508 Insulation & Lagging** |  |  |  |  |  |  |  |
|  | 512 | **512 Ventilation & Uptakes** |  |  |  |  |  |  |  |
|  | 560 | **560 Aux Machinery** |  |  |  |  |  |  |  |
|  | 631 | **631 Preservation** |  | 2026-07-27 | 2026-10-18 |  |  |  |  |
| A55280 |  | Surface survey — bilge preservation 8B — Inner bottom void No. 6 | 0d | 2026-07-27 A | 2026-08-10 |  | 87% | 0d | Preservation / Blast & Coat [93 h] |
| A54110 |  | Surface survey — deck coating 6B — Ballast tank No. 1 | 0d | 2026-07-27 A | 2026-08-05 A |  | 100% |  | Preservation / Blast & Coat [109 h] |
| A53330 |  | Surface survey — bilge preservation 3A — Potable water tank No. 2 | 0d | 2026-07-28 A | 2026-08-05 A |  | 100% |  | Preservation / Blast & Coat [60 h] |
| A55120 |  | Surface survey — bilge preservation 9A — Inner bottom void No. 4 | 0d | 2026-07-29 A | 2026-08-07 A |  | 100% |  | Preservation / Blast & Coat [71 h] |
| A55230 |  | Surface survey — overhead coating 4A — Inner bottom void No. 6 | 0d | 2026-07-29 A | 2026-08-10 |  | 58% | 0d | Preservation / Blast & Coat [173 h] |
| A52400 |  | Surface survey — overhead coating 1A — JP-5 storage tank No. 3 | 0d | 2026-07-30 A | 2026-08-10 |  | 93% | 0d | Preservation / Blast & Coat [158 h] |
| A54970 |  | Surface survey — overhead coating 3A — Inner bottom void No. 2 | 0d | 2026-07-30 A | 2026-08-13 |  | 76% | 0d | Preservation / Blast & Coat [254 h] |
| A52880 |  | Surface survey — deck coating 5A — JP-5 storage tank No. 10 | 0d | 2026-07-31 A | 2026-08-03 A |  | 100% |  | Preservation / Blast & Coat [15 h]; Rigging & Weight Handling [4 h] |
| A53280 |  | Surface survey — overhead coating 9B — Potable water tank No. 1 | 0d | 2026-08-03 A | 2026-08-07 A |  | 100% |  | Preservation / Blast & Coat [47 h] |
| A52890 |  | Blast / mechanical prep deck coating 5A — JP-5 storage tank No. 10 | 0d | 2026-08-04 A | 2026-08-08 A | A52880 FS+2.4d | 100% |  | Preservation / Blast & Coat [110 h]; Rigging & Weight Handling [28 h] |
| A54120 |  | Blast / mechanical prep deck coating 6B — Ballast tank No. 1 | 0d | 2026-08-05 A | 2026-08-08 A | A54110 | 100% |  | Preservation / Blast & Coat [44 h]; Rigging & Weight Handling [11 h] |
| A54060 |  | Surface survey — overhead coating 4A — Ballast tank No. 1 | 0d | 2026-08-07 A | 2026-08-17 |  | 29% | 0d | Preservation / Blast & Coat [292 h] |
| A55020 |  | Surface survey — bilge preservation 3B — Inner bottom void No. 2 | 0d | 2026-08-07 A | 2026-08-17 |  | 23% | 0d | Preservation / Blast & Coat [128 h] |
| A53340 |  | Blast / mechanical prep bilge preservation 3A — Potable water tank No. 2 | 0d | 2026-08-08 A | 2026-08-19 | A53330 FS+2.4d | 18% | 0d | Preservation / Blast & Coat [403 h] |
| A53290 |  | Blast / mechanical prep overhead coating 9B — Potable water tank No. 1 | 0d | 2026-08-08 A | 2026-08-11 | A53280 FS+0.8d | 45% | 0d | Preservation / Blast & Coat [93 h] |
| A55130 |  | Blast / mechanical prep bilge preservation 9A — Inner bottom void No. 4 | 0d | 2026-08-08 A | 2026-08-11 | A55120 | 36% | 0d | Preservation / Blast & Coat [42 h] |
| A52900 |  | Prime coat deck coating 5A — JP-5 storage tank No. 10 | 0d | 2026-08-10 A | 2026-08-21 | A52890 |  | 0d | Preservation / Blast & Coat [217 h] |
| A54130 |  | Prime coat deck coating 6B — Ballast tank No. 1 | 0d | 2026-08-10 | 2026-08-21 | A54120 |  |  | Preservation / Blast & Coat [172 h] |
| A53230 |  | Surface survey — bilge preservation 8A — Potable water tank No. 1 | 0d | 2026-08-10 | 2026-08-16 |  |  |  | Preservation / Blast & Coat [169 h] |
| A52410 |  | Blast / mechanical prep overhead coating 1A — JP-5 storage tank No. 3 | 0d | 2026-08-10 | 2026-08-21 | A52400 |  |  | Preservation / Blast & Coat [78 h] |
| A52830 |  | Surface survey — overhead coating 2A — JP-5 storage tank No. 9 | 0d | 2026-08-11 | 2026-08-18 |  |  |  | Preservation / Blast & Coat [63 h] |
| A53300 |  | Prime coat overhead coating 9B — Potable water tank No. 1 | 0d | 2026-08-12 | 2026-08-20 | A53290 SS+4.8d |  |  | Preservation / Blast & Coat [157 h] |
| A55240 |  | Blast / mechanical prep overhead coating 4A — Inner bottom void No. 6 | 0d | 2026-08-12 | 2026-08-15 | A55230 |  |  | Preservation / Blast & Coat [29 h]; Rigging & Weight Handling [8 h] |
| A54390 |  | Surface survey — overhead coating 4B — Ballast tank No. 4 | 0d | 2026-08-12 | 2026-08-16 |  |  |  | Preservation / Blast & Coat [37 h] |
| A55140 |  | Prime coat bilge preservation 9A — Inner bottom void No. 4 | 0d | 2026-08-12 | 2026-08-19 | A55130 FS+0.8d |  |  | Preservation / Blast & Coat [163 h] |
| A55290 |  | Blast / mechanical prep bilge preservation 8B — Inner bottom void No. 6 | 0d | 2026-08-13 | 2026-08-15 | A55280 FS+2.4d |  |  | Preservation / Blast & Coat [74 h] |
| A52450 |  | Surface survey — overhead coating 3A — JP-5 storage tank No. 4 | 0d | 2026-08-14 | 2026-08-24 |  |  |  | Preservation / Blast & Coat [185 h] |
| A54280 |  | Surface survey — overhead coating 7B — Ballast tank No. 3 | 0d | 2026-08-14 | 2026-08-19 |  |  |  | Preservation / Blast & Coat [39 h] |
| A54980 |  | Blast / mechanical prep overhead coating 3A — Inner bottom void No. 2 | 0d | 2026-08-15 | 2026-08-21 | A54970 |  |  | Preservation / Blast & Coat [55 h] |
| A55250 |  | Prime coat overhead coating 4A — Inner bottom void No. 6 | 0d | 2026-08-15 | 2026-08-22 | A55240 |  |  | Preservation / Blast & Coat [131 h]; Rigging & Weight Handling [33 h] |
| A55070 |  | Surface survey — deck coating 9A — Inner bottom void No. 3 | 0d | 2026-08-15 | 2026-08-20 |  |  |  | Preservation / Blast & Coat [88 h] |
| A53380 |  | Surface survey — overhead coating 3B (7-180-2-W) | 0d | 2026-08-16 | 2026-08-26 |  |  |  | Preservation / Blast & Coat [169 h] |
| A54590 |  | Surface survey — bilge preservation 4A — Ballast tank No. 7 | 0d | 2026-08-16 | 2026-08-19 |  |  |  | Preservation / Blast & Coat [42 h] |
| A55300 |  | Prime coat bilge preservation 8B — Inner bottom void No. 6 | 0d | 2026-08-17 | 2026-08-22 | A55290 |  |  | Preservation / Blast & Coat [96 h] |
| A54010 |  | Surface survey — deck coating 7B (7-244-0-V) | 0d | 2026-08-17 | 2026-08-21 |  |  |  | Preservation / Blast & Coat [46 h] |
| A53240 |  | Blast / mechanical prep bilge preservation 8A — Potable water tank No. 1 | 0d | 2026-08-17 | 2026-08-22 | A53230 |  |  | Preservation / Blast & Coat [60 h] |
| A54490 |  | Surface survey — bilge preservation 1B — Ballast tank No. 5 | 0d | 2026-08-18 | 2026-08-22 |  |  |  | Preservation / Blast & Coat [43 h] |
| A53540 |  | Surface survey — overhead coating 5A — Potable water tank No. 4 | 0d | 2026-08-18 | 2026-08-31 |  |  |  | Preservation / Blast & Coat [185 h] |
| A54440 |  | Surface survey — overhead coating 2A — Ballast tank No. 5 | 0d | 2026-08-18 | 2026-08-21 |  |  |  | Preservation / Blast & Coat [58 h] |
| A54070 |  | Blast / mechanical prep overhead coating 4A — Ballast tank No. 1 | 0d | 2026-08-18 | 2026-08-28 | A54060 |  |  | Preservation / Blast & Coat [111 h] |
| A52840 |  | Blast / mechanical prep overhead coating 2A — JP-5 storage tank No. 9 | 0d | 2026-08-19 | 2026-08-31 | A52830 FS+0.8d |  |  | Preservation / Blast & Coat [93 h] |
| A54400 |  | Blast / mechanical prep overhead coating 4B — Ballast tank No. 4 | 0d | 2026-08-19 | 2026-08-26 | A54390 |  |  | Preservation / Blast & Coat [113 h] |
| A54640 |  | Surface survey — bilge preservation 7B — Ballast tank No. 7 | 0d | 2026-08-19 | 2026-08-27 |  |  |  | Preservation / Blast & Coat [45 h] |
| A54600 |  | Blast / mechanical prep bilge preservation 4A — Ballast tank No. 7 | 0d | 2026-08-19 | 2026-08-26 | A54590 |  |  | Preservation / Blast & Coat [44 h] |
| A55030 |  | Blast / mechanical prep bilge preservation 3B — Inner bottom void No. 2 | 0d | 2026-08-19 | 2026-09-01 | A55020 |  |  | Preservation / Blast & Coat [200 h] |
| A52550 |  | Surface survey — deck coating 5A — JP-5 storage tank No. 5 | 0d | 2026-08-20 | 2026-08-31 |  |  |  | Preservation / Blast & Coat [74 h]; Rigging & Weight Handling [19 h] |
| A53310 |  | Top coat overhead coating 9B — Potable water tank No. 1 | 0d | 2026-08-21 | 2026-09-03 | A53300 |  |  | Preservation / Blast & Coat [113 h] |

| ID | Activity | Duration | Start | Finish | Predecessors | Resources |
| --- | --- | --- | --- | --- | --- | --- |
| A52500 | Surface survey — overhead coating 9B (7-48-2-J) | 0d | 2026-08-21 | 2026-08-28 |  | Preservation / Blast & Coat [53 h] |
| A53350 | Prime coat bilge preservation 3A — Potable water tank No. 2 | 0d | 2026-08-21 | 2026-08-30 | A53340 FS+2.4d | Preservation / Blast & Coat [60 h] |
| A55150 | Top coat bilge preservation 9A — Inner bottom void No. 4 | 0d | 2026-08-21 | 2026-08-27 | A55140 FS+0.8d | Preservation / Blast & Coat [131 h] |
| A54290 | Blast / mechanical prep overhead coating 7B — Ballast tank No. 3 | 0d | 2026-08-21 | 2026-08-25 | A54280 | Preservation / Blast & Coat [28 h] |
| A54990 | Prime coat overhead coating 3A — Inner bottom void No. 2 | 0d | 2026-08-22 | 2026-09-05 | A54980 | Preservation / Blast & Coat [201 h] |
| A52910 | Top coat deck coating 5A — JP-5 storage tank No. 10 | 0d | 2026-08-23 | 2026-09-03 | A52900 | Preservation / Blast & Coat [188 h] |
| A55260 | Top coat overhead coating 4A — Inner bottom void No. 6 | 0d | 2026-08-23 | 2026-08-26 | A55250 | Preservation / Blast & Coat [109 h] |
| A55080 | Blast / mechanical prep deck coating 9A — Inner bottom void No. 3 | 0d | 2026-08-23 | 2026-08-30 | A55070 | Preservation / Blast & Coat [127 h] |
| A54450 | Blast / mechanical prep overhead coating 2A — Ballast tank No. 5 | 0d | 2026-08-23 | 2026-08-29 | A54440 FS+2.4d | Preservation / Blast & Coat [146 h] |
| A54020 | Blast / mechanical prep deck coating 7B (7-244-0-V) | 0d | 2026-08-23 | 2026-08-28 | A54010 | Preservation / Blast & Coat [53 h] |
| A54140 | Top coat deck coating 6B — Ballast tank No. 1 | 0d | 2026-08-24 | 2026-09-05 | A54130 | Preservation / Blast & Coat [208 h] |
| A52420 | Prime coat overhead coating 1A — JP-5 storage tank No. 3 | 0d | 2026-08-24 | 2026-09-02 | A52410 | Preservation / Blast & Coat [292 h] |
| A54500 | Blast / mechanical prep bilge preservation 1B — Ballast tank No. 5 | 0d | 2026-08-24 | 2026-08-28 | A54490 | Preservation / Blast & Coat [36 h] |
| A55310 | Top coat bilge preservation 8B — Inner bottom void No. 6 | 0d | 2026-08-24 | 2026-09-02 | A55300 | Preservation / Blast & Coat [234 h] |
| A53250 | Prime coat bilge preservation 8A — Potable water tank No. 1 | 0d | 2026-08-25 | 2026-09-06 | A53240 | Preservation / Blast & Coat [293 h] |
| A52460 | Blast / mechanical prep overhead coating 3A — JP-5 storage tank No. 4 | 0d | 2026-08-26 | 2026-09-03 | A52450 FS+0.8d | Preservation / Blast & Coat [130 h] |
| A55270 | Cure & inspect overhead coating 4A — Inner bottom void No. 6 | 0d | 2026-08-27 | 2026-09-08 | A55260 FS+0.8d | Preservation / Blast & Coat [86 h] |
| A54410 | Prime coat overhead coating 4B — Ballast tank No. 4 | 0d | 2026-08-27 | 2026-09-06 | A54400 | Preservation / Blast & Coat [194 h] |
| A54300 | Prime coat overhead coating 7B — Ballast tank No. 3 | 0d | 2026-08-28 | 2026-09-02 | A54290 FS+0.8d | Preservation / Blast & Coat [81 h] |
| A55160 | Cure & inspect bilge preservation 9A — Inner bottom void No. 4 | 0d | 2026-08-29 | 2026-09-09 | A55150 FS+2.4d | Preservation / Blast & Coat [419 h] |
| A53390 | Blast / mechanical prep overhead coating 3B (7-180-2-W) | 0d | 2026-08-29 | 2026-09-05 | A53380 SS+4.8d | Preservation / Blast & Coat [57 h] |
| A52510 | Blast / mechanical prep overhead coating 9B (7-48-2-J) | 0d | 2026-08-29 | 2026-09-12 | A52500 | Preservation / Blast & Coat [408 h] |
| A54510 | Prime coat bilge preservation 1B — Ballast tank No. 5 | 0d | 2026-08-29 | 2026-09-01 | A54500 FS+0.8d | Preservation / Blast & Coat [45 h] |
| A54610 | Prime coat bilge preservation 4A — Ballast tank No. 7 | 0d | 2026-08-29 | 2026-09-02 | A54600 | Preservation / Blast & Coat [76 h]; Rigging & Weight Handling [19 h] |
| A54460 | Prime coat overhead coating 2A — Ballast tank No. 5 | 0d | 2026-08-29 | 2026-09-08 | A54450 | Preservation / Blast & Coat [91 h] |
| A54030 | Prime coat deck coating 7B (7-244-0-V) | 0d | 2026-08-29 | 2026-09-06 | A54020 | Preservation / Blast & Coat [166 h] |
| A55090 | Prime coat deck coating 9A — Inner bottom void No. 3 | 0d | 2026-08-30 | 2026-09-10 | A55080 | Preservation / Blast & Coat [209 h] |
| A54650 | Blast / mechanical prep bilge preservation 7B — Ballast tank No. 7 | 0d | 2026-08-30 | 2026-09-11 | A54640 SS+2.4d | Preservation / Blast & Coat [91 h] |
| A54080 | Prime coat overhead coating 4A — Ballast tank No. 1 | 0d | 2026-08-30 | 2026-09-05 | A54070 | Preservation / Blast & Coat [35 h]; Rigging & Weight Handling [9 h] |
| A53360 | Top coat bilge preservation 3A — Potable water tank No. 2 | 0d | 2026-08-31 | 2026-09-09 | A53350 FS+0.8d | Preservation / Blast & Coat [141 h] |
| A53550 | Blast / mechanical prep overhead coating 5A — Potable water tank No. 4 | 0d | 2026-08-31 | 2026-09-05 | A53540 | Preservation / Blast & Coat [77 h] |
| A52850 | Prime coat overhead coating 2A — JP-5 storage tank No. 9 | 0d | 2026-09-01 | 2026-09-11 | A52840 FS+0.8d | Preservation / Blast & Coat [74 h] |
| A55040 | Prime coat bilge preservation 3B — Inner bottom void No. 2 | 0d | 2026-09-01 | 2026-09-07 | A55030 | Preservation / Blast & Coat [76 h]; Rigging & Weight Handling [19 h] |
| A52560 | Blast / mechanical prep deck coating 5A — JP-5 storage tank No. 5 | 0d | 2026-09-01 | 2026-09-13 | A52550 FS+0.8d | Preservation / Blast & Coat [191 h] |
| A54310 | Top coat overhead coating 7B — Ballast tank No. 3 | 0d | 2026-09-02 | 2026-09-06 | A54300 SS+4.8d | Preservation / Blast & Coat [19 h]; Rigging & Weight Handling [5 h] |
| A54520 | Top coat bilge preservation 1B — Ballast tank No. 5 | 0d | 2026-09-03 | 2026-09-09 | A54510 | Preservation / Blast & Coat [177 h] |
| A55320 | Cure & inspect bilge preservation 8B — Inner bottom void No. 6 | 0d | 2026-09-03 | 2026-09-09 | A55310 FS+0.8d | Preservation / Blast & Coat [179 h] |
| A52430 | Top coat overhead coating 1A — JP-5 storage tank No. 3 | 0d | 2026-09-03 | 2026-09-12 | A52420 FS+0.8d | Preservation / Blast & Coat [56 h] |
| A53320 | Cure & inspect overhead coating 9B — Potable water tank No. 1 | 0d | 2026-09-03 | 2026-09-12 | A53310 | Preservation / Blast & Coat [75 h] |
| A54620 | Top coat bilge preservation 4A — Ballast tank No. 7 | 0d | 2026-09-03 | 2026-09-09 | A54610 FS+2.4d | Preservation / Blast & Coat [127 h] |
| A52470 | Prime coat overhead coating 3A — JP-5 storage tank No. 4 | 0d | 2026-09-05 | 2026-09-19 | A52460 | Preservation / Blast & Coat [366 h] |
| A53400 | Prime coat overhead coating 3B (7-180-2-W) | 0d | 2026-09-05 | 2026-09-13 | A53390 | Preservation / Blast & Coat [55 h] |
| A53560 | Prime coat overhead coating 5A — Potable water tank No. 4 | 0d | 2026-09-05 | 2026-09-13 | A53550 FS+2.4d | Preservation / Blast & Coat [224 h] |
| A54090 | Top coat overhead coating 4A — Ballast tank No. 1 | 0d | 2026-09-06 | 2026-09-09 | A54080 | Preservation / Blast & Coat [64 h] |
| A52920 | Cure & inspect deck coating 5A — JP-5 storage tank No. 10 | 0d | 2026-09-06 | 2026-09-15 | A52910 | Preservation / Blast & Coat [69 h] |
| A54150 | Cure & inspect deck coating 6B — Ballast tank No. 1 | 0d | 2026-09-06 | 2026-09-12 | A54140 | Preservation / Blast & Coat [111 h] |
| A54420 | Top coat overhead coating 4B — Ballast tank No. 4 | 0d | 2026-09-07 | 2026-09-16 | A54410 | Preservation / Blast & Coat [70 h] |
| A54040 | Top coat deck coating 7B (7-244-0-V) | 0d | 2026-09-07 | 2026-09-16 | A54030 | Preservation / Blast & Coat [68 h] |
| A53260 | Top coat bilge preservation 8A — Potable water tank No. 1 | 0d | 2026-09-07 | 2026-09-12 | A53250 | Preservation / Blast & Coat [54 h]; Rigging & Weight Handling [14 h] |
| A55000 | Top coat overhead coating 3A — Inner bottom void No. 2 | 0d | 2026-09-08 | 2026-09-10 | A54990 FS+0.8d | Preservation / Blast & Coat [88 h] |
| A54320 | Cure & inspect overhead coating 7B — Ballast tank No. 3 | 0d | 2026-09-08 | 2026-09-18 | A54310 | Preservation / Blast & Coat [134 h] |
| A54530 | Cure & inspect bilge preservation 1B — Ballast tank No. 5 | 0d | 2026-09-09 | 2026-09-19 | A54520 | Preservation / Blast & Coat [172 h] |
| A55050 | Top coat bilge preservation 3B — Inner bottom void No. 2 | 0d | 2026-09-09 | 2026-09-17 | A55040 | Preservation / Blast & Coat [245 h] |
| A53370 | Cure & inspect bilge preservation 3A — Potable water tank No. 2 | 0d | 2026-09-09 | 2026-09-22 | A53360 | Preservation / Blast & Coat [343 h] |
| A54100 | Cure & inspect overhead coating 4A — Ballast tank No. 1 | 0d | 2026-09-09 | 2026-09-13 | A54090 | Preservation / Blast & Coat [97 h] |
| A54470 | Top coat overhead coating 2A — Ballast tank No. 5 | 0d | 2026-09-09 | 2026-09-20 | A54460 | Preservation / Blast & Coat [160 h] |
| A54630 | Cure & inspect bilge preservation 4A — Ballast tank No. 7 | 0d | 2026-09-10 | 2026-09-22 | A54620 | Preservation / Blast & Coat [360 h] |
| A55100 | Top coat deck coating 9A — Inner bottom void No. 3 | 0d | 2026-09-12 | 2026-09-24 | A55090 FS+0.8d | Preservation / Blast & Coat [146 h] |
| A55010 | Cure & inspect overhead coating 3A — Inner bottom void No. 2 | 0d | 2026-09-12 | 2026-09-20 | A55000 FS+2.4d | Preservation / Blast & Coat [50 h] |
| A52520 | Prime coat overhead coating 9B (7-48-2-J) | 0d | 2026-09-13 | 2026-09-17 | A52510 | Preservation / Blast & Coat [84 h] |
| A52860 | Top coat overhead coating 2A — JP-5 storage tank No. 9 | 0d | 2026-09-13 | 2026-09-23 | A52850 | Preservation / Blast & Coat [100 h]; Rigging & Weight Handling [25 h] |
| A52440 | Cure & inspect overhead coating 1A — JP-5 storage tank No. 3 | 0d | 2026-09-13 | 2026-09-24 | A52430 | Preservation / Blast & Coat [236 h] |
| A53270 | Cure & inspect bilge preservation 8A — Potable water tank No. 1 | 0d | 2026-09-14 | 2026-09-21 | A53260 | Preservation / Blast & Coat [77 h]; Rigging & Weight Handling [20 h] |
| A54660 | Prime coat bilge preservation 7B — Ballast tank No. 7 | 0d | 2026-09-14 | 2026-09-23 | A54650 | Preservation / Blast & Coat [52 h] |
| A53410 | Top coat overhead coating 3B (7-180-2-W) | 0d | 2026-09-14 | 2026-09-21 | A53400 | Preservation / Blast & Coat [42 h] |
| A53570 | Top coat overhead coating 5A — Potable water tank No. 4 | 0d | 2026-09-15 | 2026-09-27 | A53560 | Preservation / Blast & Coat [87 h] |
| A52570 | Prime coat deck coating 5A — JP-5 storage tank No. 5 | 0d | 2026-09-15 | 2026-09-29 | A52560 FS+0.8d | Preservation / Blast & Coat [155 h]; Rigging & Weight Handling [39 h] |
| A54050 | Cure & inspect deck coating 7B (7-244-0-V) | 0d | 2026-09-17 | 2026-09-29 | A54040 FS+2.4d | Preservation / Blast & Coat [98 h] |
| A54430 | Cure & inspect overhead coating 4B — Ballast tank No. 4 | 0d | 2026-09-18 | 2026-09-23 | A54420 | Preservation / Blast & Coat [51 h] |
| A55060 | Cure & inspect bilge preservation 3B — Inner bottom void No. 2 | 0d | 2026-09-18 | 2026-09-23 | A55050 FS+0.8d | Preservation / Blast & Coat [35 h] |

| ID | WBS | Activity | Duration | Start | Finish | Predecessors | Complete | Remaining | Resources |
| --- | --- | --- | --- | --- | --- | --- | --- | --- | --- |
| A52480 |  | Top coat overhead coating 3A — JP-5 storage tank No. 4 | 0d | 2026-09-19 | 2026-09-22 | A52470 |  |  | Preservation / Blast & Coat [43 h] |
| A52530 |  | Top coat overhead coating 9B (7-48-2-J) | 0d | 2026-09-20 | 2026-09-28 | A52520 |  |  | Preservation / Blast & Coat [128 h] |
| A54480 |  | Cure & inspect overhead coating 2A — Ballast tank No. 5 | 0d | 2026-09-21 | 2026-10-05 | A54470 SS+4.8d |  |  | Preservation / Blast & Coat [78 h] |
| A52490 |  | Cure & inspect overhead coating 3A — JP-5 storage tank No. 4 | 0d | 2026-09-23 | 2026-09-26 | A52480 FS+0.8d |  |  | Preservation / Blast & Coat [18 h] |
| A53420 |  | Cure & inspect overhead coating 3B (7-180-2-W) | 0d | 2026-09-23 | 2026-10-02 | A53410 |  |  | Preservation / Blast & Coat [212 h] |
| A54670 |  | Top coat bilge preservation 7B — Ballast tank No. 7 | 0d | 2026-09-24 | 2026-10-03 | A54660 |  |  | Preservation / Blast & Coat [63 h] |
| A52870 |  | Cure & inspect overhead coating 2A — JP-5 storage tank No. 9 | 0d | 2026-09-25 | 2026-09-28 | A52860 FS-4.8d |  |  | Preservation / Blast & Coat [18 h]; Rigging & Weight Handling [5 h] |
| A55110 |  | Cure & inspect deck coating 9A — Inner bottom void No. 3 | 0d | 2026-09-25 | 2026-09-27 | A55100 |  |  | Preservation / Blast & Coat [12 h] |
| A53580 |  | Cure & inspect overhead coating 5A — Potable water tank No. 4 | 0d | 2026-09-29 | 2026-10-11 | A53570 FS+0.8d |  |  | Preservation / Blast & Coat [91 h] |
| A52540 |  | Cure & inspect overhead coating 9B (7-48-2-J) | 0d | 2026-09-30 | 2026-10-02 | A52530 |  |  | Preservation / Blast & Coat [31 h] |
| A52580 |  | Top coat deck coating 5A — JP-5 storage tank No. 5 | 0d | 2026-09-30 | 2026-10-08 | A52570 |  |  | Preservation / Blast & Coat [197 h] |
| A54680 |  | Cure & inspect bilge preservation 7B — Ballast tank No. 7 | 0d | 2026-10-03 | 2026-10-17 | A54670 FS-0.8d |  |  | Preservation / Blast & Coat [182 h] |
| A52590 |  | Cure & inspect deck coating 5A — JP-5 storage tank No. 5 | 0d | 2026-10-10 | 2026-10-18 | A52580 FS+2.4d |  |  | Preservation / Blast & Coat [272 h] |
|  | SVC | **Zone Services & Access** |  | 2026-07-28 | 2026-10-18 |  |  |  |  |
| A56560 |  | Reposition temp vent 9 — Tanks, Voids & Inner Bottom | 0d | 2026-07-28 A | 2026-08-03 A |  | 100% |  | Sheet Metal / HVAC [188 h] |
| A56420 |  | Stage scaffolding — Tanks, Voids & Inner Bottom band 3 | 0d | 2026-07-29 A | 2026-08-02 A |  | 100% |  | Rigging & Weight Handling [149 h] |
| A56390 |  | Temp lighting string 2 — Tanks, Voids & Inner Bottom | 0d | 2026-07-29 A | 2026-08-05 A |  | 100% |  | Electrical [54 h] |
| A56490 |  | Temp ventilation trunk 6 — Tanks, Voids & Inner Bottom | 0d | 2026-08-06 A | 2026-08-10 |  | 78% | 0d | Sheet Metal / HVAC [137 h] |
| A56580 |  | Strike scaffolding — Tanks, Voids & Inner Bottom band 10 | 0d | 2026-08-09 A | 2026-08-14 |  | 11% | 0d | Rigging & Weight Handling [157 h] |
| A56510 |  | Temp lighting string 7 — Tanks, Voids & Inner Bottom | 0d | 2026-08-10 A | 2026-08-18 |  | 1% | 0d | Electrical [143 h] |
| A56540 |  | Material staging & lay-down 8 — Tanks, Voids & Inner Bottom | 0d | 2026-08-10 A | 2026-08-13 |  |  | 0d | Rigging & Weight Handling [31 h] |
| A56600 |  | Run temporary power — Tanks, Voids & Inner Bottom feeder 11 | 0d | 2026-08-13 | 2026-08-19 |  |  |  | Electrical [33 h] |
| A56470 |  | Strike scaffolding — Tanks, Voids & Inner Bottom band 5 | 0d | 2026-08-14 | 2026-08-18 |  |  |  | Rigging & Weight Handling [49 h] |
| A56450 |  | Strike scaffolding — Tanks, Voids & Inner Bottom band 4 | 0d | 2026-08-15 | 2026-08-20 |  |  |  | Rigging & Weight Handling [98 h] |
| A56370 |  | Temp ventilation trunk 1 — Tanks, Voids & Inner Bottom | 0d | 2026-08-18 | 2026-08-20 |  |  |  | Sheet Metal / HVAC [58 h] |
| A56620 |  | Temp ventilation trunk 12 — Tanks, Voids & Inner Bottom | 0d | 2026-08-20 | 2026-08-24 |  |  |  | Sheet Metal / HVAC [139 h] |
| A56480 |  | Rig access platforms — Tanks, Voids & Inner Bottom band 5 | 0d | 2026-08-25 | 2026-09-02 | A56470 |  |  | Rigging & Weight Handling [103 h] |
| A56400 |  | Run temporary power — Tanks, Voids & Inner Bottom feeder 2 | 0d | 2026-08-28 | 2026-09-04 | A56390 |  |  | Electrical [111 h] |
| A56500 |  | Reposition temp vent 6 — Tanks, Voids & Inner Bottom | 0d | 2026-08-28 | 2026-09-04 | A56490 |  |  | Sheet Metal / HVAC [81 h] |
| A56610 |  | Recover temp services — Tanks, Voids & Inner Bottom feeder 11 | 0d | 2026-09-01 | 2026-09-06 | A56600 |  |  | Electrical [68 h] |
| A56630 |  | Reposition temp vent 12 — Tanks, Voids & Inner Bottom | 0d | 2026-09-02 | 2026-09-10 | A56620 |  |  | Sheet Metal / HVAC [136 h] |
| A56570 |  | Temp ventilation trunk 9 — Tanks, Voids & Inner Bottom | 0d | 2026-09-03 | 2026-09-08 | A56560 |  |  | Sheet Metal / HVAC [37 h] |
| A56460 |  | Stage scaffolding — Tanks, Voids & Inner Bottom band 4 | 0d | 2026-09-10 | 2026-09-12 | A56450 |  |  | Rigging & Weight Handling [77 h] |
| A56520 |  | Run temporary power — Tanks, Voids & Inner Bottom feeder 7 | 0d | 2026-09-10 | 2026-09-15 | A56510 |  |  | Electrical [39 h] |
| A56430 |  | Rig access platforms — Tanks, Voids & Inner Bottom band 3 | 0d | 2026-09-10 | 2026-09-20 | A56420 |  |  | Rigging & Weight Handling [147 h] |
| A56550 |  | Clear lay-down 8 — Tanks, Voids & Inner Bottom | 0d | 2026-09-11 | 2026-09-18 | A56540 |  |  | Rigging & Weight Handling [192 h] |
| A56380 |  | Reposition temp vent 1 — Tanks, Voids & Inner Bottom | 0d | 2026-09-19 | 2026-09-23 | A56370 |  |  | Sheet Metal / HVAC [108 h] |
| A56590 |  | Rig access platforms — Tanks, Voids & Inner Bottom band 10 | 0d | 2026-09-19 | 2026-09-27 | A56580 |  |  | Rigging & Weight Handling [99 h] |
| A56530 |  | Recover temp services — Tanks, Voids & Inner Bottom feeder 7 | 0d | 2026-09-27 | 2026-10-01 | A56520 |  |  | Electrical [41 h] |
| A56440 |  | Strike scaffolding — Tanks, Voids & Inner Bottom band 3 | 0d | 2026-09-30 | 2026-10-02 | A56430 |  |  | Rigging & Weight Handling [61 h] |
| A56410 |  | Recover temp services — Tanks, Voids & Inner Bottom feeder 2 | 0d | 2026-10-13 | 2026-10-18 | A56400 |  |  | Electrical [77 h] |
